Actual Duration,Activity ID,Activity Name,WBS,Project ID,Original Duration,Remaining Duration,BL Project Start,BL Project Finish,Start,Finish,Free Float,Total Float,Variance - BL1 Nonlabor Units,Variance - BL Project Nonlabor Units,Actual Nonlabor Units,Remaining Nonlabor Units,Predecessors,Successors,Budgeted Nonlabor Units,Activity % Complete,Critical,Longest Path
0,,,,,577,577,11-Sep-25,10-Apr-27,11-Sep-25,10-Apr-27,0,0,0,0,0,1124,,,1124,,,
0,,,,,577,577,11-Sep-25,10-Apr-27,11-Sep-25,10-Apr-27,0,0,0,0,0,30,,,30,,,
0,,,,,577,577,11-Sep-25,10-Apr-27,11-Sep-25,10-Apr-27,0,0,0,0,0,0,,,0,,,
0,KD-MS-1000,Project Start Date,Approved Baseline.KD.MI,Approved Baseline,0,0,11-Sep-25,,11-Sep-25*,,0,0,0,0,0,0,,"KD-MS-1010, KD-MS-1020, P-MS-1020, P-MS-1010, P-MS-1030, P-MS-1040, P-MS-1050, P-MS-1000, KD-MOB-1000, KD-MOB-1010, KD-MOB-1020, P-MS-1060",0,0%,Yes,Yes
0,KD-MS-1010,Contract Agreement,Approved Baseline.KD.MI,Approved Baseline,0,0,11-Sep-25,,11-Sep-25,,0,6,0,0,0,0,KD-MS-1000,"KD-MOB-1000, KD-MOB-1010, KD-MOB-1020, E-DR-1000",0,0%,No,No
0,KD-MS-1020,IFC Drawing Package,Approved Baseline.KD.MI,Approved Baseline,0,0,11-Sep-25,,11-Sep-25,,0,13,0,0,0,0,KD-MS-1000,E-DR-1000,0,0%,No,No
0,KD-MS-1060,New Activity,Approved Baseline.KD.MI,Approved Baseline,5,5,11-Sep-25,15-Sep-25,11-Sep-25,15-Sep-25,572,572,0,0,0,0,,,0,0%,No,No
0,KD-MS-1040,Ground Works Finish Date,Approved Baseline.KD.MI,Approved Baseline,0,0,,11-May-26,,11-May-26*,4,0,0,0,0,0,"CON-B01-GR-1090, CON-B02-GR-1100, CON-B04-GR-1080, CON-B03-GR-1080",CON-B04-1ST-1000,0,0%,Yes,No
0,KD-MS-1050,Project Finish Date,Approved Baseline.KD.MI,Approved Baseline,0,0,,10-Apr-27,,10-Apr-27*,0,0,0,0,0,0,HO-1000,,0,0%,Yes,Yes
0,,,,,15,15,11-Sep-25,28-Sep-25,11-Sep-25,28-Sep-25,0,5,0,0,0,30,,,30,,,
0,KD-MOB-1000,Surveying Works,Approved Baseline.KD.MO,Approved Baseline,15,15,11-Sep-25,28-Sep-25,11-Sep-25,28-Sep-25,0,5,0,0,0,0,"KD-MS-1000, KD-MS-1010","CON-B04-WT-1000, KD-MOB-1010",0,0%,No,No
0,KD-MOB-1010,Equipment Mobilization,Approved Baseline.KD.MO,Approved Baseline,15,15,11-Sep-25,28-Sep-25,11-Sep-25,28-Sep-25,0,5,0,0,0,0,"KD-MS-1000, KD-MS-1010, KD-MOB-1000","CON-B04-WT-1000, KD-MOB-1020",0,0%,No,No
0,KD-MOB-1020,Site Preparation,Approved Baseline.KD.MO,Approved Baseline,15,15,11-Sep-25,28-Sep-25,11-Sep-25,28-Sep-25,0,5,0,0,0,30,"KD-MS-1000, KD-MS-1010, KD-MOB-1010","CON-EW-B01-1000, CON-B04-WT-1000",30,0%,No,No
0,,,,,270,270,11-Sep-25,7-Jun-26,11-Sep-25,7-Jun-26,0,265,0,0,0,0,,,0,,,
0,,,,,60,60,11-Sep-25,9-Nov-25,11-Sep-25,9-Nov-25,0,13,0,0,0,0,,,0,,,
0,E-DR-1000,Design Review,Approved Baseline.EN.1,Approved Baseline,60,60,11-Sep-25,9-Nov-25,11-Sep-25,9-Nov-25,0,13,0,0,0,0,"KD-MS-1020, KD-MS-1010","E-SUB-B01-BAS02-1000, E-SUB-B01-SOG-1000, E-SUB-B01-BAS01-1000, E-SUB-B01-BAS01-1010, E-SUB-B01-BAS01-1020, E-SUB-B01-BAS01-1030, E-SUB-B01-BAS01-1040, E-SUB-B01-GR-1000, E-SUB-B01-GR-1010, E-SUB-B01-GR-1020, E-SUB-B01-GR-1030, E-SUB-B01-1ST-1000, E-SUB-B01-1ST-1010, E-SUB-B01-1ST-1020, E-SUB-B01-1ST-1030, E-SUB-B01-2ND-1000, E-SUB-B01-2ND-1010, E-SUB-B01-2ND-1020, E-SUB-B01-2ND-1030, E-SUB-B01-3RD-1000, E-SUB-B01-3RD-1010, E-SUB-B01-3RD-1020, E-SUB-B01-3RD-1030, E-SUB-B01-4TH-1000, E-SUB-B01-4TH-1010, E-SUB-B01-4TH-1020, E-SUB-B01-4TH-1030, E-SUB-B01-5TH-1000, E-SUB-B01-5TH-1010, E-SUB-B01-5TH-1020, E-SUB-B01-5TH-1030, E-SUB-B01-6TH-1000, E-SUB-B01-6TH-1010, E-SUB-B01-6TH-1020, E-SUB-B01-6TH-1030, E-SUB-B01-7TH-1000, E-SUB-B01-7TH-1010, E-SUB-B01-7TH-1020, E-SUB-B01-7TH-1030, E-SUB-B01-8TH-1000, E-SUB-B01-8TH-1010, E-SUB-B01-8TH-1020, E-SUB-B01-8TH-1030, E-SUB-B01-RF-1000, E-SUB-B01-RF-1010, E-SUB-B01-RF-1020, E-SUB-B02-BAS02-1000, E-SUB-B02-BAS02-1010, E-SUB-B02-BAS02-1020, E-SUB-B02-BAS02-1030, E-SUB-B02-SOG-1000, E-SUB-B02-SOG-1010, E-SUB-B02-BAS01-1000, E-SUB-B02-BAS01-1010, E-SUB-B02-BAS01-1020, E-SUB-B02-BAS01-1030, E-SUB-B02-GR-1000, E-SUB-B02-GR-1010, E-SUB-B02-GR-1020, E-SUB-B02-GR-1030, E-SUB-B02-1ST-1000, E-SUB-B02-1ST-1010, E-SUB-B02-1ST-1020, E-SUB-B02-1ST-1030, E-SUB-B02-2ND-1000, E-SUB-B02-2ND-1010, E-SUB-B02-2ND-1020, E-SUB-B02-2ND-1030, E-SUB-B02-3RD-1000, E-SUB-B02-3RD-1010, E-SUB-B02-3RD-1020, E-SUB-B02-3RD-1030, E-SUB-B02-4TH-1000, E-SUB-B02-4TH-1010, E-SUB-B02-4TH-1020, E-SUB-B02-4TH-1030, E-SUB-B02-RF-1000, E-SUB-B02-RF-1010, E-SUB-B02-RF-1020, E-SUB-B03-BAS02-1000, E-SUB-B03-BAS02-1010, E-SUB-B03-BAS02-1020, E-SUB-B03-BAS02-1030, E-SUB-B03-SOG-1000, E-SUB-B03-SOG-1010, E-SUB-B03-BAS01-1000, E-SUB-B03-BAS01-1010, E-SUB-B03-BAS01-1020, E-SUB-B03-BAS01-1030, E-SUB-B03-GR-1000, E-SUB-B03-GR-1010, E-SUB-B03-GR-1020, E-SUB-B03-GR-1030, E-SUB-B03-1ST-1000, E-SUB-B03-1ST-1010, E-SUB-B03-1ST-1020, E-SUB-B03-1ST-1030, E-SUB-B03-2ND-1000, E-SUB-B03-2ND-1010, E-SUB-B03-2ND-1020, E-SUB-B03-2ND-1030, E-SUB-B03-3RD-1000, E-SUB-B03-3RD-1010, E-SUB-B03-3RD-1020, E-SUB-B03-3RD-1030, E-SUB-B03-4TH-1000, E-SUB-B03-4TH-1010, E-SUB-B03-4TH-1020, E-SUB-B03-4TH-1030, E-SUB-B03-RF-1000, E-SUB-B03-RF-1010, E-SUB-B03-RF-1020, E-SUB-B04-BAS02-1000, E-SUB-B04-BAS02-1010, E-SUB-B04-BAS02-1020, E-SUB-B04-BAS02-1030, E-SUB-B04-BAS02-1040, E-SUB-B04-SOG-1000, E-SUB-B04-SOG-1010, E-SUB-B04-BAS01-1000, E-SUB-B04-BAS01-1010, E-SUB-B04-BAS01-1020, E-SUB-B04-BAS01-1030, E-SUB-B04-BAS01-1040, E-SUB-B04-GR-1000, E-SUB-B04-GR-1010, E-SUB-B04-GR-1020, E-SUB-B04-GR-1030, E-SUB-B04-1ST-1000, E-SUB-B04-1ST-1010, E-SUB-B04-1ST-1020, E-SUB-B04-1ST-1030, E-SUB-B04-2ND-1000, E-SUB-B04-2ND-1010, E-SUB-B04-2ND-1020, E-SUB-B04-2ND-1030, E-SUB-B04-3RD-1000, E-SUB-B04-3RD-1010, E-SUB-B04-3RD-1020, E-SUB-B04-3RD-1030, E-SUB-B04-4TH-1000, E-SUB-B04-4TH-1010, E-SUB-B04-4TH-1020, E-SUB-B04-4TH-1030, E-SUB-B04-5TH-1000, E-SUB-B04-5TH-1020, E-SUB-B04-5TH-1030, E-SUB-B04-5TH-1010, E-SUB-B04-6TH-1000, E-SUB-B04-6TH-1010, E-SUB-B04-6TH-1020, E-SUB-B04-6TH-1030, E-SUB-B04-7TH-1000, E-SUB-B04-7TH-1010, E-SUB-B04-7TH-1020, E-SUB-B04-7TH-1030, E-SUB-B04-8TH-1000, E-SUB-B04-8TH-1010, E-SUB-B04-8TH-1020, E-SUB-B04-8TH-1030, E-SUB-B04-RF-1000, E-SUB-B04-RF-1010, E-SUB-B04-RF-1020, E-SUB-B01-FOOT-1000, E-SUB-B01-FOOT-1010, E-SUB-B01-FOOT-1020, E-SUB-B01-BAS02-1040, E-SUB-B01-BAS02-1030, E-SUB-B01-BAS02-1010, E-SUB-B01-BAS02-1020, E-SUB-B01-SOG-1010, E-SUB-B01-REP-1000, E-SUB-B01-FOOT-1030, E-SUB-B02-REP-1000, E-SUB-B02-FOOT-1000, E-SUB-B02-FOOT-1030, E-SUB-B02-FOOT-1010, E-SUB-B02-FOOT-1020, E-SUB-B03-REP-1000, E-SUB-B03-FOOT-1010, E-SUB-B03-FOOT-1000, E-SUB-B03-FOOT-1020, E-SUB-B03-FOOT-1030, E-SUB-B04-REP-1000, E-SUB-B04-FOOT-1000, E-SUB-B04-FOOT-1010, E-SUB-B04-FOOT-1020, E-SUB-B04-FOOT-1030, E-SUB-B04-WT-1000, E-SUB-B04-WT-1010, E-SUB-B04-WT-1020, E-SUB-B04-WT-1030, E-SUB-B04-WT-1040",0,0%,No,No
0,,,,,219,219,11-Sep-25,7-Jun-26,11-Sep-25,7-Jun-26,0,221,0,0,0,0,,,0,,,
0,,,,,209,209,11-Sep-25,21-May-26,11-Sep-25,21-May-26,0,221,0,0,0,0,,,0,,,
0,,,,,179,179,11-Sep-25,16-Apr-26,11-Sep-25,16-Apr-26,0,251,0,0,0,0,,,0,,,
0,,,,,179,179,11-Sep-25,16-Apr-26,11-Sep-25,16-Apr-26,0,251,0,0,0,0,,,0,,,
0,,,,,172,172,11-Sep-25,7-Apr-26,11-Sep-25,7-Apr-26,0,229,0,0,0,0,,,0,,,
0,,,,,18,18,11-Sep-25,1-Oct-25,11-Sep-25,1-Oct-25,0,11,0,0,0,0,,,0,,,
0,E-SUB-B01-REP-1000,Submittal for General Replacement Plan & Typical Sections for Replacement / Backfilling DWGs  (B01),Approved Baseline.EN.2.S.P02.B01.SUB.1,Approved Baseline,18,18,11-Sep-25,1-Oct-25,11-Sep-25,1-Oct-25,0,11,0,0,0,0,E-DR-1000,"E-APP-B01-REP-1000, E-APP-B01-REP-1000",0,0%,No,No
0,,,,,27,27,1-Oct-25,2-Nov-25,1-Oct-25,2-Nov-25,0,18,0,0,0,0,,,0,,,
0,E-SUB-B01-FOOT-1000,Submittal for PC Raft Conc. Dim. DWGs (B01) (footing),Approved Baseline.EN.2.S.P02.B01.SUB.F,Approved Baseline,18,18,1-Oct-25,22-Oct-25,1-Oct-25,22-Oct-25,0,17,0,0,0,0,E-DR-1000,"E-APP-B01-FOOT-1000, E-APP-B01-FOOT-1000, E-SUB-B01-FOOT-1010",0,0%,No,No
0,E-SUB-B01-FOOT-1010,Submittal for RC Raft & Footings Conc. Dim. DWGs (B01) (footing),Approved Baseline.EN.2.S.P02.B01.SUB.F,Approved Baseline,18,18,5-Oct-25,26-Oct-25,5-Oct-25,26-Oct-25,0,17,0,0,0,0,"E-DR-1000, E-SUB-B01-FOOT-1000","E-APP-B01-FOOT-1010, E-APP-B01-FOOT-1010, E-SUB-B01-FOOT-1030",0,0%,No,No
0,E-SUB-B01-FOOT-1030,Submittal for  Waterproofing Layout Plan (B01),Approved Baseline.EN.2.S.P02.B01.SUB.F,Approved Baseline,18,18,9-Oct-25,29-Oct-25,9-Oct-25,29-Oct-25,0,17,0,0,0,0,"E-DR-1000, E-SUB-B01-FOOT-1010","E-APP-B01-FOOT-1030, E-APP-B01-FOOT-1030, E-SUB-B01-FOOT-1020",0,0%,No,No
0,E-SUB-B01-FOOT-1020,Submittal for RC Raft & Footings RFT DWGs (B01) (footing),Approved Baseline.EN.2.S.P02.B01.SUB.F,Approved Baseline,18,18,13-Oct-25,2-Nov-25,13-Oct-25,2-Nov-25,0,18,0,0,0,0,"E-DR-1000, E-SUB-B01-FOOT-1030","E-APP-B01-FOOT-1020, E-APP-B01-FOOT-1020",0,0%,No,No
0,,,,,122,122,10-Nov-25,7-Apr-26,10-Nov-25,7-Apr-26,0,229,0,0,0,0,,,0,,,
0,E-SUB-B01-BAS02-1000,Submittal for Col. & Walls Conc. Dim.  & RFT DWGs (B01) (Bas 02),Approved Baseline.EN.2.S.P02.B01.SUB.2ndB,Approved Baseline,18,18,10-Nov-25,30-Nov-25,10-Nov-25,30-Nov-25,0,11,0,0,0,0,E-DR-1000,"E-APP-B01-BAS02-1000, E-APP-B01-BAS02-1000, E-SUB-B01-BAS02-1010",0,0%,No,No
0,E-SUB-B01-BAS02-1010,Submittal for Stairs Conc. Dim.  & RFT DWGs (B01) (Bas 02),Approved Baseline.EN.2.S.P02.B01.SUB.2ndB,Approved Baseline,18,18,13-Nov-25,3-Dec-25,13-Nov-25,3-Dec-25,0,19,0,0,0,0,"E-DR-1000, E-SUB-B01-BAS02-1000","E-APP-B01-BAS02-1010, E-APP-B01-BAS02-1010, E-SUB-B01-BAS02-1020",0,0%,No,No
0,E-SUB-B01-BAS02-1020,Submittal for Ramps Conc. Dim.  & RFT DWGs (B01) (Bas 02),Approved Baseline.EN.2.S.P02.B01.SUB.2ndB,Approved Baseline,18,18,17-Nov-25,7-Dec-25,17-Nov-25,7-Dec-25,0,19,0,0,0,0,"E-DR-1000, E-SUB-B01-BAS02-1010","E-APP-B01-BAS02-1020, E-APP-B01-BAS02-1020, E-SUB-B01-BAS02-1030",0,0%,No,No
0,E-SUB-B01-BAS02-1030,Submittal for Beams Conc. Dim.  & RFT DWGs (B01) (Bas 02),Approved Baseline.EN.2.S.P02.B01.SUB.2ndB,Approved Baseline,18,18,20-Nov-25,10-Dec-25,20-Nov-25,10-Dec-25,0,19,0,0,0,0,"E-DR-1000, E-SUB-B01-BAS02-1020","E-APP-B01-BAS02-1030, E-APP-B01-BAS02-1030, E-SUB-B01-BAS02-1040",0,0%,No,No
0,E-SUB-B01-BAS02-1040,Submittal for Slabs Conc. Dim.  & RFT DWGs (B01) (Bas 02),Approved Baseline.EN.2.S.P02.B01.SUB.2ndB,Approved Baseline,18,18,24-Nov-25,14-Dec-25,24-Nov-25,14-Dec-25,0,19,0,0,0,0,"E-DR-1000, E-SUB-B01-BAS02-1030","E-APP-B01-BAS02-1040, E-APP-B01-BAS02-1040",0,0%,No,No
0,,,,,21,21,10-Mar-26,7-Apr-26,10-Mar-26,7-Apr-26,0,229,0,0,0,0,,,0,,,
0,E-SUB-B01-SOG-1000,Submittal for S.O.G Conc. Dim. DWGs (B01) (Sog),Approved Baseline.EN.2.S.P02.B01.SUB.2ndB.SOG,Approved Baseline,18,18,10-Mar-26,4-Apr-26,10-Mar-26,4-Apr-26,0,229,0,0,0,0,E-DR-1000,"E-APP-B01-SOG-1000, E-APP-B01-SOG-1000, E-SUB-B01-SOG-1010",0,0%,No,No
0,E-SUB-B01-SOG-1010,Submittal for S.O.G RFT DWGs (B01) (Sog),Approved Baseline.EN.2.S.P02.B01.SUB.2ndB.SOG,Approved Baseline,18,18,14-Mar-26,7-Apr-26,14-Mar-26,7-Apr-26,0,229,0,0,0,0,"E-DR-1000, E-SUB-B01-SOG-1000","E-APP-B01-SOG-1010, E-APP-B01-SOG-1010",0,0%,No,No
0,,,,,30,30,17-Nov-25,21-Dec-25,17-Nov-25,21-Dec-25,0,47,0,0,0,0,,,0,,,
0,E-SUB-B01-BAS01-1000,Submittal for Col. & Walls Conc. Dim.  & RFT DWGs (B01) (Bas 01),Approved Baseline.EN.2.S.P02.B01.SUB.1stB,Approved Baseline,18,18,17-Nov-25,7-Dec-25,17-Nov-25,7-Dec-25,0,42,0,0,0,0,E-DR-1000,"E-APP-B01-BAS01-1000, E-APP-B01-BAS01-1000, E-SUB-B01-BAS01-1010",0,0%,No,No
0,E-SUB-B01-BAS01-1010,Submittal for Stairs Conc. Dim.  & RFT DWGs (B01) (Bas 01),Approved Baseline.EN.2.S.P02.B01.SUB.1stB,Approved Baseline,18,18,20-Nov-25,10-Dec-25,20-Nov-25,10-Dec-25,0,47,0,0,0,0,"E-DR-1000, E-SUB-B01-BAS01-1000","E-APP-B01-BAS01-1010, E-APP-B01-BAS01-1010, E-SUB-B01-BAS01-1020",0,0%,No,No
0,E-SUB-B01-BAS01-1020,Submittal for Ramps Conc. Dim.  & RFT DWGs (B01) (Bas 01),Approved Baseline.EN.2.S.P02.B01.SUB.1stB,Approved Baseline,18,18,24-Nov-25,14-Dec-25,24-Nov-25,14-Dec-25,0,47,0,0,0,0,"E-DR-1000, E-SUB-B01-BAS01-1010","E-APP-B01-BAS01-1020, E-APP-B01-BAS01-1020, E-SUB-B01-BAS01-1030",0,0%,No,No
0,E-SUB-B01-BAS01-1030,Submittal for Beams Conc. Dim.  & RFT DWGs (B01) (Bas 01),Approved Baseline.EN.2.S.P02.B01.SUB.1stB,Approved Baseline,18,18,27-Nov-25,17-Dec-25,27-Nov-25,17-Dec-25,0,47,0,0,0,0,"E-DR-1000, E-SUB-B01-BAS01-1020","E-APP-B01-BAS01-1030, E-APP-B01-BAS01-1030, E-SUB-B01-BAS01-1040",0,0%,No,No
0,E-SUB-B01-BAS01-1040,Submittal for Slabs Conc. Dim.  & RFT DWGs (B01) (Bas 01),Approved Baseline.EN.2.S.P02.B01.SUB.1stB,Approved Baseline,18,18,1-Dec-25,21-Dec-25,1-Dec-25,21-Dec-25,0,47,0,0,0,0,"E-DR-1000, E-SUB-B01-BAS01-1030","E-APP-B01-BAS01-1040, E-APP-B01-BAS01-1040",0,0%,No,No
0,,,,,120,120,20-Nov-25,16-Apr-26,20-Nov-25,16-Apr-26,0,251,0,0,0,0,,,0,,,
0,,,,,27,27,20-Nov-25,21-Dec-25,20-Nov-25,21-Dec-25,0,79,0,0,0,0,,,0,,,
0,E-SUB-B01-GR-1000,Submittal for Col. & Walls Conc. Dim.  & RFT DWGs (B01),Approved Baseline.EN.2.S.P02.B01.SUP.GF,Approved Baseline,18,18,20-Nov-25,10-Dec-25,20-Nov-25,10-Dec-25,0,70,0,0,0,0,E-DR-1000,"E-APP-B01-GR-1000, E-APP-B01-GR-1000, E-SUB-B01-GR-1010",0,0%,No,No
0,E-SUB-B01-GR-1010,Submittal for Stairs Conc. Dim.  & RFT DWGs (B01),Approved Baseline.EN.2.S.P02.B01.SUP.GF,Approved Baseline,18,18,24-Nov-25,14-Dec-25,24-Nov-25,14-Dec-25,0,79,0,0,0,0,"E-DR-1000, E-SUB-B01-GR-1000","E-APP-B01-GR-1010, E-APP-B01-GR-1010, E-SUB-B01-GR-1020",0,0%,No,No
0,E-SUB-B01-GR-1020,Submittal for Beams Conc. Dim.  & RFT DWGs (B01),Approved Baseline.EN.2.S.P02.B01.SUP.GF,Approved Baseline,18,18,27-Nov-25,17-Dec-25,27-Nov-25,17-Dec-25,0,79,0,0,0,0,"E-DR-1000, E-SUB-B01-GR-1010","E-APP-B01-GR-1020, E-APP-B01-GR-1020, E-SUB-B01-GR-1030",0,0%,No,No
0,E-SUB-B01-GR-1030,Submittal for Slabs Conc. Dim.  & RFT DWGs (B01),Approved Baseline.EN.2.S.P02.B01.SUP.GF,Approved Baseline,18,18,1-Dec-25,21-Dec-25,1-Dec-25,21-Dec-25,0,79,0,0,0,0,"E-DR-1000, E-SUB-B01-GR-1020","E-APP-B01-GR-1030, E-APP-B01-GR-1030",0,0%,No,No
0,,,,,26,26,10-Dec-25,10-Jan-26,10-Dec-25,10-Jan-26,0,92,0,0,0,0,,,0,,,
0,E-SUB-B01-1ST-1000,Submittal for Col. & Walls Conc. Dim.  & RFT DWGs (B01) (1st),Approved Baseline.EN.2.S.P02.B01.SUP.1stF,Approved Baseline,18,18,10-Dec-25,30-Dec-25,10-Dec-25,30-Dec-25,0,88,0,0,0,0,E-DR-1000,"E-APP-B01-1ST-1000, E-APP-B01-1ST-1000, E-SUB-B01-1ST-1010",0,0%,No,No
0,E-SUB-B01-1ST-1010,Submittal for Stairs Conc. Dim.  & RFT DWGs (B01) (1st),Approved Baseline.EN.2.S.P02.B01.SUP.1stF,Approved Baseline,18,18,14-Dec-25,3-Jan-26,14-Dec-25,3-Jan-26,0,92,0,0,0,0,"E-DR-1000, E-SUB-B01-1ST-1000","E-APP-B01-1ST-1010, E-APP-B01-1ST-1010, E-SUB-B01-1ST-1020",0,0%,No,No
0,E-SUB-B01-1ST-1020,Submittal for Beams Conc. Dim.  & RFT DWGs (B01) (1st),Approved Baseline.EN.2.S.P02.B01.SUP.1stF,Approved Baseline,18,18,17-Dec-25,6-Jan-26,17-Dec-25,6-Jan-26,0,92,0,0,0,0,"E-DR-1000, E-SUB-B01-1ST-1010","E-APP-B01-1ST-1020, E-APP-B01-1ST-1020, E-SUB-B01-1ST-1030",0,0%,No,No
0,E-SUB-B01-1ST-1030,Submittal for Slabs Conc. Dim.  & RFT DWGs (B01) (1st),Approved Baseline.EN.2.S.P02.B01.SUP.1stF,Approved Baseline,18,18,20-Dec-25,10-Jan-26,20-Dec-25,10-Jan-26,0,92,0,0,0,0,"E-DR-1000, E-SUB-B01-1ST-1020","E-APP-B01-1ST-1030, E-APP-B01-1ST-1030",0,0%,No,No
0,,,,,27,27,20-Dec-25,20-Jan-26,20-Dec-25,20-Jan-26,0,117,0,0,0,0,,,0,,,
0,E-SUB-B01-2ND-1000,Submittal for Col. & Walls Conc. Dim.  & RFT DWGs (B01) (2nd),Approved Baseline.EN.2.S.P02.B01.SUP.2ndF,Approved Baseline,18,18,20-Dec-25,10-Jan-26,20-Dec-25,10-Jan-26,0,114,0,0,0,0,E-DR-1000,"E-APP-B01-2ND-1000, E-APP-B01-2ND-1000, E-SUB-B01-2ND-1010",0,0%,No,No
0,E-SUB-B01-2ND-1010,Submittal for Stairs Conc. Dim.  & RFT DWGs (B01) (2nd),Approved Baseline.EN.2.S.P02.B01.SUP.2ndF,Approved Baseline,18,18,23-Dec-25,13-Jan-26,23-Dec-25,13-Jan-26,0,117,0,0,0,0,"E-DR-1000, E-SUB-B01-2ND-1000","E-APP-B01-2ND-1010, E-APP-B01-2ND-1010, E-SUB-B01-2ND-1020",0,0%,No,No
0,E-SUB-B01-2ND-1020,Submittal for Beams Conc. Dim.  & RFT DWGs (B01) (2nd),Approved Baseline.EN.2.S.P02.B01.SUP.2ndF,Approved Baseline,18,18,27-Dec-25,17-Jan-26,27-Dec-25,17-Jan-26,0,117,0,0,0,0,"E-DR-1000, E-SUB-B01-2ND-1010","E-APP-B01-2ND-1020, E-APP-B01-2ND-1020, E-SUB-B01-2ND-1030",0,0%,No,No
0,E-SUB-B01-2ND-1030,Submittal for Slabs Conc. Dim.  & RFT DWGs (B01) (2nd),Approved Baseline.EN.2.S.P02.B01.SUP.2ndF,Approved Baseline,18,18,30-Dec-25,20-Jan-26,30-Dec-25,20-Jan-26,0,117,0,0,0,0,"E-DR-1000, E-SUB-B01-2ND-1020","E-APP-B01-2ND-1030, E-APP-B01-2ND-1030",0,0%,No,No
0,,,,,27,27,30-Dec-25,1-Feb-26,30-Dec-25,1-Feb-26,0,127,0,0,0,0,,,0,,,
0,E-SUB-B01-3RD-1000,Submittal for Col. & Walls Conc. Dim.  & RFT DWGs (B01) (3rd),Approved Baseline.EN.2.S.P02.B01.SUP.3rdF,Approved Baseline,18,18,30-Dec-25,20-Jan-26,30-Dec-25,20-Jan-26,0,127,0,0,0,0,E-DR-1000,"E-APP-B01-3ED-1000, E-APP-B01-3ED-1000, E-SUB-B01-3RD-1010",0,0%,No,No
0,E-SUB-B01-3RD-1010,Submittal for Stairs Conc. Dim.  & RFT DWGs (B01) (3rd),Approved Baseline.EN.2.S.P02.B01.SUP.3rdF,Approved Baseline,18,18,3-Jan-26,24-Jan-26,3-Jan-26,24-Jan-26,0,127,0,0,0,0,"E-DR-1000, E-SUB-B01-3RD-1000","E-APP-B01-3ED-1010, E-APP-B01-3ED-1010, E-SUB-B01-3RD-1020",0,0%,No,No
0,E-SUB-B01-3RD-1020,Submittal for Beams Conc. Dim.  & RFT DWGs (B01) (3rd),Approved Baseline.EN.2.S.P02.B01.SUP.3rdF,Approved Baseline,18,18,6-Jan-26,28-Jan-26,6-Jan-26,28-Jan-26,0,127,0,0,0,0,"E-DR-1000, E-SUB-B01-3RD-1010","E-APP-B01-3ED-1020, E-APP-B01-3ED-1020, E-SUB-B01-3RD-1030",0,0%,No,No
0,E-SUB-B01-3RD-1030,Submittal for Slabs Conc. Dim.  & RFT DWGs (B01) (3rd),Approved Baseline.EN.2.S.P02.B01.SUP.3rdF,Approved Baseline,18,18,11-Jan-26,1-Feb-26,11-Jan-26,1-Feb-26,0,127,0,0,0,0,"E-DR-1000, E-SUB-B01-3RD-1020","E-APP-B01-3ED-1030, E-APP-B01-3ED-1030",0,0%,No,No
0,,,,,27,27,14-Jan-26,15-Feb-26,14-Jan-26,15-Feb-26,0,148,0,0,0,0,,,0,,,
0,E-SUB-B01-4TH-1000,Submittal for Col. & Walls Conc. Dim.  & RFT DWGs (B01) (4th),Approved Baseline.EN.2.S.P02.B01.SUP.4thF,Approved Baseline,18,18,14-Jan-26,4-Feb-26,14-Jan-26,4-Feb-26,0,148,0,0,0,0,E-DR-1000,"E-APP-B01-4TH-1000, E-APP-B01-4TH-1000, E-SUB-B01-4TH-1010",0,0%,No,No
0,E-SUB-B01-4TH-1010,Submittal for Stairs Conc. Dim.  & RFT DWGs (B01) (4th),Approved Baseline.EN.2.S.P02.B01.SUP.4thF,Approved Baseline,18,18,18-Jan-26,8-Feb-26,18-Jan-26,8-Feb-26,0,148,0,0,0,0,"E-DR-1000, E-SUB-B01-4TH-1000","E-APP-B01-4TH-1010, E-APP-B01-4TH-1010, E-SUB-B01-4TH-1020",0,0%,No,No
0,E-SUB-B01-4TH-1020,Submittal for Beams Conc. Dim.  & RFT DWGs (B01) (4th),Approved Baseline.EN.2.S.P02.B01.SUP.4thF,Approved Baseline,18,18,21-Jan-26,11-Feb-26,21-Jan-26,11-Feb-26,0,148,0,0,0,0,"E-DR-1000, E-SUB-B01-4TH-1010","E-APP-B01-4TH-1020, E-APP-B01-4TH-1020, E-SUB-B01-4TH-1030",0,0%,No,No
0,E-SUB-B01-4TH-1030,Submittal for Slabs Conc. Dim.  & RFT DWGs (B01) (4th),Approved Baseline.EN.2.S.P02.B01.SUP.4thF,Approved Baseline,18,18,26-Jan-26,15-Feb-26,26-Jan-26,15-Feb-26,0,148,0,0,0,0,"E-DR-1000, E-SUB-B01-4TH-1020","E-APP-B01-4TH-1030, E-APP-B01-4TH-1030",0,0%,No,No
0,,,,,27,27,24-Jan-26,24-Feb-26,24-Jan-26,24-Feb-26,0,186,0,0,0,0,,,0,,,
0,E-SUB-B01-5TH-1000,Submittal for Col. & Walls Conc. Dim.  & RFT DWGs (B01) (5th),Approved Baseline.EN.2.S.P02.B01.SUP.5thF,Approved Baseline,18,18,24-Jan-26,14-Feb-26,24-Jan-26,14-Feb-26,0,184,0,0,0,0,E-DR-1000,"E-APP-B01-5TH-1000, E-APP-B01-5TH-1000, E-SUB-B01-5TH-1010",0,0%,No,No
0,E-SUB-B01-5TH-1010,Submittal for Stairs Conc. Dim.  & RFT DWGs (B01) (5th),Approved Baseline.EN.2.S.P02.B01.SUP.5thF,Approved Baseline,18,18,28-Jan-26,17-Feb-26,28-Jan-26,17-Feb-26,0,186,0,0,0,0,"E-DR-1000, E-SUB-B01-5TH-1000","E-APP-B01-5TH-1010, E-APP-B01-5TH-1010, E-SUB-B01-5TH-1020",0,0%,No,No
0,E-SUB-B01-5TH-1020,Submittal for Beams Conc. Dim.  & RFT DWGs (B01) (5th),Approved Baseline.EN.2.S.P02.B01.SUP.5thF,Approved Baseline,18,18,1-Feb-26,21-Feb-26,1-Feb-26,21-Feb-26,0,186,0,0,0,0,"E-DR-1000, E-SUB-B01-5TH-1010","E-APP-B01-5TH-1020, E-APP-B01-5TH-1020, E-SUB-B01-5TH-1030",0,0%,No,No
0,E-SUB-B01-5TH-1030,Submittal for Slabs Conc. Dim.  & RFT DWGs (B01) (5th),Approved Baseline.EN.2.S.P02.B01.SUP.5thF,Approved Baseline,18,18,4-Feb-26,24-Feb-26,4-Feb-26,24-Feb-26,0,186,0,0,0,0,"E-DR-1000, E-SUB-B01-5TH-1020","E-APP-B01-5TH-1030, E-APP-B01-5TH-1030",0,0%,No,No
0,,,,,27,27,3-Feb-26,5-Mar-26,3-Feb-26,5-Mar-26,0,208,0,0,0,0,,,0,,,
0,E-SUB-B01-6TH-1000,Submittal for Col. & Walls Conc. Dim.  & RFT DWGs (B01) (6th),Approved Baseline.EN.2.S.P02.B01.SUP.6thF,Approved Baseline,18,18,3-Feb-26,23-Feb-26,3-Feb-26,23-Feb-26,0,205,0,0,0,0,E-DR-1000,"E-APP-B01-6TH-1000, E-APP-B01-6TH-1000, E-SUB-B01-6TH-1010",0,0%,No,No
0,E-SUB-B01-6TH-1010,Submittal for Stairs Conc. Dim.  & RFT DWGs (B01) (6th),Approved Baseline.EN.2.S.P02.B01.SUP.6thF,Approved Baseline,18,18,7-Feb-26,26-Feb-26,7-Feb-26,26-Feb-26,0,208,0,0,0,0,"E-DR-1000, E-SUB-B01-6TH-1000","E-APP-B01-6TH-1010, E-APP-B01-6TH-1010, E-SUB-B01-6TH-1020",0,0%,No,No
0,E-SUB-B01-6TH-1020,Submittal for Beams Conc. Dim.  & RFT DWGs (B01) (6th),Approved Baseline.EN.2.S.P02.B01.SUP.6thF,Approved Baseline,18,18,10-Feb-26,2-Mar-26,10-Feb-26,2-Mar-26,0,208,0,0,0,0,"E-DR-1000, E-SUB-B01-6TH-1010","E-APP-B01-6TH-1020, E-APP-B01-6TH-1020, E-SUB-B01-6TH-1030",0,0%,No,No
0,E-SUB-B01-6TH-1030,Submittal for Slabs Conc. Dim.  & RFT DWGs (B01) (6th),Approved Baseline.EN.2.S.P02.B01.SUP.6thF,Approved Baseline,18,18,14-Feb-26,5-Mar-26,14-Feb-26,5-Mar-26,0,208,0,0,0,0,"E-DR-1000, E-SUB-B01-6TH-1020","E-APP-B01-6TH-1030, E-APP-B01-6TH-1030",0,0%,No,No
0,,,,,27,27,14-Feb-26,21-Mar-26,14-Feb-26,21-Mar-26,0,227,0,0,0,0,,,0,,,
0,E-SUB-B01-7TH-1000,Submittal for Col. & Walls Conc. Dim.  & RFT DWGs (B01) (7th),Approved Baseline.EN.2.S.P02.B01.SUP.7thF,Approved Baseline,18,18,14-Feb-26,5-Mar-26,14-Feb-26,5-Mar-26,0,225,0,0,0,0,E-DR-1000,"E-APP-B01-7TH-1000, E-APP-B01-7TH-1000, E-SUB-B01-7TH-1010",0,0%,No,No
0,E-SUB-B01-7TH-1010,Submittal for Stairs Conc. Dim.  & RFT DWGs (B01) (7th),Approved Baseline.EN.2.S.P02.B01.SUP.7thF,Approved Baseline,18,18,17-Feb-26,9-Mar-26,17-Feb-26,9-Mar-26,0,227,0,0,0,0,"E-DR-1000, E-SUB-B01-7TH-1000","E-APP-B01-7TH-1010, E-APP-B01-7TH-1010, E-SUB-B01-7TH-1020",0,0%,No,No
0,E-SUB-B01-7TH-1020,Submittal for Beams Conc. Dim.  & RFT DWGs (B01) (7th),Approved Baseline.EN.2.S.P02.B01.SUP.7thF,Approved Baseline,18,18,21-Feb-26,12-Mar-26,21-Feb-26,12-Mar-26,0,227,0,0,0,0,"E-DR-1000, E-SUB-B01-7TH-1010","E-APP-B01-7TH-1020, E-APP-B01-7TH-1020, E-SUB-B01-7TH-1030",0,0%,No,No
0,E-SUB-B01-7TH-1030,Submittal for Slabs Conc. Dim.  & RFT DWGs (B01) (7th),Approved Baseline.EN.2.S.P02.B01.SUP.7thF,Approved Baseline,18,18,24-Feb-26,21-Mar-26,24-Feb-26,21-Mar-26,0,227,0,0,0,0,"E-DR-1000, E-SUB-B01-7TH-1020","E-APP-B01-7TH-1030, E-APP-B01-7TH-1030",0,0%,No,No
0,,,,,27,27,28-Feb-26,4-Apr-26,28-Feb-26,4-Apr-26,0,241,0,0,0,0,,,0,,,
0,E-SUB-B01-8TH-1000,Submittal for Col. & Walls Conc. Dim.  & RFT DWGs (B01) (8th),Approved Baseline.EN.2.S.P02.B01.SUP.8thF,Approved Baseline,18,18,28-Feb-26,24-Mar-26,28-Feb-26,24-Mar-26,0,240,0,0,0,0,E-DR-1000,"E-APP-B01-8TH-1000, E-APP-B01-8TH-1000, E-SUB-B01-8TH-1010",0,0%,No,No
0,E-SUB-B01-8TH-1010,Submittal for Stairs Conc. Dim.  & RFT DWGs (B01) (8th),Approved Baseline.EN.2.S.P02.B01.SUP.8thF,Approved Baseline,18,18,3-Mar-26,28-Mar-26,3-Mar-26,28-Mar-26,0,241,0,0,0,0,"E-DR-1000, E-SUB-B01-8TH-1000","E-APP-B01-8TH-1010, E-APP-B01-8TH-1010, E-SUB-B01-8TH-1020",0,0%,No,No
0,E-SUB-B01-8TH-1020,Submittal for Beams Conc. Dim.  & RFT DWGs (B01) (8th),Approved Baseline.EN.2.S.P02.B01.SUP.8thF,Approved Baseline,18,18,7-Mar-26,31-Mar-26,7-Mar-26,31-Mar-26,0,241,0,0,0,0,"E-DR-1000, E-SUB-B01-8TH-1010","E-APP-B01-8TH-1020, E-APP-B01-8TH-1020, E-SUB-B01-8TH-1030",0,0%,No,No
0,E-SUB-B01-8TH-1030,Submittal for Slabs Conc. Dim.  & RFT DWGs (B01) (8th),Approved Baseline.EN.2.S.P02.B01.SUP.8thF,Approved Baseline,18,18,10-Mar-26,4-Apr-26,10-Mar-26,4-Apr-26,0,241,0,0,0,0,"E-DR-1000, E-SUB-B01-8TH-1020","E-APP-B01-8TH-1030, E-APP-B01-8TH-1030",0,0%,No,No
0,,,,,24,24,15-Mar-26,16-Apr-26,15-Mar-26,16-Apr-26,0,251,0,0,0,0,,,0,,,
0,E-SUB-B01-RF-1000,Submittal for Col. & Walls Conc. Dim.  & RFT DWGs (B01) (RF),Approved Baseline.EN.2.S.P02.B01.SUP.RF,Approved Baseline,18,18,15-Mar-26,8-Apr-26,15-Mar-26,8-Apr-26,0,251,0,0,0,0,E-DR-1000,"E-APP-B01-RF-1000, E-APP-B01-RF-1000, E-SUB-B01-RF-1010",0,0%,No,No
0,E-SUB-B01-RF-1010,Submittal for Slabs Conc. Dim.  & RFT DWGs (B01) (RF),Approved Baseline.EN.2.S.P02.B01.SUP.RF,Approved Baseline,18,18,23-Mar-26,12-Apr-26,23-Mar-26,12-Apr-26,0,251,0,0,0,0,"E-DR-1000, E-SUB-B01-RF-1000","E-APP-B01-RF-1010, E-APP-B01-RF-1010, E-SUB-B01-RF-1020",0,0%,No,No
0,E-SUB-B01-RF-1020,Submittal for Beams Conc. Dim.  & RFT DWGs (B01) (RF),Approved Baseline.EN.2.S.P02.B01.SUP.RF,Approved Baseline,18,18,26-Mar-26,16-Apr-26,26-Mar-26,16-Apr-26,0,251,0,0,0,0,"E-DR-1000, E-SUB-B01-RF-1010","E-APP-B01-RF-1020, E-APP-B01-RF-1020",0,0%,No,No
0,,,,,176,176,11-Sep-25,12-Apr-26,11-Sep-25,12-Apr-26,0,249,0,0,0,0,,,0,,,
0,,,,,176,176,11-Sep-25,12-Apr-26,11-Sep-25,12-Apr-26,0,240,0,0,0,0,,,0,,,
0,,,,,8,8,11-Sep-25,20-Sep-25,11-Sep-25,20-Sep-25,0,24,0,0,0,0,,,0,,,
0,E-SUB-B02-REP-1000,Submittal for General Replacement Plan & Typical Sections for Replacement / Backfilling DWGs (B02),Approved Baseline.EN.2.S.P02.B02.SUB.1,Approved Baseline,8,8,11-Sep-25,20-Sep-25,11-Sep-25,20-Sep-25,0,24,0,0,0,0,E-DR-1000,"E-APP-B02-REP-1000, E-APP-B02-REP-1000",0,0%,No,No
0,,,,,24,24,7-Oct-25,3-Nov-25,7-Oct-25,3-Nov-25,0,29,0,0,0,0,,,0,,,
0,E-SUB-B02-FOOT-1000,Submittal for PC Raft Conc. Dim. DWGs (B02) (footing),Approved Baseline.EN.2.S.P02.B02.SUB.F,Approved Baseline,18,18,7-Oct-25,27-Oct-25,7-Oct-25,27-Oct-25,0,26,0,0,0,0,E-DR-1000,"E-APP-B02-FOOT-1000, E-APP-B02-FOOT-1000, E-SUB-B02-FOOT-1030",0,0%,No,No
0,E-SUB-B02-FOOT-1030,Submittal for  Waterproofing Layout Plan (B02),Approved Baseline.EN.2.S.P02.B02.SUB.F,Approved Baseline,18,18,8-Oct-25,28-Oct-25,8-Oct-25,28-Oct-25,0,29,0,0,0,0,"E-DR-1000, E-SUB-B02-FOOT-1000","E-APP-B02-FOOT-1030, E-APP-B02-FOOT-1030, E-SUB-B02-FOOT-1010",0,0%,No,No
0,E-SUB-B02-FOOT-1010,Submittal for RC Raft & Footings Conc. Dim. DWGs (B02) (footing),Approved Baseline.EN.2.S.P02.B02.SUB.F,Approved Baseline,18,18,11-Oct-25,30-Oct-25,11-Oct-25,30-Oct-25,0,30,0,0,0,0,"E-DR-1000, E-SUB-B02-FOOT-1030","E-APP-B02-FOOT-1010, E-APP-B02-FOOT-1010, E-SUB-B02-FOOT-1020",0,0%,No,No
0,E-SUB-B02-FOOT-1020,Submittal for RC Raft & Footings RFT DWGs (B02) (footing),Approved Baseline.EN.2.S.P02.B02.SUB.F,Approved Baseline,18,18,14-Oct-25,3-Nov-25,14-Oct-25,3-Nov-25,0,29,0,0,0,0,"E-DR-1000, E-SUB-B02-FOOT-1010","E-APP-B02-FOOT-1020, E-APP-B02-FOOT-1020",0,0%,No,No
0,,,,,126,126,10-Nov-25,12-Apr-26,10-Nov-25,12-Apr-26,0,240,0,0,0,0,,,0,,,
0,E-SUB-B02-BAS02-1000,Submittal for Col. & Walls Conc. Dim.& RFT DWGs (B02) (Bas 02),Approved Baseline.EN.2.S.P02.B02.SUB.2ndB,Approved Baseline,18,18,10-Nov-25,30-Nov-25,10-Nov-25,30-Nov-25,0,20,0,0,0,0,E-DR-1000,"E-APP-B02-BAS02-1000, E-APP-B02-BAS02-1000, E-SUB-B02-BAS02-1010",0,0%,No,No
0,E-SUB-B02-BAS02-1010,Submittal for Stairs Conc. Dim.& RFT DWGs (B02) (Bas 02),Approved Baseline.EN.2.S.P02.B02.SUB.2ndB,Approved Baseline,18,18,13-Nov-25,3-Dec-25,13-Nov-25,3-Dec-25,0,28,0,0,0,0,"E-DR-1000, E-SUB-B02-BAS02-1000","E-APP-B02-BAS02-1010, E-APP-B02-BAS02-1010, E-SUB-B02-BAS02-1020",0,0%,No,No
0,E-SUB-B02-BAS02-1020,Submittal for Beams Conc. Dim.& RFT DWGs (B02) (Bas 02),Approved Baseline.EN.2.S.P02.B02.SUB.2ndB,Approved Baseline,18,18,17-Nov-25,7-Dec-25,17-Nov-25,7-Dec-25,0,28,0,0,0,0,"E-DR-1000, E-SUB-B02-BAS02-1010","E-APP-B02-BAS02-1020, E-APP-B02-BAS02-1020, E-SUB-B02-BAS02-1030",0,0%,No,No
0,E-SUB-B02-BAS02-1030,Submittal for Slabs Conc. Dim.& RFT DWGs (B02) (Bas 02),Approved Baseline.EN.2.S.P02.B02.SUB.2ndB,Approved Baseline,18,18,20-Nov-25,10-Dec-25,20-Nov-25,10-Dec-25,0,28,0,0,0,0,"E-DR-1000, E-SUB-B02-BAS02-1020","E-APP-B02-BAS02-1030, E-APP-B02-BAS02-1030",0,0%,No,No
0,,,,,21,21,15-Mar-26,12-Apr-26,15-Mar-26,12-Apr-26,0,240,0,0,0,0,,,0,,,
0,E-SUB-B02-SOG-1000,Submittal for S.O.G Conc. Dim. DWGs (B02) (Sog),Approved Baseline.EN.2.S.P02.B02.SUB.2ndB.2,Approved Baseline,18,18,15-Mar-26,8-Apr-26,15-Mar-26,8-Apr-26,0,240,0,0,0,0,E-DR-1000,"E-APP-B02-SOG-1000, E-APP-B02-SOG-1000, E-SUB-B02-SOG-1010",0,0%,No,No
0,E-SUB-B02-SOG-1010,Submittal for S.O.G RFT DWGs (B02) (Sog),Approved Baseline.EN.2.S.P02.B02.SUB.2ndB.2,Approved Baseline,18,18,23-Mar-26,12-Apr-26,23-Mar-26,12-Apr-26,0,240,0,0,0,0,"E-DR-1000, E-SUB-B02-SOG-1000","E-APP-B02-SOG-1010, E-APP-B02-SOG-1010",0,0%,No,No
0,,,,,27,27,20-Nov-25,21-Dec-25,20-Nov-25,21-Dec-25,0,51,0,0,0,0,,,0,,,
0,E-SUB-B02-BAS01-1000,Submittal for Col. & Walls Conc. Dim.  & RFT DWGs (B02) (Bas 01),Approved Baseline.EN.2.S.P02.B02.SUB.1stB,Approved Baseline,18,18,20-Nov-25,10-Dec-25,20-Nov-25,10-Dec-25,0,44,0,0,0,0,E-DR-1000,"E-APP-B02-BAS01-1000, E-APP-B02-BAS01-1000, E-SUB-B02-BAS01-1010",0,0%,No,No
0,E-SUB-B02-BAS01-1010,Submittal for Stairs Conc. Dim.  & RFT DWGs (B02) (Bas 01),Approved Baseline.EN.2.S.P02.B02.SUB.1stB,Approved Baseline,18,18,24-Nov-25,14-Dec-25,24-Nov-25,14-Dec-25,0,51,0,0,0,0,"E-DR-1000, E-SUB-B02-BAS01-1000","E-APP-B02-BAS01-1010, E-APP-B02-BAS01-1010, E-SUB-B02-BAS01-1020",0,0%,No,No
0,E-SUB-B02-BAS01-1020,Submittal for Beams Conc. Dim.  & RFT DWGs (B02) (Bas 01),Approved Baseline.EN.2.S.P02.B02.SUB.1stB,Approved Baseline,18,18,27-Nov-25,17-Dec-25,27-Nov-25,17-Dec-25,0,51,0,0,0,0,"E-DR-1000, E-SUB-B02-BAS01-1010","E-APP-B02-BAS01-1020, E-APP-B02-BAS01-1020, E-SUB-B02-BAS01-1030",0,0%,No,No
0,E-SUB-B02-BAS01-1030,Submittal for Slabs Conc. Dim.  & RFT DWGs (B02) (Bas 01),Approved Baseline.EN.2.S.P02.B02.SUB.1stB,Approved Baseline,18,18,1-Dec-25,21-Dec-25,1-Dec-25,21-Dec-25,0,51,0,0,0,0,"E-DR-1000, E-SUB-B02-BAS01-1020","E-APP-B02-BAS01-1030, E-APP-B02-BAS01-1030",0,0%,No,No
0,,,,,95,95,25-Nov-25,22-Mar-26,25-Nov-25,22-Mar-26,0,267,0,0,0,0,,,0,,,
0,,,,,27,27,25-Nov-25,25-Dec-25,25-Nov-25,25-Dec-25,0,84,0,0,0,0,,,0,,,
0,E-SUB-B02-GR-1000,Submittal for Col. & Walls Conc. Dim.  & RFT DWGs (B02) (GF),Approved Baseline.EN.2.S.P02.B02.SUP.GF,Approved Baseline,18,18,25-Nov-25,15-Dec-25,25-Nov-25,15-Dec-25,0,77,0,0,0,0,E-DR-1000,"E-APP-B02-GR-1000, E-APP-B02-GR-1000, E-SUB-B02-GR-1010",0,0%,No,No
0,E-SUB-B02-GR-1010,Submittal for Stairs Conc. Dim.  & RFT DWGs (B02) (GF),Approved Baseline.EN.2.S.P02.B02.SUP.GF,Approved Baseline,18,18,29-Nov-25,18-Dec-25,29-Nov-25,18-Dec-25,0,84,0,0,0,0,"E-DR-1000, E-SUB-B02-GR-1000","E-APP-B02-GR-1010, E-APP-B02-GR-1010, E-SUB-B02-GR-1020",0,0%,No,No
0,E-SUB-B02-GR-1020,Submittal for Beams Conc. Dim.  & RFT DWGs (B02) (GF),Approved Baseline.EN.2.S.P02.B02.SUP.GF,Approved Baseline,18,18,2-Dec-25,22-Dec-25,2-Dec-25,22-Dec-25,0,84,0,0,0,0,"E-DR-1000, E-SUB-B02-GR-1010","E-APP-B02-GR-1020, E-APP-B02-GR-1020, E-SUB-B02-GR-1030",0,0%,No,No
0,E-SUB-B02-GR-1030,Submittal for Slabs Conc. Dim.  & RFT DWGs (B02) (GF),Approved Baseline.EN.2.S.P02.B02.SUP.GF,Approved Baseline,18,18,6-Dec-25,25-Dec-25,6-Dec-25,25-Dec-25,0,84,0,0,0,0,"E-DR-1000, E-SUB-B02-GR-1020","E-APP-B02-GR-1030, E-APP-B02-GR-1030",0,0%,No,No
0,,,,,27,27,15-Dec-25,15-Jan-26,15-Dec-25,15-Jan-26,0,124,0,0,0,0,,,0,,,
0,E-SUB-B02-1ST-1000,Submittal for Col. & Walls Conc. Dim.  & RFT DWGs (B02) (1st),Approved Baseline.EN.2.S.P02.B02.SUP.1stF,Approved Baseline,18,18,15-Dec-25,4-Jan-26,15-Dec-25,4-Jan-26,0,118,0,0,0,0,E-DR-1000,"E-APP-B02-1ST-1000, E-APP-B02-1ST-1000, E-SUB-B02-1ST-1010",0,0%,No,No
0,E-SUB-B02-1ST-1010,Submittal for Stairs Conc. Dim.  & RFT DWGs (B02) (1st),Approved Baseline.EN.2.S.P02.B02.SUP.1stF,Approved Baseline,18,18,18-Dec-25,8-Jan-26,18-Dec-25,8-Jan-26,0,124,0,0,0,0,"E-DR-1000, E-SUB-B02-1ST-1000","E-APP-B02-1ST-1010, E-APP-B02-1ST-1010, E-SUB-B02-1ST-1020",0,0%,No,No
0,E-SUB-B02-1ST-1020,Submittal for Beams Conc. Dim.  & RFT DWGs (B02) (1st),Approved Baseline.EN.2.S.P02.B02.SUP.1stF,Approved Baseline,18,18,22-Dec-25,12-Jan-26,22-Dec-25,12-Jan-26,0,124,0,0,0,0,"E-DR-1000, E-SUB-B02-1ST-1010","E-APP-B02-1ST-1020, E-APP-B02-1ST-1020, E-SUB-B02-1ST-1030",0,0%,No,No
0,E-SUB-B02-1ST-1030,Submittal for Slabs Conc. Dim.  & RFT DWGs (B02) (1st),Approved Baseline.EN.2.S.P02.B02.SUP.1stF,Approved Baseline,18,18,25-Dec-25,15-Jan-26,25-Dec-25,15-Jan-26,0,124,0,0,0,0,"E-DR-1000, E-SUB-B02-1ST-1020","E-APP-B02-1ST-1030, E-APP-B02-1ST-1030",0,0%,No,No
0,,,,,27,27,25-Dec-25,27-Jan-26,25-Dec-25,27-Jan-26,0,164,0,0,0,0,,,0,,,
0,E-SUB-B02-2ND-1000,Submittal for Col. & Walls Conc. Dim.  & RFT DWGs (B02) (2nd),Approved Baseline.EN.2.S.P02.B02.SUP.2ndF,Approved Baseline,18,18,25-Dec-25,15-Jan-26,25-Dec-25,15-Jan-26,0,156,0,0,0,0,E-DR-1000,"E-APP-B02-2ND-1000, E-APP-B02-2ND-1000, E-SUB-B02-2ND-1010",0,0%,No,No
0,E-SUB-B02-2ND-1010,Submittal for Stairs Conc. Dim.  & RFT DWGs (B02) (2nd),Approved Baseline.EN.2.S.P02.B02.SUP.2ndF,Approved Baseline,18,18,29-Dec-25,19-Jan-26,29-Dec-25,19-Jan-26,0,164,0,0,0,0,"E-DR-1000, E-SUB-B02-2ND-1000","E-APP-B02-2ND-1010, E-APP-B02-2ND-1010, E-SUB-B02-2ND-1020",0,0%,No,No
0,E-SUB-B02-2ND-1020,Submittal for Beams Conc. Dim.  & RFT DWGs (B02) (2nd),Approved Baseline.EN.2.S.P02.B02.SUP.2ndF,Approved Baseline,18,18,1-Jan-26,22-Jan-26,1-Jan-26,22-Jan-26,0,164,0,0,0,0,"E-DR-1000, E-SUB-B02-2ND-1010","E-APP-B02-2ND-1020, E-APP-B02-2ND-1020, E-SUB-B02-2ND-1030",0,0%,No,No
0,E-SUB-B02-2ND-1030,Submittal for Slabs Conc. Dim.  & RFT DWGs (B02) (2nd),Approved Baseline.EN.2.S.P02.B02.SUP.2ndF,Approved Baseline,18,18,5-Jan-26,27-Jan-26,5-Jan-26,27-Jan-26,0,164,0,0,0,0,"E-DR-1000, E-SUB-B02-2ND-1020","E-APP-B02-2ND-1030, E-APP-B02-2ND-1030",0,0%,No,No
0,,,,,27,27,14-Jan-26,15-Feb-26,14-Jan-26,15-Feb-26,0,199,0,0,0,0,,,0,,,
0,E-SUB-B02-3RD-1000,Submittal for Col. & Walls Conc. Dim.  & RFT DWGs (B02) (3rd),Approved Baseline.EN.2.S.P02.B02.SUP.3rdF,Approved Baseline,18,18,14-Jan-26,4-Feb-26,14-Jan-26,4-Feb-26,0,191,0,0,0,0,E-DR-1000,"E-APP-B02-3RD-1000, E-APP-B02-3RD-1000, E-SUB-B02-3RD-1010",0,0%,No,No
0,E-SUB-B02-3RD-1010,Submittal for Stairs Conc. Dim.  & RFT DWGs (B02) (3rd),Approved Baseline.EN.2.S.P02.B02.SUP.3rdF,Approved Baseline,18,18,18-Jan-26,8-Feb-26,18-Jan-26,8-Feb-26,0,199,0,0,0,0,"E-DR-1000, E-SUB-B02-3RD-1000","E-APP-B02-3RD-1010, E-APP-B02-3RD-1010, E-SUB-B02-3RD-1020",0,0%,No,No
0,E-SUB-B02-3RD-1020,Submittal for Beams Conc. Dim.  & RFT DWGs (B02) (3rd),Approved Baseline.EN.2.S.P02.B02.SUP.3rdF,Approved Baseline,18,18,21-Jan-26,11-Feb-26,21-Jan-26,11-Feb-26,0,199,0,0,0,0,"E-DR-1000, E-SUB-B02-3RD-1010","E-APP-B02-3RD-1020, E-APP-B02-3RD-1020, E-SUB-B02-3RD-1030",0,0%,No,No
0,E-SUB-B02-3RD-1030,Submittal for Slabs Conc. Dim.  & RFT DWGs (B02) (3rd),Approved Baseline.EN.2.S.P02.B02.SUP.3rdF,Approved Baseline,18,18,26-Jan-26,15-Feb-26,26-Jan-26,15-Feb-26,0,199,0,0,0,0,"E-DR-1000, E-SUB-B02-3RD-1020","E-APP-B02-3RD-1030, E-APP-B02-3RD-1030",0,0%,No,No
0,,,,,27,27,29-Jan-26,1-Mar-26,29-Jan-26,1-Mar-26,0,239,0,0,0,0,,,0,,,
0,E-SUB-B02-4TH-1000,Submittal for Col. & Walls Conc. Dim.  & RFT DWGs (B02) (4th),Approved Baseline.EN.2.S.P02.B02.SUP.4thF,Approved Baseline,18,18,29-Jan-26,18-Feb-26,29-Jan-26,18-Feb-26,0,231,0,0,0,0,E-DR-1000,"E-APP-B02-4TH-1000, E-APP-B02-4TH-1000, E-SUB-B02-4TH-1010",0,0%,No,No
0,E-SUB-B02-4TH-1010,Submittal for Stairs Conc. Dim.  & RFT DWGs (B02) (4th),Approved Baseline.EN.2.S.P02.B02.SUP.4thF,Approved Baseline,18,18,2-Feb-26,22-Feb-26,2-Feb-26,22-Feb-26,0,239,0,0,0,0,"E-DR-1000, E-SUB-B02-4TH-1000","E-APP-B02-4TH-1010, E-APP-B02-4TH-1010, E-SUB-B02-4TH-1020",0,0%,No,No
0,E-SUB-B02-4TH-1020,Submittal for Beams Conc. Dim.  & RFT DWGs (B02) (4th),Approved Baseline.EN.2.S.P02.B02.SUP.4thF,Approved Baseline,18,18,5-Feb-26,25-Feb-26,5-Feb-26,25-Feb-26,0,239,0,0,0,0,"E-DR-1000, E-SUB-B02-4TH-1010","E-APP-B02-4TH-1020, E-APP-B02-4TH-1020, E-SUB-B02-4TH-1030",0,0%,No,No
0,E-SUB-B02-4TH-1030,Submittal for Slabs Conc. Dim.  & RFT DWGs (B02) (4th),Approved Baseline.EN.2.S.P02.B02.SUP.4thF,Approved Baseline,18,18,9-Feb-26,1-Mar-26,9-Feb-26,1-Mar-26,0,239,0,0,0,0,"E-DR-1000, E-SUB-B02-4TH-1020","E-APP-B02-4TH-1030, E-APP-B02-4TH-1030",0,0%,No,No
0,,,,,24,24,18-Feb-26,22-Mar-26,18-Feb-26,22-Mar-26,0,267,0,0,0,0,,,0,,,
0,E-SUB-B02-RF-1000,Submittal for Col. & Walls Conc. Dim.  & RFT DWGs (B02) (RF),Approved Baseline.EN.2.S.P02.B02.SUP.RF,Approved Baseline,18,18,18-Feb-26,10-Mar-26,18-Feb-26,10-Mar-26,0,265,0,0,0,0,E-DR-1000,"E-APP-B02-RF-1000, E-APP-B02-RF-1000, E-SUB-B02-RF-1010",0,0%,No,No
0,E-SUB-B02-RF-1010,Submittal for Beams Conc. Dim.  & RFT DWGs (B02) (RF),Approved Baseline.EN.2.S.P02.B02.SUP.RF,Approved Baseline,18,18,22-Feb-26,14-Mar-26,22-Feb-26,14-Mar-26,0,267,0,0,0,0,"E-DR-1000, E-SUB-B02-RF-1000","E-APP-B02-RF-1010, E-APP-B02-RF-1010, E-SUB-B02-RF-1020",0,0%,No,No
0,E-SUB-B02-RF-1020,Submittal for Slabs Conc. Dim.  & RFT DWGs (B02) (RF),Approved Baseline.EN.2.S.P02.B02.SUP.RF,Approved Baseline,18,18,25-Feb-26,22-Mar-26,25-Feb-26,22-Mar-26,0,267,0,0,0,0,"E-DR-1000, E-SUB-B02-RF-1010","E-APP-B02-RF-1020, E-APP-B02-RF-1020",0,0%,No,No
0,,,,,208,208,13-Sep-25,21-May-26,13-Sep-25,21-May-26,0,221,0,0,0,0,,,0,,,
0,,,,,132,132,27-Sep-25,2-Mar-26,27-Sep-25,2-Mar-26,0,280,0,0,0,0,,,0,,,
0,,,,,125,125,27-Sep-25,22-Feb-26,27-Sep-25,22-Feb-26,0,280,0,0,0,0,,,0,,,
0,,,,,18,18,27-Sep-25,18-Oct-25,27-Sep-25,18-Oct-25,0,30,0,0,0,0,,,0,,,
0,E-SUB-B03-REP-1000,Submittal for General Replacement Plan & Typical Sections for Replacement / Backfilling DWGs (B03),Approved Baseline.EN.2.S.P01.B03.SUB.1,Approved Baseline,18,18,27-Sep-25,18-Oct-25,27-Sep-25,18-Oct-25,0,30,0,0,0,0,E-DR-1000,"E-APP-B03-REP-1000, E-APP-B03-REP-1000",0,0%,No,No
0,,,,,24,24,11-Oct-25,6-Nov-25,11-Oct-25,6-Nov-25,0,40,0,0,0,0,,,0,,,
0,E-SUB-B03-FOOT-1010,Submittal for PC Raft Conc. Dim. DWGs (B03) (footing),Approved Baseline.EN.2.S.P01.B03.SUB.F,Approved Baseline,18,18,11-Oct-25,30-Oct-25,11-Oct-25,30-Oct-25,0,37,0,0,0,0,E-DR-1000,"E-APP-B03-FOOT-1010, E-APP-B03-FOOT-1010, E-SUB-B03-FOOT-1000",0,0%,No,No
0,E-SUB-B03-FOOT-1000,Submittal for  Waterproofing Layout Plan (B03),Approved Baseline.EN.2.S.P01.B03.SUB.F,Approved Baseline,18,18,12-Oct-25,1-Nov-25,12-Oct-25,1-Nov-25,0,41,0,0,0,0,"E-DR-1000, E-SUB-B03-FOOT-1010","E-APP-B03-FOOT-1000, E-APP-B03-FOOT-1000, E-SUB-B03-FOOT-1020",0,0%,No,No
0,E-SUB-B03-FOOT-1020,Submittal for RC Raft & Footings Conc. Dim. DWGs (B03) (footing),Approved Baseline.EN.2.S.P01.B03.SUB.F,Approved Baseline,18,18,14-Oct-25,3-Nov-25,14-Oct-25,3-Nov-25,0,42,0,0,0,0,"E-DR-1000, E-SUB-B03-FOOT-1000","E-APP-B03-FOOT-1020, E-APP-B03-FOOT-1020, E-SUB-B03-FOOT-1030",0,0%,No,No
0,E-SUB-B03-FOOT-1030,Submittal for RC Raft & Footings RFT DWGs (B03) (footing),Approved Baseline.EN.2.S.P01.B03.SUB.F,Approved Baseline,18,18,18-Oct-25,6-Nov-25,18-Oct-25,6-Nov-25,0,40,0,0,0,0,"E-DR-1000, E-SUB-B03-FOOT-1020","E-APP-B03-FOOT-1030, E-APP-B03-FOOT-1030",0,0%,No,No
0,,,,,88,88,10-Nov-25,22-Feb-26,10-Nov-25,22-Feb-26,0,280,0,0,0,0,,,0,,,
0,E-SUB-B03-BAS02-1000,Submittal for Col. & Walls Conc. Dim.  & RFT DWGs (B03) (Bas 02),Approved Baseline.EN.2.S.P01.B03.SUB.2ndB,Approved Baseline,18,18,10-Nov-25,30-Nov-25,10-Nov-25,30-Nov-25,0,34,0,0,0,0,E-DR-1000,"E-APP-B03-BAS02-1000, E-APP-B03-BAS02-1000, E-SUB-B03-BAS02-1010",0,0%,No,No
0,E-SUB-B03-BAS02-1010,Submittal for Stairs Conc. Dim.  & RFT DWGs (B03) (Bas 02),Approved Baseline.EN.2.S.P01.B03.SUB.2ndB,Approved Baseline,18,18,13-Nov-25,3-Dec-25,13-Nov-25,3-Dec-25,0,42,0,0,0,0,"E-DR-1000, E-SUB-B03-BAS02-1000","E-APP-B03-BAS02-1010, E-APP-B03-BAS02-1010, E-SUB-B03-BAS02-1020",0,0%,No,No
0,E-SUB-B03-BAS02-1020,Submittal for Beams Conc. Dim.  & RFT DWGs (B03) (Bas 02),Approved Baseline.EN.2.S.P01.B03.SUB.2ndB,Approved Baseline,18,18,17-Nov-25,7-Dec-25,17-Nov-25,7-Dec-25,0,42,0,0,0,0,"E-DR-1000, E-SUB-B03-BAS02-1010","E-APP-B03-BAS02-1020, E-APP-B03-BAS02-1020, E-SUB-B03-BAS02-1030",0,0%,No,No
0,E-SUB-B03-BAS02-1030,Submittal for Slabs Conc. Dim.  & RFT DWGs (B03) (Bas 02),Approved Baseline.EN.2.S.P01.B03.SUB.2ndB,Approved Baseline,18,18,20-Nov-25,10-Dec-25,20-Nov-25,10-Dec-25,0,42,0,0,0,0,"E-DR-1000, E-SUB-B03-BAS02-1020","E-APP-B03-BAS02-1030, E-APP-B03-BAS02-1030",0,0%,No,No
0,,,,,21,21,29-Jan-26,22-Feb-26,29-Jan-26,22-Feb-26,0,280,0,0,0,0,,,0,,,
0,E-SUB-B03-SOG-1000,Submittal for S.O.G Conc. Dim. DWGs (B03) (Sog),Approved Baseline.EN.2.S.P01.B03.SUB.2ndB.1,Approved Baseline,18,18,29-Jan-26,18-Feb-26,29-Jan-26,18-Feb-26,0,280,0,0,0,0,E-DR-1000,"E-APP-B03-SOG-1000, E-APP-B03-SOG-1000, E-SUB-B03-SOG-1010",0,0%,No,No
0,E-SUB-B03-SOG-1010,Submittal for S.O.G RFT DWGs (B03) (Sog),Approved Baseline.EN.2.S.P01.B03.SUB.2ndB.1,Approved Baseline,18,18,2-Feb-26,22-Feb-26,2-Feb-26,22-Feb-26,0,280,0,0,0,0,"E-DR-1000, E-SUB-B03-SOG-1000","E-APP-B03-SOG-1010, E-APP-B03-SOG-1010",0,0%,No,No
0,,,,,27,27,20-Nov-25,21-Dec-25,20-Nov-25,21-Dec-25,0,64,0,0,0,0,,,0,,,
0,E-SUB-B03-BAS01-1000,Submittal for Col. & Walls Conc. Dim.  & RFT DWGs (B03) (Bas 01),Approved Baseline.EN.2.S.P01.B03.SUB.1stB,Approved Baseline,18,18,20-Nov-25,10-Dec-25,20-Nov-25,10-Dec-25,0,56,0,0,0,0,E-DR-1000,"E-APP-B03-BAS01-1000, E-APP-B03-BAS01-1000, E-SUB-B03-BAS01-1010",0,0%,No,No
0,E-SUB-B03-BAS01-1010,Submittal for Stairs Conc. Dim.  & RFT DWGs (B03) (Bas 01),Approved Baseline.EN.2.S.P01.B03.SUB.1stB,Approved Baseline,18,18,24-Nov-25,14-Dec-25,24-Nov-25,14-Dec-25,0,64,0,0,0,0,"E-DR-1000, E-SUB-B03-BAS01-1000","E-APP-B03-BAS01-1010, E-APP-B03-BAS01-1010, E-SUB-B03-BAS01-1020",0,0%,No,No
0,E-SUB-B03-BAS01-1020,Submittal for Beams Conc. Dim.  & RFT DWGs (B03) (Bas 01),Approved Baseline.EN.2.S.P01.B03.SUB.1stB,Approved Baseline,18,18,27-Nov-25,17-Dec-25,27-Nov-25,17-Dec-25,0,64,0,0,0,0,"E-DR-1000, E-SUB-B03-BAS01-1010","E-APP-B03-BAS01-1020, E-APP-B03-BAS01-1020, E-SUB-B03-BAS01-1030",0,0%,No,No
0,E-SUB-B03-BAS01-1030,Submittal for Slabs Conc. Dim.  & RFT DWGs (B03) (Bas 01),Approved Baseline.EN.2.S.P01.B03.SUB.1stB,Approved Baseline,18,18,1-Dec-25,21-Dec-25,1-Dec-25,21-Dec-25,0,64,0,0,0,0,"E-DR-1000, E-SUB-B03-BAS01-1020","E-APP-B03-BAS01-1030, E-APP-B03-BAS01-1030",0,0%,No,No
0,,,,,78,78,30-Nov-25,2-Mar-26,30-Nov-25,2-Mar-26,0,280,0,0,0,0,,,0,,,
0,,,,,27,27,30-Nov-25,30-Dec-25,30-Nov-25,30-Dec-25,0,84,0,0,0,0,,,0,,,
0,E-SUB-B03-GR-1000,Submittal for Col. & Walls Conc. Dim.  & RFT DWGs (B03) (GF),Approved Baseline.EN.2.S.P01.B03.SUP.GF,Approved Baseline,18,18,30-Nov-25,20-Dec-25,30-Nov-25,20-Dec-25,0,81,0,0,0,0,E-DR-1000,"E-APP-B03-GR-1000, E-APP-B03-GR-1000, E-SUB-B03-GR-1010",0,0%,No,No
0,E-SUB-B03-GR-1010,Submittal for Stairs Conc. Dim.  & RFT DWGs (B03) (GF),Approved Baseline.EN.2.S.P01.B03.SUP.GF,Approved Baseline,18,18,3-Dec-25,23-Dec-25,3-Dec-25,23-Dec-25,0,84,0,0,0,0,"E-DR-1000, E-SUB-B03-GR-1000","E-APP-B03-GR-1010, E-APP-B03-GR-1010, E-SUB-B03-GR-1020",0,0%,No,No
0,E-SUB-B03-GR-1020,Submittal for Beams Conc. Dim.  & RFT DWGs (B03) (GF),Approved Baseline.EN.2.S.P01.B03.SUP.GF,Approved Baseline,18,18,7-Dec-25,27-Dec-25,7-Dec-25,27-Dec-25,0,84,0,0,0,0,"E-DR-1000, E-SUB-B03-GR-1010","E-APP-B03-GR-1020, E-APP-B03-GR-1020, E-SUB-B03-GR-1030",0,0%,No,No
0,E-SUB-B03-GR-1030,Submittal for Slabs Conc. Dim.  & RFT DWGs (B03) (GF),Approved Baseline.EN.2.S.P01.B03.SUP.GF,Approved Baseline,18,18,10-Dec-25,30-Dec-25,10-Dec-25,30-Dec-25,0,84,0,0,0,0,"E-DR-1000, E-SUB-B03-GR-1020","E-APP-B03-GR-1030, E-APP-B03-GR-1030",0,0%,No,No
0,,,,,27,27,10-Dec-25,11-Jan-26,10-Dec-25,11-Jan-26,0,122,0,0,0,0,,,0,,,
0,E-SUB-B03-1ST-1000,Submittal for Col. & Walls Conc. Dim.  & RFT DWGs (B03) (1st),Approved Baseline.EN.2.S.P01.B03.SUP.1stF,Approved Baseline,18,18,10-Dec-25,30-Dec-25,10-Dec-25,30-Dec-25,0,113,0,0,0,0,E-DR-1000,"E-APP-B03-1ST-1000, E-APP-B03-1ST-1000, E-SUB-B03-1ST-1010",0,0%,No,No
0,E-SUB-B03-1ST-1010,Submittal for Stairs Conc. Dim.  & RFT DWGs (B03) (1st),Approved Baseline.EN.2.S.P01.B03.SUP.1stF,Approved Baseline,18,18,14-Dec-25,3-Jan-26,14-Dec-25,3-Jan-26,0,122,0,0,0,0,"E-DR-1000, E-SUB-B03-1ST-1000","E-APP-B03-1ST-1010, E-APP-B03-1ST-1010, E-SUB-B03-1ST-1020",0,0%,No,No
0,E-SUB-B03-1ST-1020,Submittal for Beams Conc. Dim.  & RFT DWGs (B03) (1st),Approved Baseline.EN.2.S.P01.B03.SUP.1stF,Approved Baseline,18,18,17-Dec-25,6-Jan-26,17-Dec-25,6-Jan-26,0,122,0,0,0,0,"E-DR-1000, E-SUB-B03-1ST-1010","E-APP-B03-1ST-1020, E-APP-B03-1ST-1020, E-SUB-B03-1ST-1030",0,0%,No,No
0,E-SUB-B03-1ST-1030,Submittal for Slabs Conc. Dim.  & RFT DWGs (B03) (1st),Approved Baseline.EN.2.S.P01.B03.SUP.1stF,Approved Baseline,18,18,21-Dec-25,11-Jan-26,21-Dec-25,11-Jan-26,0,122,0,0,0,0,"E-DR-1000, E-SUB-B03-1ST-1020","E-APP-B03-1ST-1030, E-APP-B03-1ST-1030",0,0%,No,No
0,,,,,27,27,20-Dec-25,20-Jan-26,20-Dec-25,20-Jan-26,0,169,0,0,0,0,,,0,,,
0,E-SUB-B03-2ND-1000,Submittal for Col. & Walls Conc. Dim.  & RFT DWGs (B03) (2nd),Approved Baseline.EN.2.S.P01.B03.SUP.2ndF,Approved Baseline,18,18,20-Dec-25,10-Jan-26,20-Dec-25,10-Jan-26,0,160,0,0,0,0,E-DR-1000,"E-APP-B03-2ND-1000, E-APP-B03-2ND-1000, E-SUB-B03-2ND-1010",0,0%,No,No
0,E-SUB-B03-2ND-1010,Submittal for Stairs Conc. Dim.  & RFT DWGs (B03) (2nd),Approved Baseline.EN.2.S.P01.B03.SUP.2ndF,Approved Baseline,18,18,23-Dec-25,13-Jan-26,23-Dec-25,13-Jan-26,0,169,0,0,0,0,"E-DR-1000, E-SUB-B03-2ND-1000","E-APP-B03-2ND-1010, E-APP-B03-2ND-1010, E-SUB-B03-2ND-1020",0,0%,No,No
0,E-SUB-B03-2ND-1020,Submittal for Beams Conc. Dim.  & RFT DWGs (B03) (2nd),Approved Baseline.EN.2.S.P01.B03.SUP.2ndF,Approved Baseline,18,18,27-Dec-25,17-Jan-26,27-Dec-25,17-Jan-26,0,169,0,0,0,0,"E-DR-1000, E-SUB-B03-2ND-1010","E-APP-B03-2ND-1020, E-APP-B03-2ND-1020, E-SUB-B03-2ND-1030",0,0%,No,No
0,E-SUB-B03-2ND-1030,Submittal for Slabs Conc. Dim.  & RFT DWGs (B03) (2nd),Approved Baseline.EN.2.S.P01.B03.SUP.2ndF,Approved Baseline,18,18,30-Dec-25,20-Jan-26,30-Dec-25,20-Jan-26,0,169,0,0,0,0,"E-DR-1000, E-SUB-B03-2ND-1020","E-APP-B03-2ND-1030, E-APP-B03-2ND-1030",0,0%,No,No
0,,,,,27,27,30-Dec-25,1-Feb-26,30-Dec-25,1-Feb-26,0,213,0,0,0,0,,,0,,,
0,E-SUB-B03-3RD-1000,Submittal for Col. & Walls Conc. Dim.  & RFT DWGs (B03) (3rd),Approved Baseline.EN.2.S.P01.B03.SUP.3rdF,Approved Baseline,18,18,30-Dec-25,20-Jan-26,30-Dec-25,20-Jan-26,0,204,0,0,0,0,E-DR-1000,"E-APP-B03-3RD-1000, E-APP-B03-3RD-1000, E-SUB-B03-3RD-1010",0,0%,No,No
0,E-SUB-B03-3RD-1010,Submittal for Stairs Conc. Dim.  & RFT DWGs (B03) (3rd),Approved Baseline.EN.2.S.P01.B03.SUP.3rdF,Approved Baseline,18,18,3-Jan-26,24-Jan-26,3-Jan-26,24-Jan-26,0,213,0,0,0,0,"E-DR-1000, E-SUB-B03-3RD-1000","E-APP-B03-3RD-1010, E-APP-B03-3RD-1010, E-SUB-B03-3RD-1020",0,0%,No,No
0,E-SUB-B03-3RD-1020,Submittal for Beams Conc. Dim.  & RFT DWGs (B03) (3rd),Approved Baseline.EN.2.S.P01.B03.SUP.3rdF,Approved Baseline,18,18,6-Jan-26,28-Jan-26,6-Jan-26,28-Jan-26,0,213,0,0,0,0,"E-DR-1000, E-SUB-B03-3RD-1010","E-APP-B03-3RD-1020, E-APP-B03-3RD-1020, E-SUB-B03-3RD-1030",0,0%,No,No
0,E-SUB-B03-3RD-1030,Submittal for Slabs Conc. Dim.  & RFT DWGs (B03) (3rd),Approved Baseline.EN.2.S.P01.B03.SUP.3rdF,Approved Baseline,18,18,11-Jan-26,1-Feb-26,11-Jan-26,1-Feb-26,0,213,0,0,0,0,"E-DR-1000, E-SUB-B03-3RD-1020","E-APP-B03-3RD-1030, E-APP-B03-3RD-1030",0,0%,No,No
0,,,,,27,27,19-Jan-26,19-Feb-26,19-Jan-26,19-Feb-26,0,251,0,0,0,0,,,0,,,
0,E-SUB-B03-4TH-1000,Submittal for Col. & Walls Conc. Dim.  & RFT DWGs (B03) (4th),Approved Baseline.EN.2.S.P01.B03.SUP.4thF,Approved Baseline,18,18,19-Jan-26,9-Feb-26,19-Jan-26,9-Feb-26,0,242,0,0,0,0,E-DR-1000,"E-APP-B03-4TH-1000, E-APP-B03-4TH-1000, E-SUB-B03-4TH-1010",0,0%,No,No
0,E-SUB-B03-4TH-1010,Submittal for Stairs Conc. Dim.  & RFT DWGs (B03) (4th),Approved Baseline.EN.2.S.P01.B03.SUP.4thF,Approved Baseline,18,18,22-Jan-26,12-Feb-26,22-Jan-26,12-Feb-26,0,251,0,0,0,0,"E-DR-1000, E-SUB-B03-4TH-1000","E-APP-B03-4TH-1010, E-APP-B03-4TH-1010, E-SUB-B03-4TH-1020",0,0%,No,No
0,E-SUB-B03-4TH-1020,Submittal for Beams Conc. Dim.  & RFT DWGs (B03) (4th),Approved Baseline.EN.2.S.P01.B03.SUP.4thF,Approved Baseline,18,18,27-Jan-26,16-Feb-26,27-Jan-26,16-Feb-26,0,251,0,0,0,0,"E-DR-1000, E-SUB-B03-4TH-1010","E-APP-B03-4TH-1020, E-APP-B03-4TH-1020, E-SUB-B03-4TH-1030",0,0%,No,No
0,E-SUB-B03-4TH-1030,Submittal for Slabs Conc. Dim.  & RFT DWGs (B03) (4th),Approved Baseline.EN.2.S.P01.B03.SUP.4thF,Approved Baseline,18,18,31-Jan-26,19-Feb-26,31-Jan-26,19-Feb-26,0,251,0,0,0,0,"E-DR-1000, E-SUB-B03-4TH-1020","E-APP-B03-4TH-1030, E-APP-B03-4TH-1030",0,0%,No,No
0,,,,,24,24,3-Feb-26,2-Mar-26,3-Feb-26,2-Mar-26,0,280,0,0,0,0,,,0,,,
0,E-SUB-B03-RF-1000,Submittal for Col. & Walls Conc. Dim.  & RFT DWGs (B03) (RF),Approved Baseline.EN.2.S.P01.B03.SUP.RF,Approved Baseline,18,18,3-Feb-26,23-Feb-26,3-Feb-26,23-Feb-26,0,280,0,0,0,0,E-DR-1000,"E-APP-B03-RF-1000, E-APP-B03-RF-1000, E-SUB-B03-RF-1010",0,0%,No,No
0,E-SUB-B03-RF-1010,Submittal for Beams Conc. Dim.  & RFT DWGs (B03) (RF),Approved Baseline.EN.2.S.P01.B03.SUP.RF,Approved Baseline,18,18,7-Feb-26,26-Feb-26,7-Feb-26,26-Feb-26,0,280,0,0,0,0,"E-DR-1000, E-SUB-B03-RF-1000","E-APP-B03-RF-1010, E-APP-B03-RF-1010, E-SUB-B03-RF-1020",0,0%,No,No
0,E-SUB-B03-RF-1020,Submittal for Slabs Conc. Dim.  & RFT DWGs (B03) (RF),Approved Baseline.EN.2.S.P01.B03.SUP.RF,Approved Baseline,18,18,10-Feb-26,2-Mar-26,10-Feb-26,2-Mar-26,0,280,0,0,0,0,"E-DR-1000, E-SUB-B03-RF-1010","E-APP-B03-RF-1020, E-APP-B03-RF-1020",0,0%,No,No
0,,,,,208,208,13-Sep-25,21-May-26,13-Sep-25,21-May-26,0,221,0,0,0,0,,,0,,,
0,,,,,180,180,13-Sep-25,19-Apr-26,13-Sep-25,19-Apr-26,0,249,0,0,0,0,,,0,,,
0,,,,,18,18,21-Oct-25,10-Nov-25,21-Oct-25,10-Nov-25,0,29,0,0,0,0,,,0,,,
0,E-SUB-B04-REP-1000,Submittal for General Replacement Plan & Typical Sections for Replacement / Backfilling DWGs (B04),Approved Baseline.EN.2.S.P01.B04.SUB.1,Approved Baseline,18,18,21-Oct-25,10-Nov-25,21-Oct-25,10-Nov-25,0,29,0,0,0,0,E-DR-1000,"E-APP-B04-REP-1000, E-APP-B04-REP-1000",0,0%,No,No
0,,,,,39,39,21-Sep-25,5-Nov-25,21-Sep-25,5-Nov-25,0,50,0,0,0,0,,,0,,,
0,E-SUB-B04-FOOT-1000,Submittal for  Waterproofing Layout Plan (B04),Approved Baseline.EN.2.S.P01.B04.SUB.F,Approved Baseline,18,18,21-Sep-25,12-Oct-25,21-Sep-25,12-Oct-25,0,28,0,0,0,0,E-DR-1000,"E-APP-B04-FOOT-1000, E-APP-B04-FOOT-1000, E-SUB-B04-FOOT-1010",0,0%,No,No
0,E-SUB-B04-FOOT-1010,Submittal for PC Raft Conc. Dim. DWGs (B04) (footing),Approved Baseline.EN.2.S.P01.B04.SUB.F,Approved Baseline,18,18,8-Oct-25,28-Oct-25,8-Oct-25,28-Oct-25,0,49,0,0,0,0,"E-DR-1000, E-SUB-B04-FOOT-1000","E-APP-B04-FOOT-1010, E-APP-B04-FOOT-1010, E-SUB-B04-FOOT-1020",0,0%,No,No
0,E-SUB-B04-FOOT-1020,Submittal for RC Raft & Footings Conc. Dim. DWGs (B04) (footing),Approved Baseline.EN.2.S.P01.B04.SUB.F,Approved Baseline,18,18,12-Oct-25,1-Nov-25,12-Oct-25,1-Nov-25,0,51,0,0,0,0,"E-DR-1000, E-SUB-B04-FOOT-1010","E-APP-B04-FOOT-1020, E-APP-B04-FOOT-1020, E-SUB-B04-FOOT-1030",0,0%,No,No
0,E-SUB-B04-FOOT-1030,Submittal for RC Raft & Footings RFT DWGs (B04) (footing),Approved Baseline.EN.2.S.P01.B04.SUB.F,Approved Baseline,18,18,16-Oct-25,5-Nov-25,16-Oct-25,5-Nov-25,0,50,0,0,0,0,"E-DR-1000, E-SUB-B04-FOOT-1020","E-APP-B04-FOOT-1030, E-APP-B04-FOOT-1030",0,0%,No,No
0,,,,,180,180,13-Sep-25,19-Apr-26,13-Sep-25,19-Apr-26,0,249,0,0,0,0,,,0,,,
0,E-SUB-B04-BAS02-1000,Submittal for Col. & Walls Conc. Dim.  & RFT DWGs (B04) (Bas 02),Approved Baseline.EN.2.S.P01.B04.SUB.2ndB,Approved Baseline,18,18,10-Nov-25,30-Nov-25,10-Nov-25,30-Nov-25,0,41,0,0,0,0,E-DR-1000,"E-APP-B04-BAS02-1000, E-APP-B04-BAS02-1000, E-SUB-B04-BAS02-1010",0,0%,No,No
0,E-SUB-B04-BAS02-1010,Submittal for Stairs Conc. Dim.  & RFT DWGs (B04) (Bas 02),Approved Baseline.EN.2.S.P01.B04.SUB.2ndB,Approved Baseline,18,18,13-Nov-25,3-Dec-25,13-Nov-25,3-Dec-25,0,47,0,0,0,0,"E-DR-1000, E-SUB-B04-BAS02-1000","E-APP-B04-BAS02-1010, E-APP-B04-BAS02-1010, E-SUB-B04-BAS02-1020",0,0%,No,No
0,E-SUB-B04-BAS02-1020,Submittal for Ramps Conc. Dim.  & RFT DWGs (B04) (Bas 02),Approved Baseline.EN.2.S.P01.B04.SUB.2ndB,Approved Baseline,18,18,17-Nov-25,7-Dec-25,17-Nov-25,7-Dec-25,0,47,0,0,0,0,"E-DR-1000, E-SUB-B04-BAS02-1010","E-APP-B04-BAS02-1020, E-APP-B04-BAS02-1020, E-SUB-B04-BAS02-1030",0,0%,No,No
0,E-SUB-B04-BAS02-1030,Submittal for Beams Conc. Dim.  & RFT DWGs (B04) (Bas 02),Approved Baseline.EN.2.S.P01.B04.SUB.2ndB,Approved Baseline,18,18,20-Nov-25,10-Dec-25,20-Nov-25,10-Dec-25,0,47,0,0,0,0,"E-DR-1000, E-SUB-B04-BAS02-1020","E-APP-B04-BAS02-1030, E-APP-B04-BAS02-1030, E-SUB-B04-BAS02-1040",0,0%,No,No
0,E-SUB-B04-BAS02-1040,Submittal for Slabs Conc. Dim.  & RFT DWGs (B04) (Bas 02),Approved Baseline.EN.2.S.P01.B04.SUB.2ndB,Approved Baseline,18,18,24-Nov-25,14-Dec-25,24-Nov-25,14-Dec-25,0,47,0,0,0,0,"E-DR-1000, E-SUB-B04-BAS02-1030","E-APP-B04-BAS02-1040, E-APP-B04-BAS02-1040",0,0%,No,No
0,,,,,30,30,13-Sep-25,18-Oct-25,13-Sep-25,18-Oct-25,0,86,0,0,0,0,,,0,,,
0,E-SUB-B04-WT-1000,Submittal for PC Raft Conc. Dim. DWGs (B04) (Water Tank),Approved Baseline.EN.2.S.P01.B04.SUB.2ndB.1,Approved Baseline,18,18,13-Sep-25,2-Oct-25,13-Sep-25,2-Oct-25,0,25,0,0,0,0,E-DR-1000,"E-APP-B04-WT-1000, E-APP-B04-WT-1000, E-SUB-B04-WT-1010",0,0%,No,No
0,E-SUB-B04-WT-1010,Submittal for RC Raft Conc. Dim. DWGs (B04) (Water Tank),Approved Baseline.EN.2.S.P01.B04.SUB.2ndB.1,Approved Baseline,18,18,16-Sep-25,7-Oct-25,16-Sep-25,7-Oct-25,0,34,0,0,0,0,"E-DR-1000, E-SUB-B04-WT-1000","E-APP-B04-WT-1010, E-APP-B04-WT-1010, E-SUB-B04-WT-1020",0,0%,No,No
0,E-SUB-B04-WT-1020,Submittal for RC Raft RFT DWGs (B04) (Water Tank),Approved Baseline.EN.2.S.P01.B04.SUB.2ndB.1,Approved Baseline,18,18,20-Sep-25,11-Oct-25,20-Sep-25,11-Oct-25,0,35,0,0,0,0,"E-DR-1000, E-SUB-B04-WT-1010","E-APP-B04-WT-1020, E-APP-B04-WT-1020, E-SUB-B04-WT-1030",0,0%,No,No
0,E-SUB-B04-WT-1030,Submittal for Col. & Walls DWGs (B04) (Water Tank),Approved Baseline.EN.2.S.P01.B04.SUB.2ndB.1,Approved Baseline,18,18,23-Sep-25,14-Oct-25,23-Sep-25,14-Oct-25,0,40,0,0,0,0,"E-DR-1000, E-SUB-B04-WT-1020","E-APP-B04-WT-1030, E-APP-B04-WT-1030, E-SUB-B04-WT-1040",0,0%,No,No
0,E-SUB-B04-WT-1040,Submittal for Slabs DWGs (B04) (Water Tank),Approved Baseline.EN.2.S.P01.B04.SUB.2ndB.1,Approved Baseline,18,18,27-Sep-25,18-Oct-25,27-Sep-25,18-Oct-25,0,86,0,0,0,0,"E-DR-1000, E-SUB-B04-WT-1030","E-APP-B04-WT-1040, E-APP-B04-WT-1040",0,0%,No,No
0,,,,,21,21,25-Mar-26,19-Apr-26,25-Mar-26,19-Apr-26,0,249,0,0,0,0,,,0,,,
0,E-SUB-B04-SOG-1000,Submittal for S.O.G Conc. Dim. DWGs (B04) (Sog),Approved Baseline.EN.2.S.P01.B04.SUB.2ndB.2,Approved Baseline,18,18,25-Mar-26,15-Apr-26,25-Mar-26,15-Apr-26,0,249,0,0,0,0,E-DR-1000,"E-APP-B04-SOG-1000, E-APP-B04-SOG-1000, E-SUB-B04-SOG-1010",0,0%,No,No
0,E-SUB-B04-SOG-1010,Submittal for S.O.G RFT DWGs (B04) (Sog),Approved Baseline.EN.2.S.P01.B04.SUB.2ndB.2,Approved Baseline,18,18,29-Mar-26,19-Apr-26,29-Mar-26,19-Apr-26,0,249,0,0,0,0,"E-DR-1000, E-SUB-B04-SOG-1000","E-APP-B04-SOG-1010, E-APP-B04-SOG-1010",0,0%,No,No
0,,,,,30,30,30-Nov-25,3-Jan-26,30-Nov-25,3-Jan-26,0,56,0,0,0,0,,,0,,,
0,E-SUB-B04-BAS01-1000,Submittal for Col. & Walls Conc. Dim.  & RFT DWGs (B04) (Bas 01),Approved Baseline.EN.2.S.P01.B04.SUB.1stB,Approved Baseline,18,18,30-Nov-25,20-Dec-25,30-Nov-25,20-Dec-25,0,56,0,0,0,0,E-DR-1000,"E-APP-B04-BAS01-1000, E-APP-B04-BAS01-1000, E-SUB-B04-BAS01-1010",0,0%,No,No
0,E-SUB-B04-BAS01-1010,Submittal for Stairs Conc. Dim.  & RFT DWGs (B04) (Bas 01),Approved Baseline.EN.2.S.P01.B04.SUB.1stB,Approved Baseline,18,18,3-Dec-25,23-Dec-25,3-Dec-25,23-Dec-25,0,56,0,0,0,0,"E-DR-1000, E-SUB-B04-BAS01-1000","E-APP-B04-BAS01-1010, E-APP-B04-BAS01-1010, E-SUB-B04-BAS01-1020",0,0%,No,No
0,E-SUB-B04-BAS01-1020,Submittal for Ramps Conc. Dim.  & RFT DWGs (B04) (Bas 01),Approved Baseline.EN.2.S.P01.B04.SUB.1stB,Approved Baseline,18,18,7-Dec-25,27-Dec-25,7-Dec-25,27-Dec-25,0,56,0,0,0,0,"E-DR-1000, E-SUB-B04-BAS01-1010","E-APP-B04-BAS01-1020, E-APP-B04-BAS01-1020, E-SUB-B04-BAS01-1030",0,0%,No,No
0,E-SUB-B04-BAS01-1030,Submittal for Beams Conc. Dim.  & RFT DWGs (B04) (Bas 01),Approved Baseline.EN.2.S.P01.B04.SUB.1stB,Approved Baseline,18,18,10-Dec-25,30-Dec-25,10-Dec-25,30-Dec-25,0,56,0,0,0,0,"E-DR-1000, E-SUB-B04-BAS01-1020","E-APP-B04-BAS01-1030, E-APP-B04-BAS01-1030, E-SUB-B04-BAS01-1040",0,0%,No,No
0,E-SUB-B04-BAS01-1040,Submittal for Slabs Conc. Dim.  & RFT DWGs (B04) (Bas 01),Approved Baseline.EN.2.S.P01.B04.SUB.1stB,Approved Baseline,18,18,14-Dec-25,3-Jan-26,14-Dec-25,3-Jan-26,0,56,0,0,0,0,"E-DR-1000, E-SUB-B04-BAS01-1030","E-APP-B04-BAS01-1040, E-APP-B04-BAS01-1040",0,0%,No,No
0,,,,,129,129,15-Dec-25,21-May-26,15-Dec-25,21-May-26,0,221,0,0,0,0,,,0,,,
0,,,,,27,27,15-Dec-25,15-Jan-26,15-Dec-25,15-Jan-26,0,73,0,0,0,0,,,0,,,
0,E-SUB-B04-GR-1000,Submittal for Col. & Walls Conc. Dim.  & RFT DWGs (B04) (GF),Approved Baseline.EN.2.S.P01.B04.SUP.GF,Approved Baseline,18,18,15-Dec-25,4-Jan-26,15-Dec-25,4-Jan-26,0,71,0,0,0,0,E-DR-1000,"E-APP-B04-GR-1000, E-APP-B04-GR-1000, E-SUB-B04-GR-1010",0,0%,No,No
0,E-SUB-B04-GR-1010,Submittal for Stairs Conc. Dim.  & RFT DWGs (B04) (GF),Approved Baseline.EN.2.S.P01.B04.SUP.GF,Approved Baseline,18,18,18-Dec-25,8-Jan-26,18-Dec-25,8-Jan-26,0,73,0,0,0,0,"E-DR-1000, E-SUB-B04-GR-1000","E-APP-B04-GR-1010, E-APP-B04-GR-1010, E-SUB-B04-GR-1020",0,0%,No,No
0,E-SUB-B04-GR-1020,Submittal for Beams Conc. Dim.  & RFT DWGs (B04) (GF),Approved Baseline.EN.2.S.P01.B04.SUP.GF,Approved Baseline,18,18,22-Dec-25,12-Jan-26,22-Dec-25,12-Jan-26,0,73,0,0,0,0,"E-DR-1000, E-SUB-B04-GR-1010","E-APP-B04-GR-1020, E-APP-B04-GR-1020, E-SUB-B04-GR-1030",0,0%,No,No
0,E-SUB-B04-GR-1030,Submittal for Slabs Conc. Dim.  & RFT DWGs (B04) (GF),Approved Baseline.EN.2.S.P01.B04.SUP.GF,Approved Baseline,18,18,25-Dec-25,15-Jan-26,25-Dec-25,15-Jan-26,0,73,0,0,0,0,"E-DR-1000, E-SUB-B04-GR-1020","E-APP-B04-GR-1030, E-APP-B04-GR-1030",0,0%,No,No
0,,,,,27,27,25-Dec-25,27-Jan-26,25-Dec-25,27-Jan-26,0,90,0,0,0,0,,,0,,,
0,E-SUB-B04-1ST-1000,Submittal for Col. & Walls Conc. Dim.  & RFT DWGs (B04) (1st),Approved Baseline.EN.2.S.P01.B04.SUP.1stF,Approved Baseline,18,18,25-Dec-25,15-Jan-26,25-Dec-25,15-Jan-26,0,89,0,0,0,0,E-DR-1000,"E-APP-B04-1ST-1000, E-APP-B04-1ST-1000, E-SUB-B04-1ST-1010",0,0%,No,No
0,E-SUB-B04-1ST-1010,Submittal for Stairs Conc. Dim.  & RFT DWGs (B04) (1st),Approved Baseline.EN.2.S.P01.B04.SUP.1stF,Approved Baseline,18,18,29-Dec-25,19-Jan-26,29-Dec-25,19-Jan-26,0,90,0,0,0,0,"E-DR-1000, E-SUB-B04-1ST-1000","E-APP-B04-1ST-1010, E-APP-B04-1ST-1010, E-SUB-B04-1ST-1020",0,0%,No,No
0,E-SUB-B04-1ST-1020,Submittal for Beams Conc. Dim.  & RFT DWGs (B04) (1st),Approved Baseline.EN.2.S.P01.B04.SUP.1stF,Approved Baseline,18,18,1-Jan-26,22-Jan-26,1-Jan-26,22-Jan-26,0,90,0,0,0,0,"E-DR-1000, E-SUB-B04-1ST-1010","E-APP-B04-1ST-1020, E-APP-B04-1ST-1020, E-SUB-B04-1ST-1030",0,0%,No,No
0,E-SUB-B04-1ST-1030,Submittal for Slabs Conc. Dim.  & RFT DWGs (B04) (1st),Approved Baseline.EN.2.S.P01.B04.SUP.1stF,Approved Baseline,18,18,5-Jan-26,27-Jan-26,5-Jan-26,27-Jan-26,0,90,0,0,0,0,"E-DR-1000, E-SUB-B04-1ST-1020","E-APP-B04-1ST-1030, E-APP-B04-1ST-1030",0,0%,No,No
0,,,,,27,27,10-Jan-26,10-Feb-26,10-Jan-26,10-Feb-26,0,112,0,0,0,0,,,0,,,
0,E-SUB-B04-2ND-1000,Submittal for Col. & Walls Conc. Dim.  & RFT DWGs (B04) (2nd),Approved Baseline.EN.2.S.P01.B04.SUP.2ndF,Approved Baseline,18,18,10-Jan-26,31-Jan-26,10-Jan-26,31-Jan-26,0,109,0,0,0,0,E-DR-1000,"E-APP-B04-2ND-1000, E-APP-B04-2ND-1000, E-SUB-B04-2ND-1010",0,0%,No,No
0,E-SUB-B04-2ND-1010,Submittal for Stairs Conc. Dim.  & RFT DWGs (B04) (2nd),Approved Baseline.EN.2.S.P01.B04.SUP.2ndF,Approved Baseline,18,18,13-Jan-26,3-Feb-26,13-Jan-26,3-Feb-26,0,112,0,0,0,0,"E-DR-1000, E-SUB-B04-2ND-1000","E-APP-B04-2ND-1010, E-APP-B04-2ND-1010, E-SUB-B04-2ND-1020",0,0%,No,No
0,E-SUB-B04-2ND-1020,Submittal for Beams Conc. Dim.  & RFT DWGs (B04) (2nd),Approved Baseline.EN.2.S.P01.B04.SUP.2ndF,Approved Baseline,18,18,17-Jan-26,7-Feb-26,17-Jan-26,7-Feb-26,0,112,0,0,0,0,"E-DR-1000, E-SUB-B04-2ND-1010","E-APP-B04-2ND-1020, E-APP-B04-2ND-1020, E-SUB-B04-2ND-1030",0,0%,No,No
0,E-SUB-B04-2ND-1030,Submittal for Slabs Conc. Dim.  & RFT DWGs (B04) (2nd),Approved Baseline.EN.2.S.P01.B04.SUP.2ndF,Approved Baseline,18,18,20-Jan-26,10-Feb-26,20-Jan-26,10-Feb-26,0,112,0,0,0,0,"E-DR-1000, E-SUB-B04-2ND-1020","E-APP-B04-2ND-1030, E-APP-B04-2ND-1030",0,0%,No,No
0,,,,,27,27,24-Jan-26,24-Feb-26,24-Jan-26,24-Feb-26,0,134,0,0,0,0,,,0,,,
0,E-SUB-B04-3RD-1000,Submittal for Col. & Walls Conc. Dim.  & RFT DWGs (B04) (3rd),Approved Baseline.EN.2.S.P01.B04.SUP.3rdF,Approved Baseline,18,18,24-Jan-26,14-Feb-26,24-Jan-26,14-Feb-26,0,131,0,0,0,0,E-DR-1000,"E-APP-B04-2RD-1000, E-APP-B04-2RD-1000, E-SUB-B04-3RD-1010",0,0%,No,No
0,E-SUB-B04-3RD-1010,Submittal for Stairs Conc. Dim.  & RFT DWGs (B04) (3rd),Approved Baseline.EN.2.S.P01.B04.SUP.3rdF,Approved Baseline,18,18,28-Jan-26,17-Feb-26,28-Jan-26,17-Feb-26,0,134,0,0,0,0,"E-DR-1000, E-SUB-B04-3RD-1000","E-APP-B04-2RD-1010, E-APP-B04-2RD-1010, E-SUB-B04-3RD-1020",0,0%,No,No
0,E-SUB-B04-3RD-1020,Submittal for Beams Conc. Dim.  & RFT DWGs (B04) (3rd),Approved Baseline.EN.2.S.P01.B04.SUP.3rdF,Approved Baseline,18,18,1-Feb-26,21-Feb-26,1-Feb-26,21-Feb-26,0,134,0,0,0,0,"E-DR-1000, E-SUB-B04-3RD-1010","E-APP-B04-2RD-1020, E-APP-B04-2RD-1020, E-SUB-B04-3RD-1030",0,0%,No,No
0,E-SUB-B04-3RD-1030,Submittal for Slabs Conc. Dim.  & RFT DWGs (B04) (3rd),Approved Baseline.EN.2.S.P01.B04.SUP.3rdF,Approved Baseline,18,18,4-Feb-26,24-Feb-26,4-Feb-26,24-Feb-26,0,134,0,0,0,0,"E-DR-1000, E-SUB-B04-3RD-1020","E-APP-B04-2RD-1030, E-APP-B04-2RD-1030",0,0%,No,No
0,,,,,27,27,8-Feb-26,10-Mar-26,8-Feb-26,10-Mar-26,0,154,0,0,0,0,,,0,,,
0,E-SUB-B04-4TH-1000,Submittal for Col. & Walls Conc. Dim.  & RFT DWGs (B04) (4th),Approved Baseline.EN.2.S.P01.B04.SUP.4thF,Approved Baseline,18,18,8-Feb-26,28-Feb-26,8-Feb-26,28-Feb-26,0,151,0,0,0,0,E-DR-1000,"E-APP-B04-4TH-1000, E-APP-B04-4TH-1000, E-SUB-B04-4TH-1010",0,0%,No,No
0,E-SUB-B04-4TH-1010,Submittal for Stairs Conc. Dim.  & RFT DWGs (B04) (4th),Approved Baseline.EN.2.S.P01.B04.SUP.4thF,Approved Baseline,18,18,11-Feb-26,3-Mar-26,11-Feb-26,3-Mar-26,0,154,0,0,0,0,"E-DR-1000, E-SUB-B04-4TH-1000","E-APP-B04-4TH-1010, E-APP-B04-4TH-1010, E-SUB-B04-4TH-1020",0,0%,No,No
0,E-SUB-B04-4TH-1020,Submittal for Beams Conc. Dim.  & RFT DWGs (B04) (4th),Approved Baseline.EN.2.S.P01.B04.SUP.4thF,Approved Baseline,18,18,15-Feb-26,7-Mar-26,15-Feb-26,7-Mar-26,0,154,0,0,0,0,"E-DR-1000, E-SUB-B04-4TH-1010","E-APP-B04-4TH-1020, E-APP-B04-4TH-1020, E-SUB-B04-4TH-1030",0,0%,No,No
0,E-SUB-B04-4TH-1030,Submittal for Slabs Conc. Dim.  & RFT DWGs (B04) (4th),Approved Baseline.EN.2.S.P01.B04.SUP.4thF,Approved Baseline,18,18,18-Feb-26,10-Mar-26,18-Feb-26,10-Mar-26,0,154,0,0,0,0,"E-DR-1000, E-SUB-B04-4TH-1020","E-APP-B04-4TH-1030, E-APP-B04-4TH-1030",0,0%,No,No
0,,,,,27,27,28-Feb-26,4-Apr-26,28-Feb-26,4-Apr-26,0,169,0,0,0,0,,,0,,,
0,E-SUB-B04-5TH-1000,Submittal for Col. & Walls Conc. Dim.  & RFT DWGs (B04) (5th),Approved Baseline.EN.2.S.P01.B04.SUP.5thF,Approved Baseline,18,18,28-Feb-26,24-Mar-26,28-Feb-26,24-Mar-26,0,167,0,0,0,0,E-DR-1000,"E-APP-B04-5TH-1000, E-APP-B04-5TH-1000, E-SUB-B04-5TH-1010",0,0%,No,No
0,E-SUB-B04-5TH-1010,Submittal for Stairs Conc. Dim.  & RFT DWGs (B04) (5th),Approved Baseline.EN.2.S.P01.B04.SUP.5thF,Approved Baseline,18,18,3-Mar-26,28-Mar-26,3-Mar-26,28-Mar-26,0,169,0,0,0,0,"E-DR-1000, E-SUB-B04-5TH-1000","E-APP-B04-5TH-1010, E-APP-B04-5TH-1010, E-SUB-B04-5TH-1020",0,0%,No,No
0,E-SUB-B04-5TH-1020,Submittal for Beams Conc. Dim.  & RFT DWGs (B04) (5th),Approved Baseline.EN.2.S.P01.B04.SUP.5thF,Approved Baseline,18,18,7-Mar-26,31-Mar-26,7-Mar-26,31-Mar-26,0,169,0,0,0,0,"E-DR-1000, E-SUB-B04-5TH-1010","E-APP-B04-5TH-1020, E-APP-B04-5TH-1020, E-SUB-B04-5TH-1030",0,0%,No,No
0,E-SUB-B04-5TH-1030,Submittal for Slabs Conc. Dim.  & RFT DWGs (B04) (5th),Approved Baseline.EN.2.S.P01.B04.SUP.5thF,Approved Baseline,18,18,10-Mar-26,4-Apr-26,10-Mar-26,4-Apr-26,0,169,0,0,0,0,"E-DR-1000, E-SUB-B04-5TH-1020","E-APP-B04-5TH-1030, E-APP-B04-5TH-1030",0,0%,No,No
0,,,,,27,27,15-Mar-26,20-Apr-26,15-Mar-26,20-Apr-26,0,183,0,0,0,0,,,0,,,
0,E-SUB-B04-6TH-1000,Submittal for Col. & Walls Conc. Dim.  & RFT DWGs (B04) (6th),Approved Baseline.EN.2.S.P01.B04.SUP.6thF,Approved Baseline,18,18,15-Mar-26,8-Apr-26,15-Mar-26,8-Apr-26,0,183,0,0,0,0,E-DR-1000,"E-APP-B04-6TH-1000, E-APP-B04-6TH-1000, E-SUB-B04-6TH-1010",0,0%,No,No
0,E-SUB-B04-6TH-1010,Submittal for Stairs Conc. Dim.  & RFT DWGs (B04) (6th),Approved Baseline.EN.2.S.P01.B04.SUP.6thF,Approved Baseline,18,18,23-Mar-26,12-Apr-26,23-Mar-26,12-Apr-26,0,183,0,0,0,0,"E-DR-1000, E-SUB-B04-6TH-1000","E-APP-B04-6TH-1010, E-APP-B04-6TH-1010, E-SUB-B04-6TH-1020",0,0%,No,No
0,E-SUB-B04-6TH-1020,Submittal for Beams Conc. Dim.  & RFT DWGs (B04) (6th),Approved Baseline.EN.2.S.P01.B04.SUP.6thF,Approved Baseline,18,18,26-Mar-26,16-Apr-26,26-Mar-26,16-Apr-26,0,183,0,0,0,0,"E-DR-1000, E-SUB-B04-6TH-1010","E-APP-B04-6TH-1020, E-APP-B04-6TH-1020, E-SUB-B04-6TH-1030",0,0%,No,No
0,E-SUB-B04-6TH-1030,Submittal for Slabs Conc. Dim.  & RFT DWGs (B04) (6th),Approved Baseline.EN.2.S.P01.B04.SUP.6thF,Approved Baseline,18,18,30-Mar-26,20-Apr-26,30-Mar-26,20-Apr-26,0,183,0,0,0,0,"E-DR-1000, E-SUB-B04-6TH-1020","E-APP-B04-6TH-1030, E-APP-B04-6TH-1030",0,0%,No,No
0,,,,,27,27,4-Apr-26,5-May-26,4-Apr-26,5-May-26,0,195,0,0,0,0,,,0,,,
0,E-SUB-B04-7TH-1000,Submittal for Col. & Walls Conc. Dim.  & RFT DWGs (B04) (7th),Approved Baseline.EN.2.S.P01.B04.SUP.7thF,Approved Baseline,18,18,4-Apr-26,25-Apr-26,4-Apr-26,25-Apr-26,0,195,0,0,0,0,E-DR-1000,"E-APP-B04-7TH-1000, E-APP-B04-7TH-1000, E-SUB-B04-7TH-1010",0,0%,No,No
0,E-SUB-B04-7TH-1010,Submittal for Stairs Conc. Dim.  & RFT DWGs (B04) (7th),Approved Baseline.EN.2.S.P01.B04.SUP.7thF,Approved Baseline,18,18,7-Apr-26,28-Apr-26,7-Apr-26,28-Apr-26,0,195,0,0,0,0,"E-DR-1000, E-SUB-B04-7TH-1000","E-APP-B04-7TH-1010, E-APP-B04-7TH-1010, E-SUB-B04-7TH-1020",0,0%,No,No
0,E-SUB-B04-7TH-1020,Submittal for Beams Conc. Dim.  & RFT DWGs (B04) (7th),Approved Baseline.EN.2.S.P01.B04.SUP.7thF,Approved Baseline,18,18,11-Apr-26,2-May-26,11-Apr-26,2-May-26,0,195,0,0,0,0,"E-DR-1000, E-SUB-B04-7TH-1010","E-APP-B04-7TH-1020, E-APP-B04-7TH-1020, E-SUB-B04-7TH-1030",0,0%,No,No
0,E-SUB-B04-7TH-1030,Submittal for Slabs Conc. Dim.  & RFT DWGs  (B04) (7th),Approved Baseline.EN.2.S.P01.B04.SUP.7thF,Approved Baseline,18,18,15-Apr-26,5-May-26,15-Apr-26,5-May-26,0,195,0,0,0,0,"E-DR-1000, E-SUB-B04-7TH-1020","E-APP-B04-7TH-1030, E-APP-B04-7TH-1030",0,0%,No,No
0,,,,,27,27,19-Apr-26,19-May-26,19-Apr-26,19-May-26,0,207,0,0,0,0,,,0,,,
0,E-SUB-B04-8TH-1000,Submittal for Col. & Walls Conc. Dim.  & RFT DWGs (B04) (8th),Approved Baseline.EN.2.S.P01.B04.SUP.8thF,Approved Baseline,18,18,19-Apr-26,9-May-26,19-Apr-26,9-May-26,0,207,0,0,0,0,E-DR-1000,"E-APP-B04-8TH-1000, E-APP-B04-8TH-1000, E-SUB-B04-8TH-1010",0,0%,No,No
0,E-SUB-B04-8TH-1010,Submittal for Stairs Conc. Dim.  & RFT DWGs (B04) (8th),Approved Baseline.EN.2.S.P01.B04.SUP.8thF,Approved Baseline,18,18,22-Apr-26,12-May-26,22-Apr-26,12-May-26,0,207,0,0,0,0,"E-DR-1000, E-SUB-B04-8TH-1000","E-APP-B04-8TH-1010, E-APP-B04-8TH-1010, E-SUB-B04-8TH-1020",0,0%,No,No
0,E-SUB-B04-8TH-1020,Submittal for Beams Conc. Dim.  & RFT DWGs (B04) (8th),Approved Baseline.EN.2.S.P01.B04.SUP.8thF,Approved Baseline,18,18,26-Apr-26,16-May-26,26-Apr-26,16-May-26,0,207,0,0,0,0,"E-DR-1000, E-SUB-B04-8TH-1010","E-APP-B04-8TH-1020, E-APP-B04-8TH-1020, E-SUB-B04-8TH-1030",0,0%,No,No
0,E-SUB-B04-8TH-1030,Submittal for Slabs Conc. Dim.  & RFT DWGs (B04) (8th),Approved Baseline.EN.2.S.P01.B04.SUP.8thF,Approved Baseline,18,18,29-Apr-26,19-May-26,29-Apr-26,19-May-26,0,207,0,0,0,0,"E-DR-1000, E-SUB-B04-8TH-1020","E-APP-B04-8TH-1030, E-APP-B04-8TH-1030",0,0%,No,No
0,,,,,24,24,25-Apr-26,21-May-26,25-Apr-26,21-May-26,0,221,0,0,0,0,,,0,,,
0,E-SUB-B04-RF-1000,Submittal for Col. & Walls Conc. Dim.  & RFT DWGs (B04) (RF),Approved Baseline.EN.2.S.P01.B04.SUP.RF,Approved Baseline,18,18,25-Apr-26,14-May-26,25-Apr-26,14-May-26,0,221,0,0,0,0,E-DR-1000,"E-APP-B04-RF-1000, E-APP-B04-RF-1000, E-SUB-B04-RF-1010",0,0%,No,No
0,E-SUB-B04-RF-1010,Submittal for Beams Conc. Dim.  & RFT DWGs (B04) (RF),Approved Baseline.EN.2.S.P01.B04.SUP.RF,Approved Baseline,18,18,28-Apr-26,18-May-26,28-Apr-26,18-May-26,0,221,0,0,0,0,"E-DR-1000, E-SUB-B04-RF-1000","E-APP-B04-RF-1010, E-APP-B04-RF-1010, E-SUB-B04-RF-1020",0,0%,No,No
0,E-SUB-B04-RF-1020,Submittal for Slabs Conc. Dim.  & RFT DWGs (B04) (RF),Approved Baseline.EN.2.S.P01.B04.SUP.RF,Approved Baseline,18,18,2-May-26,21-May-26,2-May-26,21-May-26,0,221,0,0,0,0,"E-DR-1000, E-SUB-B04-RF-1010","E-APP-B04-RF-1020, E-APP-B04-RF-1020",0,0%,No,No
0,,,,,207,207,25-Sep-25,7-Jun-26,25-Sep-25,7-Jun-26,0,221,0,0,0,0,,,0,,,
0,,,,,177,177,25-Sep-25,28-Apr-26,25-Sep-25,28-Apr-26,0,251,0,0,0,0,,,0,,,
0,,,,,171,171,2-Oct-25,28-Apr-26,2-Oct-25,28-Apr-26,0,251,0,0,0,0,,,0,,,
0,,,,,164,164,2-Oct-25,20-Apr-26,2-Oct-25,20-Apr-26,0,229,0,0,0,0,,,0,,,
0,,,,,10,10,2-Oct-25,14-Oct-25,2-Oct-25,14-Oct-25,0,11,0,0,0,0,,,0,,,
0,E-APP-B01-REP-1000,Approval for General Replacement Plan & Typical Sections for Replacement / Backfilling DWGs (B01),Approved Baseline.EN.2.A.P02.B01.SUB.1,Approved Baseline,10,10,2-Oct-25,14-Oct-25,2-Oct-25,14-Oct-25,11,11,0,0,0,0,"E-SUB-B01-REP-1000, E-SUB-B01-REP-1000",CON-EW-B01-1000,0,0%,No,No
0,,,,,19,19,23-Oct-25,13-Nov-25,23-Oct-25,13-Nov-25,0,18,0,0,0,0,,,0,,,
0,E-APP-B01-FOOT-1000,Approval for PC Raft Conc. Dim. DWGs (B01) (footing),Approved Baseline.EN.2.A.P02.B01.SUB.F,Approved Baseline,10,10,23-Oct-25,3-Nov-25,23-Oct-25,3-Nov-25,17,17,0,0,0,0,"E-SUB-B01-FOOT-1000, E-SUB-B01-FOOT-1000",CON-B01-FOOT-1000,0,0%,No,No
0,E-APP-B01-FOOT-1010,Approval for RC Raft & Footings Conc. Dim. DWGs (B01),Approved Baseline.EN.2.A.P02.B01.SUB.F,Approved Baseline,10,10,27-Oct-25,6-Nov-25,27-Oct-25,6-Nov-25,22,22,0,0,0,0,"E-SUB-B01-FOOT-1010, E-SUB-B01-FOOT-1010","CON-B01-FOOT-1040, CON-B01-FOOT-1060",0,0%,No,No
0,E-APP-B01-FOOT-1030,Approval for  Waterproofing Layout Plan (B01),Approved Baseline.EN.2.A.P02.B01.SUB.F,Approved Baseline,10,10,30-Oct-25,10-Nov-25,30-Oct-25,10-Nov-25,17,17,0,0,0,0,"E-SUB-B01-FOOT-1030, E-SUB-B01-FOOT-1030","CON-B01-FOOT-1030, CON-B01-FOOT-1110, CON-B01-SOG-1020",0,0%,No,No
0,E-APP-B01-FOOT-1020,Approval for RC Raft & Footings RFT DWGs (B01),Approved Baseline.EN.2.A.P02.B01.SUB.F,Approved Baseline,10,10,3-Nov-25,13-Nov-25,3-Nov-25,13-Nov-25,18,18,0,0,0,0,"E-SUB-B01-FOOT-1020, E-SUB-B01-FOOT-1020","CON-B01-FOOT-1050, CON-B01-FOOT-1070",0,0%,No,No
0,,,,,114,114,1-Dec-25,20-Apr-26,1-Dec-25,20-Apr-26,0,229,0,0,0,0,,,0,,,
0,E-APP-B01-BAS02-1000,Approval for Col. & Walls Conc. Dim.  & RFT DWGs (B01) (Bas 02),Approved Baseline.EN.2.A.P02.B01.SUB.2ndB,Approved Baseline,10,10,1-Dec-25,11-Dec-25,1-Dec-25,11-Dec-25,11,11,0,0,0,0,"E-SUB-B01-BAS02-1000, E-SUB-B01-BAS02-1000","CON-B01-BAS02-1010, CON-B01-BAS02-1020",0,0%,No,No
0,E-APP-B01-BAS02-1010,Approval for Stairs Conc. Dim.  & RFT DWGs (B01) (Bas 02),Approved Baseline.EN.2.A.P02.B01.SUB.2ndB,Approved Baseline,10,10,4-Dec-25,15-Dec-25,4-Dec-25,15-Dec-25,30,33,0,0,0,0,"E-SUB-B01-BAS02-1010, E-SUB-B01-BAS02-1010","CON-B01-BAS02-1050, CON-B01-BAS02-1080",0,0%,No,No
0,E-APP-B01-BAS02-1020,Approval for Ramps Conc. Dim.  & RFT DWGs (B01) (Bas 02),Approved Baseline.EN.2.A.P02.B01.SUB.2ndB,Approved Baseline,10,10,8-Dec-25,18-Dec-25,8-Dec-25,18-Dec-25,27,28,0,0,0,0,"E-SUB-B01-BAS02-1020, E-SUB-B01-BAS02-1020","CON-B01-BAS02-1060, CON-B01-BAS02-1090",0,0%,No,No
0,E-APP-B01-BAS02-1030,Approval for Beams Conc. Dim.  & RFT DWGs (B01) (Bas 02),Approved Baseline.EN.2.A.P02.B01.SUB.2ndB,Approved Baseline,10,10,11-Dec-25,22-Dec-25,11-Dec-25,22-Dec-25,22,22,0,0,0,0,"E-SUB-B01-BAS02-1030, E-SUB-B01-BAS02-1030","CON-B01-BAS02-1040, CON-B01-BAS02-1070",0,0%,No,No
0,E-APP-B01-BAS02-1040,Approval for Slabs Conc. Dim.  & RFT DWGs (B01) (Bas 02),Approved Baseline.EN.2.A.P02.B01.SUB.2ndB,Approved Baseline,10,10,15-Dec-25,25-Dec-25,15-Dec-25,25-Dec-25,19,19,0,0,0,0,"E-SUB-B01-BAS02-1040, E-SUB-B01-BAS02-1040","CON-B01-BAS02-1040, CON-B01-BAS02-1070",0,0%,No,No
0,,,,,13,13,5-Apr-26,20-Apr-26,5-Apr-26,20-Apr-26,0,229,0,0,0,0,,,0,,,
0,E-APP-B01-SOG-1000,Approval for S.O.G Conc. Dim.DWGs (B01) (Sog),Approved Baseline.EN.2.A.P02.B01.SUB.2ndB.1,Approved Baseline,10,10,5-Apr-26,16-Apr-26,5-Apr-26,16-Apr-26,17,232,0,0,0,0,"E-SUB-B01-SOG-1000, E-SUB-B01-SOG-1000",CON-B01-SOG-1040,0,0%,No,No
0,E-APP-B01-SOG-1010,Approval for S.O.G RFT DWGs (B01) (Sog),Approved Baseline.EN.2.A.P02.B01.SUB.2ndB.1,Approved Baseline,10,10,8-Apr-26,20-Apr-26,8-Apr-26,20-Apr-26,14,229,0,0,0,0,"E-SUB-B01-SOG-1010, E-SUB-B01-SOG-1010",CON-B01-SOG-1040,0,0%,No,No
0,,,,,22,22,8-Dec-25,1-Jan-26,8-Dec-25,1-Jan-26,0,60,0,0,0,0,,,0,,,
0,E-APP-B01-BAS01-1000,Approval for Col. & Walls Conc. Dim.  & RFT DWGs (B01) (Bas 01),Approved Baseline.EN.2.A.P02.B01.SUB.1stB,Approved Baseline,10,10,8-Dec-25,18-Dec-25,8-Dec-25,18-Dec-25,42,42,0,0,0,0,"E-SUB-B01-BAS01-1000, E-SUB-B01-BAS01-1000","CON-B01-BAS01-1010, CON-B01-BAS01-1020",0,0%,No,No
0,E-APP-B01-BAS01-1010,Approval for Stairs Conc. Dim.  & RFT DWGs (B01) (Bas 01),Approved Baseline.EN.2.A.P02.B01.SUB.1stB,Approved Baseline,10,10,11-Dec-25,22-Dec-25,11-Dec-25,22-Dec-25,58,68,0,0,0,0,"E-SUB-B01-BAS01-1010, E-SUB-B01-BAS01-1010","CON-B01-BAS01-1050, CON-B01-BAS01-1080",0,0%,No,No
0,E-APP-B01-BAS01-1020,Approval for Ramps Conc. Dim.  & RFT DWGs (B01) (Bas 01),Approved Baseline.EN.2.A.P02.B01.SUB.1stB,Approved Baseline,10,10,15-Dec-25,25-Dec-25,15-Dec-25,25-Dec-25,56,66,0,0,0,0,"E-SUB-B01-BAS01-1020, E-SUB-B01-BAS01-1020","CON-B01-BAS01-1090, CON-B01-BAS01-1070",0,0%,No,No
0,E-APP-B01-BAS01-1030,Approval for Beams Conc. Dim.  & RFT DWGs (B01) (Bas 01),Approved Baseline.EN.2.A.P02.B01.SUB.1stB,Approved Baseline,10,10,18-Dec-25,29-Dec-25,18-Dec-25,29-Dec-25,50,50,0,0,0,0,"E-SUB-B01-BAS01-1030, E-SUB-B01-BAS01-1030","CON-B01-BAS01-1040, CON-B01-BAS01-1060",0,0%,No,No
0,E-APP-B01-BAS01-1040,Approval for Slabs Conc. Dim.  & RFT DWGs (B01) (Bas 01),Approved Baseline.EN.2.A.P02.B01.SUB.1stB,Approved Baseline,10,10,22-Dec-25,1-Jan-26,22-Dec-25,1-Jan-26,47,47,0,0,0,0,"E-SUB-B01-BAS01-1040, E-SUB-B01-BAS01-1040","CON-B01-BAS01-1040, CON-B01-BAS01-1060",0,0%,No,No
0,,,,,112,112,11-Dec-25,28-Apr-26,11-Dec-25,28-Apr-26,0,251,0,0,0,0,,,0,,,
0,,,,,19,19,11-Dec-25,1-Jan-26,11-Dec-25,1-Jan-26,0,79,0,0,0,0,,,0,,,
0,E-APP-B01-GR-1000,Approval for Col. & Walls Conc. Dim.  & RFT DWGs (B01)  (GF),Approved Baseline.EN.2.A.P02.B01.SUP.GF,Approved Baseline,10,10,11-Dec-25,22-Dec-25,11-Dec-25,22-Dec-25,70,70,0,0,0,0,"E-SUB-B01-GR-1000, E-SUB-B01-GR-1000","CON-B01-GR-1010, CON-B01-GR-1020",0,0%,No,No
0,E-APP-B01-GR-1010,Approval for Stairs Conc. Dim.  & RFT DWGs (B01)  (GF),Approved Baseline.EN.2.A.P02.B01.SUP.GF,Approved Baseline,10,10,15-Dec-25,25-Dec-25,15-Dec-25,25-Dec-25,83,83,0,0,0,0,"E-SUB-B01-GR-1010, E-SUB-B01-GR-1010","CON-B01-GR-1050, CON-B01-GR-1070",0,0%,No,No
0,E-APP-B01-GR-1020,Approval for Beams Conc. Dim.  & RFT DWGs (B01)  (GF),Approved Baseline.EN.2.A.P02.B01.SUP.GF,Approved Baseline,10,10,18-Dec-25,29-Dec-25,18-Dec-25,29-Dec-25,82,82,0,0,0,0,"E-SUB-B01-GR-1020, E-SUB-B01-GR-1020","CON-B01-GR-1040, CON-B01-GR-1060",0,0%,No,No
0,E-APP-B01-GR-1030,Approval for Slabs Conc. Dim.  & RFT DWGs (B01)  (GF),Approved Baseline.EN.2.A.P02.B01.SUP.GF,Approved Baseline,10,10,22-Dec-25,1-Jan-26,22-Dec-25,1-Jan-26,79,79,0,0,0,0,"E-SUB-B01-GR-1030, E-SUB-B01-GR-1030","CON-B01-GR-1040, CON-B01-GR-1060",0,0%,No,No
0,,,,,18,18,31-Dec-25,21-Jan-26,31-Dec-25,21-Jan-26,0,92,0,0,0,0,,,0,,,
0,E-APP-B01-1ST-1000,Approval for Col. & Walls Conc. Dim.  & RFT DWGs (B01) (1st),Approved Baseline.EN.2.A.P02.B01.SUP.1stF,Approved Baseline,10,10,31-Dec-25,12-Jan-26,31-Dec-25,12-Jan-26,88,88,0,0,0,0,"E-SUB-B01-1ST-1000, E-SUB-B01-1ST-1000","CON-B01-1ST-1010, CON-B01-1ST-1020",0,0%,No,No
0,E-APP-B01-1ST-1010,Approval for Stairs Conc. Dim.  & RFT DWGs (B01) (1st),Approved Baseline.EN.2.A.P02.B01.SUP.1stF,Approved Baseline,10,10,4-Jan-26,15-Jan-26,4-Jan-26,15-Jan-26,97,97,0,0,0,0,"E-SUB-B01-1ST-1010, E-SUB-B01-1ST-1010","CON-B01-1ST-1040, CON-B01-1ST-1050, CON-B01-1ST-1040",0,0%,No,No
0,E-APP-B01-1ST-1020,Approval for Beams Conc. Dim.  & RFT DWGs (B01) (1st),Approved Baseline.EN.2.A.P02.B01.SUP.1stF,Approved Baseline,10,10,8-Jan-26,19-Jan-26,8-Jan-26,19-Jan-26,94,94,0,0,0,0,"E-SUB-B01-1ST-1020, E-SUB-B01-1ST-1020","CON-B01-1ST-1040, CON-B01-1ST-1050",0,0%,No,No
0,E-APP-B01-1ST-1030,Approval for Slabs Conc. Dim.  & RFT DWGs (B01) (1st),Approved Baseline.EN.2.A.P02.B01.SUP.1stF,Approved Baseline,10,10,11-Jan-26,21-Jan-26,11-Jan-26,21-Jan-26,92,92,0,0,0,0,"E-SUB-B01-1ST-1030, E-SUB-B01-1ST-1030","CON-B01-1ST-1040, CON-B01-1ST-1050",0,0%,No,No
0,,,,,19,19,11-Jan-26,2-Feb-26,11-Jan-26,2-Feb-26,0,117,0,0,0,0,,,0,,,
0,E-APP-B01-2ND-1000,Approval for Col. & Walls Conc. Dim.  & RFT DWGs (B01) (2nd),Approved Baseline.EN.2.A.P02.B01.SUP.2ndF,Approved Baseline,10,10,11-Jan-26,21-Jan-26,11-Jan-26,21-Jan-26,114,114,0,0,0,0,"E-SUB-B01-2ND-1000, E-SUB-B01-2ND-1000","CON-B01-2ND-1010, CON-B01-2ND-1020",0,0%,No,No
0,E-APP-B01-2ND-1010,Approval for Stairs Conc. Dim.  & RFT DWGs (B01) (2nd),Approved Baseline.EN.2.A.P02.B01.SUP.2ndF,Approved Baseline,10,10,14-Jan-26,26-Jan-26,14-Jan-26,26-Jan-26,123,123,0,0,0,0,"E-SUB-B01-2ND-1010, E-SUB-B01-2ND-1010","CON-B01-2ND-1040, CON-B01-2ND-1050",0,0%,No,No
0,E-APP-B01-2ND-1020,Approval for Beams Conc. Dim.  & RFT DWGs (B01) (2nd),Approved Baseline.EN.2.A.P02.B01.SUP.2ndF,Approved Baseline,10,10,18-Jan-26,29-Jan-26,18-Jan-26,29-Jan-26,120,120,0,0,0,0,"E-SUB-B01-2ND-1020, E-SUB-B01-2ND-1020","CON-B01-2ND-1040, CON-B01-2ND-1050",0,0%,No,No
0,E-APP-B01-2ND-1030,Approval for Slabs Conc. Dim.  & RFT DWGs (B01) (2nd),Approved Baseline.EN.2.A.P02.B01.SUP.2ndF,Approved Baseline,10,10,21-Jan-26,2-Feb-26,21-Jan-26,2-Feb-26,117,117,0,0,0,0,"E-SUB-B01-2ND-1030, E-SUB-B01-2ND-1030","CON-B01-2ND-1040, CON-B01-2ND-1050",0,0%,No,No
0,,,,,19,19,21-Jan-26,12-Feb-26,21-Jan-26,12-Feb-26,0,127,0,0,0,0,,,0,,,
0,E-APP-B01-3ED-1000,Approval for Col. & Walls Conc. Dim.  & RFT DWGs (B01) (3rd),Approved Baseline.EN.2.A.P02.B01.SUP.3rdF,Approved Baseline,10,10,21-Jan-26,2-Feb-26,21-Jan-26,2-Feb-26,136,136,0,0,0,0,"E-SUB-B01-3RD-1000, E-SUB-B01-3RD-1000","CON-B01-3RD-1010, CON-B01-3RD-1020",0,0%,No,No
0,E-APP-B01-3ED-1010,Approval for Stairs Conc. Dim.  & RFT DWGs (B01) (3rd),Approved Baseline.EN.2.A.P02.B01.SUP.3rdF,Approved Baseline,10,10,26-Jan-26,5-Feb-26,26-Jan-26,5-Feb-26,133,133,0,0,0,0,"E-SUB-B01-3RD-1010, E-SUB-B01-3RD-1010","CON-B01-3RD-1040, CON-B01-3RD-1010",0,0%,No,No
0,E-APP-B01-3ED-1020,Approval for Beams Conc. Dim.  & RFT DWGs (B01) (3rd),Approved Baseline.EN.2.A.P02.B01.SUP.3rdF,Approved Baseline,10,10,29-Jan-26,9-Feb-26,29-Jan-26,9-Feb-26,130,130,0,0,0,0,"E-SUB-B01-3RD-1020, E-SUB-B01-3RD-1020","CON-B01-3RD-1040, CON-B01-3RD-1010",0,0%,No,No
0,E-APP-B01-3ED-1030,Approval for Slabs Conc. Dim.  & RFT DWGs (B01) (3rd),Approved Baseline.EN.2.A.P02.B01.SUP.3rdF,Approved Baseline,10,10,2-Feb-26,12-Feb-26,2-Feb-26,12-Feb-26,127,127,0,0,0,0,"E-SUB-B01-3RD-1030, E-SUB-B01-3RD-1030","CON-B01-3RD-1040, CON-B01-3RD-1010",0,0%,No,No
0,,,,,19,19,5-Feb-26,26-Feb-26,5-Feb-26,26-Feb-26,0,148,0,0,0,0,,,0,,,
0,E-APP-B01-4TH-1000,Approval for Col. & Walls Conc. Dim.  & RFT DWGs (B01) (4th),Approved Baseline.EN.2.A.P02.B01.SUP.4thF,Approved Baseline,10,10,5-Feb-26,16-Feb-26,5-Feb-26,16-Feb-26,157,157,0,0,0,0,"E-SUB-B01-4TH-1000, E-SUB-B01-4TH-1000","CON-B01-4TH-1010, CON-B01-4TH-1020",0,0%,No,No
0,E-APP-B01-4TH-1010,Approval for Stairs Conc. Dim.  & RFT DWGs (B01) (4th),Approved Baseline.EN.2.A.P02.B01.SUP.4thF,Approved Baseline,10,10,9-Feb-26,19-Feb-26,9-Feb-26,19-Feb-26,154,154,0,0,0,0,"E-SUB-B01-4TH-1010, E-SUB-B01-4TH-1010","CON-B01-4TH-1040, CON-B01-4TH-1010",0,0%,No,No
0,E-APP-B01-4TH-1020,Approval for Beams Conc. Dim.  & RFT DWGs (B01) (4th),Approved Baseline.EN.2.A.P02.B01.SUP.4thF,Approved Baseline,10,10,12-Feb-26,23-Feb-26,12-Feb-26,23-Feb-26,151,151,0,0,0,0,"E-SUB-B01-4TH-1020, E-SUB-B01-4TH-1020","CON-B01-4TH-1040, CON-B01-4TH-1010",0,0%,No,No
0,E-APP-B01-4TH-1030,Approval for Slabs Conc. Dim.  & RFT DWGs (B01) (4th),Approved Baseline.EN.2.A.P02.B01.SUP.4thF,Approved Baseline,10,10,16-Feb-26,26-Feb-26,16-Feb-26,26-Feb-26,148,148,0,0,0,0,"E-SUB-B01-4TH-1030, E-SUB-B01-4TH-1030","CON-B01-4TH-1040, CON-B01-4TH-1010",0,0%,No,No
0,,,,,19,19,15-Feb-26,8-Mar-26,15-Feb-26,8-Mar-26,0,186,0,0,0,0,,,0,,,
0,E-APP-B01-5TH-1000,Approval for Col. & Walls Conc. Dim.  & RFT DWGs (B01) (5th),Approved Baseline.EN.2.A.P02.B01.SUP.5thF,Approved Baseline,10,10,15-Feb-26,25-Feb-26,15-Feb-26,25-Feb-26,184,184,0,0,0,0,"E-SUB-B01-5TH-1000, E-SUB-B01-5TH-1000","CON-B01-5TH-1010, CON-B01-5TH-1020",0,0%,No,No
0,E-APP-B01-5TH-1010,Approval for Stairs Conc. Dim.  & RFT DWGs (B01) (5th),Approved Baseline.EN.2.A.P02.B01.SUP.5thF,Approved Baseline,10,10,18-Feb-26,1-Mar-26,18-Feb-26,1-Mar-26,192,192,0,0,0,0,"E-SUB-B01-5TH-1010, E-SUB-B01-5TH-1010","CON-B01-5TH-1040, CON-B01-5TH-1050",0,0%,No,No
0,E-APP-B01-5TH-1020,Approval for Beams Conc. Dim.  & RFT DWGs (B01) (5th),Approved Baseline.EN.2.A.P02.B01.SUP.5thF,Approved Baseline,10,10,22-Feb-26,4-Mar-26,22-Feb-26,4-Mar-26,189,189,0,0,0,0,"E-SUB-B01-5TH-1020, E-SUB-B01-5TH-1020","CON-B01-5TH-1040, CON-B01-5TH-1050",0,0%,No,No
0,E-APP-B01-5TH-1030,Approval for Slabs Conc. Dim.  & RFT DWGs (B01) (5th),Approved Baseline.EN.2.A.P02.B01.SUP.5thF,Approved Baseline,10,10,25-Feb-26,8-Mar-26,25-Feb-26,8-Mar-26,186,186,0,0,0,0,"E-SUB-B01-5TH-1030, E-SUB-B01-5TH-1030","CON-B01-5TH-1040, CON-B01-5TH-1050",0,0%,No,No
0,,,,,19,19,24-Feb-26,22-Mar-26,24-Feb-26,22-Mar-26,0,208,0,0,0,0,,,0,,,
0,E-APP-B01-6TH-1000,Approval for Col. & Walls Conc. Dim.  & RFT DWGs (B01) (6th),Approved Baseline.EN.2.A.P02.B01.SUP.6thF,Approved Baseline,10,10,24-Feb-26,7-Mar-26,24-Feb-26,7-Mar-26,205,205,0,0,0,0,"E-SUB-B01-6TH-1000, E-SUB-B01-6TH-1000","CON-B01-6TH-1010, CON-B01-6TH-1020",0,0%,No,No
0,E-APP-B01-6TH-1010,Approval for Stairs Conc. Dim.  & RFT DWGs (B01) (6th),Approved Baseline.EN.2.A.P02.B01.SUP.6thF,Approved Baseline,10,10,28-Feb-26,10-Mar-26,28-Feb-26,10-Mar-26,214,214,0,0,0,0,"E-SUB-B01-6TH-1010, E-SUB-B01-6TH-1010","CON-B01-6TH-1040, CON-B01-6TH-1050",0,0%,No,No
0,E-APP-B01-6TH-1020,Approval for Beams Conc. Dim.  & RFT DWGs (B01) (6th),Approved Baseline.EN.2.A.P02.B01.SUP.6thF,Approved Baseline,10,10,3-Mar-26,14-Mar-26,3-Mar-26,14-Mar-26,211,211,0,0,0,0,"E-SUB-B01-6TH-1020, E-SUB-B01-6TH-1020","CON-B01-6TH-1040, CON-B01-6TH-1050",0,0%,No,No
0,E-APP-B01-6TH-1030,Approval for Slabs Conc. Dim.  & RFT DWGs (B01) (6th),Approved Baseline.EN.2.A.P02.B01.SUP.6thF,Approved Baseline,10,10,7-Mar-26,22-Mar-26,7-Mar-26,22-Mar-26,208,208,0,0,0,0,"E-SUB-B01-6TH-1030, E-SUB-B01-6TH-1030","CON-B01-6TH-1040, CON-B01-6TH-1050",0,0%,No,No
0,,,,,19,19,7-Mar-26,1-Apr-26,7-Mar-26,1-Apr-26,0,227,0,0,0,0,,,0,,,
0,E-APP-B01-7TH-1000,Approval for Col. & Walls Conc. Dim.  & RFT DWGs (B01) (7th),Approved Baseline.EN.2.A.P02.B01.SUP.7thF,Approved Baseline,10,10,7-Mar-26,22-Mar-26,7-Mar-26,22-Mar-26,225,225,0,0,0,0,"E-SUB-B01-7TH-1000, E-SUB-B01-7TH-1000","CON-B01-7TH-1010, CON-B01-7TH-1020",0,0%,No,No
0,E-APP-B01-7TH-1010,Approval for Stairs Conc. Dim.  & RFT DWGs (B01) (7th),Approved Baseline.EN.2.A.P02.B01.SUP.7thF,Approved Baseline,10,10,10-Mar-26,25-Mar-26,10-Mar-26,25-Mar-26,233,233,0,0,0,0,"E-SUB-B01-7TH-1010, E-SUB-B01-7TH-1010","CON-B01-7TH-1040, CON-B01-7TH-1050",0,0%,No,No
0,E-APP-B01-7TH-1020,Approval for Beams Conc. Dim.  & RFT DWGs (B01) (7th),Approved Baseline.EN.2.A.P02.B01.SUP.7thF,Approved Baseline,10,10,14-Mar-26,29-Mar-26,14-Mar-26,29-Mar-26,230,230,0,0,0,0,"E-SUB-B01-7TH-1020, E-SUB-B01-7TH-1020","CON-B01-7TH-1040, CON-B01-7TH-1050",0,0%,No,No
0,E-APP-B01-7TH-1030,Approval for Slabs Conc. Dim.  & RFT DWGs (B01) (7th),Approved Baseline.EN.2.A.P02.B01.SUP.7thF,Approved Baseline,10,10,22-Mar-26,1-Apr-26,22-Mar-26,1-Apr-26,227,227,0,0,0,0,"E-SUB-B01-7TH-1030, E-SUB-B01-7TH-1030","CON-B01-7TH-1040, CON-B01-7TH-1050",0,0%,No,No
0,,,,,19,19,25-Mar-26,16-Apr-26,25-Mar-26,16-Apr-26,0,241,0,0,0,0,,,0,,,
0,E-APP-B01-8TH-1000,Approval for Col. & Walls Conc. Dim.  & RFT DWGs (B01) (8th),Approved Baseline.EN.2.A.P02.B01.SUP.8thF,Approved Baseline,10,10,25-Mar-26,5-Apr-26,25-Mar-26,5-Apr-26,240,240,0,0,0,0,"E-SUB-B01-8TH-1000, E-SUB-B01-8TH-1000","CON-B01-8TH-1010, CON-B01-8TH-1020",0,0%,No,No
0,E-APP-B01-8TH-1010,Approval for Stairs Conc. Dim.  & RFT DWGs (B01) (8th),Approved Baseline.EN.2.A.P02.B01.SUP.8thF,Approved Baseline,10,10,29-Mar-26,8-Apr-26,29-Mar-26,8-Apr-26,247,247,0,0,0,0,"E-SUB-B01-8TH-1010, E-SUB-B01-8TH-1010","CON-B01-8TH-1040, CON-B01-8TH-1050",0,0%,No,No
0,E-APP-B01-8TH-1020,Approval for Beams Conc. Dim.  & RFT DWGs (B01) (8th),Approved Baseline.EN.2.A.P02.B01.SUP.8thF,Approved Baseline,10,10,1-Apr-26,12-Apr-26,1-Apr-26,12-Apr-26,244,244,0,0,0,0,"E-SUB-B01-8TH-1020, E-SUB-B01-8TH-1020","CON-B01-8TH-1040, CON-B01-8TH-1050",0,0%,No,No
0,E-APP-B01-8TH-1030,Approval for Slabs Conc. Dim.  & RFT DWGs (B01) (8th),Approved Baseline.EN.2.A.P02.B01.SUP.8thF,Approved Baseline,10,10,5-Apr-26,16-Apr-26,5-Apr-26,16-Apr-26,241,241,0,0,0,0,"E-SUB-B01-8TH-1030, E-SUB-B01-8TH-1030","CON-B01-8TH-1040, CON-B01-8TH-1050",0,0%,No,No
0,,,,,16,16,9-Apr-26,28-Apr-26,9-Apr-26,28-Apr-26,0,251,0,0,0,0,,,0,,,
0,E-APP-B01-RF-1000,Approval for Col. & Walls Conc. Dim.  & RFT DWGs (B01) (RF),Approved Baseline.EN.2.A.P02.B01.SUP.RF,Approved Baseline,10,10,9-Apr-26,21-Apr-26,9-Apr-26,21-Apr-26,252,253,0,0,0,0,"E-SUB-B01-RF-1000, E-SUB-B01-RF-1000","CON-B01-9TH-1010, CON-B01-9TH-1020",0,0%,No,No
0,E-APP-B01-RF-1010,Approval for Slabs Conc. Dim.  & RFT DWGs (B01) (RF),Approved Baseline.EN.2.A.P02.B01.SUP.RF,Approved Baseline,10,10,14-Apr-26,25-Apr-26,14-Apr-26,25-Apr-26,253,254,0,0,0,0,"E-SUB-B01-RF-1010, E-SUB-B01-RF-1010","CON-B01-9TH-1040, CON-B01-9TH-1050",0,0%,No,No
0,E-APP-B01-RF-1020,Approval for Beams Conc. Dim.  & RFT DWGs (B01) (RF),Approved Baseline.EN.2.A.P02.B01.SUP.RF,Approved Baseline,10,10,18-Apr-26,28-Apr-26,18-Apr-26,28-Apr-26,250,251,0,0,0,0,"E-SUB-B01-RF-1020, E-SUB-B01-RF-1020","CON-B01-9TH-1040, CON-B01-9TH-1050",0,0%,No,No
0,,,,,174,174,25-Sep-25,25-Apr-26,25-Sep-25,25-Apr-26,0,249,0,0,0,0,,,0,,,
0,,,,,174,174,25-Sep-25,25-Apr-26,25-Sep-25,25-Apr-26,0,240,0,0,0,0,,,0,,,
0,,,,,10,10,25-Sep-25,7-Oct-25,25-Sep-25,7-Oct-25,0,24,0,0,0,0,,,0,,,
0,E-APP-B02-REP-1000,Approval for General Replacement Plan & Typical Sections for Replacement / Backfilling DWGs (B02),Approved Baseline.EN.2.A.P02.B02.SUB.1,Approved Baseline,10,10,25-Sep-25,7-Oct-25,25-Sep-25,7-Oct-25,24,24,0,0,0,0,"E-SUB-B02-REP-1000, E-SUB-B02-REP-1000",CON-EW-B02-1000,0,0%,No,No
0,,,,,16,16,28-Oct-25,15-Nov-25,28-Oct-25,15-Nov-25,0,29,0,0,0,0,,,0,,,
0,E-APP-B02-FOOT-1000,Approval for PC Raft Conc. Dim. DWGs (B02) (footing),Approved Baseline.EN.2.A.P02.B02.SUB.F,Approved Baseline,10,10,28-Oct-25,8-Nov-25,28-Oct-25,8-Nov-25,26,26,0,0,0,0,"E-SUB-B02-FOOT-1000, E-SUB-B02-FOOT-1000",CON-B02-FOOT-1000,0,0%,No,No
0,E-APP-B02-FOOT-1030,Approval for  Waterproofing Layout Plan (B02),Approved Baseline.EN.2.A.P02.B02.SUB.F,Approved Baseline,10,10,29-Oct-25,9-Nov-25,29-Oct-25,9-Nov-25,29,29,0,0,0,0,"E-SUB-B02-FOOT-1030, E-SUB-B02-FOOT-1030","CON-B02-FOOT-1030, CON-B02-FOOT-1110, CON-B02-SOG-1020",0,0%,No,No
0,E-APP-B02-FOOT-1010,Approval for RC Raft & Footings Conc. Dim. DWGs (B02) (footing),Approved Baseline.EN.2.A.P02.B02.SUB.F,Approved Baseline,10,10,1-Nov-25,11-Nov-25,1-Nov-25,11-Nov-25,30,30,0,0,0,0,"E-SUB-B02-FOOT-1010, E-SUB-B02-FOOT-1010","CON-B02-FOOT-1040, CON-B02-FOOT-1060",0,0%,No,No
0,E-APP-B02-FOOT-1020,Approval for RC Raft & Footings RFT DWGs (B02) (footing),Approved Baseline.EN.2.A.P02.B02.SUB.F,Approved Baseline,10,10,4-Nov-25,15-Nov-25,4-Nov-25,15-Nov-25,29,29,0,0,0,0,"E-SUB-B02-FOOT-1020, E-SUB-B02-FOOT-1020","CON-B02-FOOT-1050, CON-B02-FOOT-1070",0,0%,No,No
0,,,,,118,118,1-Dec-25,25-Apr-26,1-Dec-25,25-Apr-26,0,240,0,0,0,0,,,0,,,
0,E-APP-B02-BAS02-1000,Approval for Col. & Walls Conc. Dim.  & RFT DWGs (B02) (Bas 02),Approved Baseline.EN.2.A.P02.B02.SUB.2ndB,Approved Baseline,10,10,1-Dec-25,11-Dec-25,1-Dec-25,11-Dec-25,20,20,0,0,0,0,"E-SUB-B02-BAS02-1000, E-SUB-B02-BAS02-1000","CON-B02-BAS02-1010, CON-B02-BAS02-1020",0,0%,No,No
0,E-APP-B02-BAS02-1010,Approval for Stairs Conc. Dim.  & RFT DWGs (B02) (Bas 02),Approved Baseline.EN.2.A.P02.B02.SUB.2ndB,Approved Baseline,10,10,4-Dec-25,15-Dec-25,4-Dec-25,15-Dec-25,36,36,0,0,0,0,"E-SUB-B02-BAS02-1010, E-SUB-B02-BAS02-1010","CON-B02-BAS02-1050, CON-B02-BAS02-1070",0,0%,No,No
0,E-APP-B02-BAS02-1020,Approval for Beams Conc. Dim.  & RFT DWGs (B02) (Bas 02),Approved Baseline.EN.2.A.P02.B02.SUB.2ndB,Approved Baseline,10,10,8-Dec-25,18-Dec-25,8-Dec-25,18-Dec-25,31,31,0,0,0,0,"E-SUB-B02-BAS02-1020, E-SUB-B02-BAS02-1020","CON-B02-BAS02-1040, CON-B02-BAS02-1060",0,0%,No,No
0,E-APP-B02-BAS02-1030,Approval for Slabs Conc. Dim.  & RFT DWGs (B02) (Bas 02),Approved Baseline.EN.2.A.P02.B02.SUB.2ndB,Approved Baseline,10,10,11-Dec-25,22-Dec-25,11-Dec-25,22-Dec-25,28,28,0,0,0,0,"E-SUB-B02-BAS02-1030, E-SUB-B02-BAS02-1030","CON-B02-BAS02-1040, CON-B02-BAS02-1060",0,0%,No,No
0,,,,,13,13,9-Apr-26,25-Apr-26,9-Apr-26,25-Apr-26,0,240,0,0,0,0,,,0,,,
0,E-APP-B02-SOG-1000,Approval for S.O.G Conc. Dim. DWGs (B02) (Sog),Approved Baseline.EN.2.A.P02.B02.SUB.2ndB.SOG,Approved Baseline,10,10,9-Apr-26,21-Apr-26,9-Apr-26,21-Apr-26,28,243,0,0,0,0,"E-SUB-B02-SOG-1000, E-SUB-B02-SOG-1000",CON-B02-SOG-1040,0,0%,No,No
0,E-APP-B02-SOG-1010,Approval for S.O.G RFT DWGs (B02) (Sog),Approved Baseline.EN.2.A.P02.B02.SUB.2ndB.SOG,Approved Baseline,10,10,14-Apr-26,25-Apr-26,14-Apr-26,25-Apr-26,25,240,0,0,0,0,"E-SUB-B02-SOG-1010, E-SUB-B02-SOG-1010","CON-B02-SOG-1040, CON-B02-SOG-1040",0,0%,No,No
0,,,,,19,19,11-Dec-25,1-Jan-26,11-Dec-25,1-Jan-26,0,56,0,0,0,0,,,0,,,
0,E-APP-B02-BAS01-1000,Approval for Col. & Walls Conc. Dim.  & RFT DWGs (B02) (Bas 01),Approved Baseline.EN.2.A.P02.B02.SUB.1stB,Approved Baseline,10,10,11-Dec-25,22-Dec-25,11-Dec-25,22-Dec-25,44,44,0,0,0,0,"E-SUB-B02-BAS01-1000, E-SUB-B02-BAS01-1000","CON-B02-BAS01-1010, CON-B02-BAS01-1020",0,0%,No,No
0,E-APP-B02-BAS01-1010,Approval for Stairs Conc. Dim.  & RFT DWGs (B02) (Bas 01),Approved Baseline.EN.2.A.P02.B02.SUB.1stB,Approved Baseline,10,10,15-Dec-25,25-Dec-25,15-Dec-25,25-Dec-25,59,62,0,0,0,0,"E-SUB-B02-BAS01-1010, E-SUB-B02-BAS01-1010","CON-B02-BAS01-1050, CON-B02-BAS01-1070",0,0%,No,No
0,E-APP-B02-BAS01-1020,Approval for Beams Conc. Dim.  & RFT DWGs (B02) (Bas 01),Approved Baseline.EN.2.A.P02.B02.SUB.1stB,Approved Baseline,10,10,18-Dec-25,29-Dec-25,18-Dec-25,29-Dec-25,54,54,0,0,0,0,"E-SUB-B02-BAS01-1020, E-SUB-B02-BAS01-1020","CON-B02-BAS01-1040, CON-B02-BAS01-1060",0,0%,No,No
0,E-APP-B02-BAS01-1030,Approval for Slabs Conc. Dim.  & RFT DWGs (B02) (Bas 01),Approved Baseline.EN.2.A.P02.B02.SUB.1stB,Approved Baseline,10,10,22-Dec-25,1-Jan-26,22-Dec-25,1-Jan-26,51,51,0,0,0,0,"E-SUB-B02-BAS01-1030, E-SUB-B02-BAS01-1030","CON-B02-BAS01-1040, CON-B02-BAS01-1060",0,0%,No,No
0,,,,,87,87,16-Dec-25,2-Apr-26,16-Dec-25,2-Apr-26,0,267,0,0,0,0,,,0,,,
0,,,,,19,19,16-Dec-25,6-Jan-26,16-Dec-25,6-Jan-26,0,94,0,0,0,0,,,0,,,
0,E-APP-B02-GR-1000,Approval for Col. & Walls Conc. Dim.  & RFT DWGs (B02) (GF),Approved Baseline.EN.2.A.P02.B02.SUP.GF,Approved Baseline,10,10,16-Dec-25,27-Dec-25,16-Dec-25,27-Dec-25,73,77,0,0,0,0,"E-SUB-B02-GR-1000, E-SUB-B02-GR-1000","CON-B02-GR-1010, CON-B02-GR-1020",0,0%,No,No
0,E-APP-B02-GR-1010,Approval for Stairs Conc. Dim.  & RFT DWGs (B02) (GF),Approved Baseline.EN.2.A.P02.B02.SUP.GF,Approved Baseline,10,10,20-Dec-25,30-Dec-25,20-Dec-25,30-Dec-25,87,100,0,0,0,0,"E-SUB-B02-GR-1010, E-SUB-B02-GR-1010","CON-B02-GR-1070, CON-B02-GR-1050",0,0%,No,No
0,E-APP-B02-GR-1020,Approval for Beams Conc. Dim.  & RFT DWGs (B02) (GF),Approved Baseline.EN.2.A.P02.B02.SUP.GF,Approved Baseline,10,10,23-Dec-25,3-Jan-26,23-Dec-25,3-Jan-26,87,87,0,0,0,0,"E-SUB-B02-GR-1020, E-SUB-B02-GR-1020","CON-B02-GR-1060, CON-B02-GR-1040",0,0%,No,No
0,E-APP-B02-GR-1030,Approval for Slabs Conc. Dim.  & RFT DWGs (B02) (GF),Approved Baseline.EN.2.A.P02.B02.SUP.GF,Approved Baseline,10,10,27-Dec-25,6-Jan-26,27-Dec-25,6-Jan-26,84,84,0,0,0,0,"E-SUB-B02-GR-1030, E-SUB-B02-GR-1030","CON-B02-GR-1040, CON-B02-GR-1060",0,0%,No,No
0,,,,,19,19,5-Jan-26,28-Jan-26,5-Jan-26,28-Jan-26,0,124,0,0,0,0,,,0,,,
0,E-APP-B02-1ST-1000,Approval for Col. & Walls Conc. Dim.  & RFT DWGs (B02) (1st),Approved Baseline.EN.2.A.P02.B02.SUP.1stF,Approved Baseline,10,10,5-Jan-26,17-Jan-26,5-Jan-26,17-Jan-26,108,118,0,0,0,0,"E-SUB-B02-1ST-1000, E-SUB-B02-1ST-1000","CON-B02-1ST-1010, CON-B02-1ST-1020",0,0%,No,No
0,E-APP-B02-1ST-1010,Approval for Stairs Conc. Dim.  & RFT DWGs (B02) (1st),Approved Baseline.EN.2.A.P02.B02.SUP.1stF,Approved Baseline,10,10,10-Jan-26,20-Jan-26,10-Jan-26,20-Jan-26,120,130,0,0,0,0,"E-SUB-B02-1ST-1010, E-SUB-B02-1ST-1010","CON-B02-1ST-1040, CON-B02-1ST-1050",0,0%,No,No
0,E-APP-B02-1ST-1020,Approval for Beams Conc. Dim.  & RFT DWGs (B02) (1st),Approved Baseline.EN.2.A.P02.B02.SUP.1stF,Approved Baseline,10,10,13-Jan-26,24-Jan-26,13-Jan-26,24-Jan-26,117,127,0,0,0,0,"E-SUB-B02-1ST-1020, E-SUB-B02-1ST-1020","CON-B02-1ST-1040, CON-B02-1ST-1050",0,0%,No,No
0,E-APP-B02-1ST-1030,Approval for Slabs Conc. Dim.  & RFT DWGs (B02) (1st),Approved Baseline.EN.2.A.P02.B02.SUP.1stF,Approved Baseline,10,10,17-Jan-26,28-Jan-26,17-Jan-26,28-Jan-26,114,124,0,0,0,0,"E-SUB-B02-1ST-1030, E-SUB-B02-1ST-1030","CON-B02-1ST-1040, CON-B02-1ST-1050",0,0%,No,No
0,,,,,19,19,17-Jan-26,8-Feb-26,17-Jan-26,8-Feb-26,0,164,0,0,0,0,,,0,,,
0,E-APP-B02-2ND-1000,Approval for Col. & Walls Conc. Dim.  & RFT DWGs (B02) (2nd),Approved Baseline.EN.2.A.P02.B02.SUP.2ndF,Approved Baseline,10,10,17-Jan-26,28-Jan-26,17-Jan-26,28-Jan-26,145,156,0,0,0,0,"E-SUB-B02-2ND-1000, E-SUB-B02-2ND-1000","CON-B02-2ND-1010, CON-B02-2ND-1020",0,0%,No,No
0,E-APP-B02-2ND-1010,Approval for Stairs Conc. Dim.  & RFT DWGs (B02) (2nd),Approved Baseline.EN.2.A.P02.B02.SUP.2ndF,Approved Baseline,10,10,20-Jan-26,1-Feb-26,20-Jan-26,1-Feb-26,159,170,0,0,0,0,"E-SUB-B02-2ND-1010, E-SUB-B02-2ND-1010","CON-B02-2ND-1040, CON-B02-2ND-1050",0,0%,No,No
0,E-APP-B02-2ND-1020,Approval for Beams Conc. Dim.  & RFT DWGs (B02) (2nd),Approved Baseline.EN.2.A.P02.B02.SUP.2ndF,Approved Baseline,10,10,24-Jan-26,4-Feb-26,24-Jan-26,4-Feb-26,156,167,0,0,0,0,"E-SUB-B02-2ND-1020, E-SUB-B02-2ND-1020","CON-B02-2ND-1040, CON-B02-2ND-1050",0,0%,No,No
0,E-APP-B02-2ND-1030,Approval for Slabs Conc. Dim.  & RFT DWGs (B02) (2nd),Approved Baseline.EN.2.A.P02.B02.SUP.2ndF,Approved Baseline,10,10,28-Jan-26,8-Feb-26,28-Jan-26,8-Feb-26,153,164,0,0,0,0,"E-SUB-B02-2ND-1030, E-SUB-B02-2ND-1030","CON-B02-2ND-1040, CON-B02-2ND-1050",0,0%,No,No
0,,,,,19,19,5-Feb-26,26-Feb-26,5-Feb-26,26-Feb-26,0,199,0,0,0,0,,,0,,,
0,E-APP-B02-3RD-1000,Approval for Col. & Walls Conc. Dim.  & RFT DWGs (B02) (3rd),Approved Baseline.EN.2.A.P02.B02.SUP.3rdF,Approved Baseline,10,10,5-Feb-26,16-Feb-26,5-Feb-26,16-Feb-26,181,191,0,0,0,0,"E-SUB-B02-3RD-1000, E-SUB-B02-3RD-1000","CON-B02-3RD-1010, CON-B02-3RD-1020",0,0%,No,No
0,E-APP-B02-3RD-1010,Approval for Stairs Conc. Dim.  & RFT DWGs (B02) (3rd),Approved Baseline.EN.2.A.P02.B02.SUP.3rdF,Approved Baseline,10,10,9-Feb-26,19-Feb-26,9-Feb-26,19-Feb-26,195,205,0,0,0,0,"E-SUB-B02-3RD-1010, E-SUB-B02-3RD-1010","CON-B02-3RD-1040, CON-B02-3RD-1050",0,0%,No,No
0,E-APP-B02-3RD-1020,Approval for Beams Conc. Dim.  & RFT DWGs (B02) (3rd),Approved Baseline.EN.2.A.P02.B02.SUP.3rdF,Approved Baseline,10,10,12-Feb-26,23-Feb-26,12-Feb-26,23-Feb-26,192,202,0,0,0,0,"E-SUB-B02-3RD-1020, E-SUB-B02-3RD-1020","CON-B02-3RD-1040, CON-B02-3RD-1050",0,0%,No,No
0,E-APP-B02-3RD-1030,Approval for Slabs Conc. Dim.  & RFT DWGs (B02) (3rd),Approved Baseline.EN.2.A.P02.B02.SUP.3rdF,Approved Baseline,10,10,16-Feb-26,26-Feb-26,16-Feb-26,26-Feb-26,189,199,0,0,0,0,"E-SUB-B02-3RD-1030, E-SUB-B02-3RD-1030","CON-B02-3RD-1040, CON-B02-3RD-1050",0,0%,No,No
0,,,,,19,19,19-Feb-26,12-Mar-26,19-Feb-26,12-Mar-26,0,239,0,0,0,0,,,0,,,
0,E-APP-B02-4TH-1000,Approval for Col. & Walls Conc. Dim.  & RFT DWGs (B02) (4th),Approved Baseline.EN.2.A.P02.B02.SUP.4thF,Approved Baseline,10,10,19-Feb-26,2-Mar-26,19-Feb-26,2-Mar-26,221,231,0,0,0,0,"E-SUB-B02-4TH-1000, E-SUB-B02-4TH-1000","CON-B02-4TH-1010, CON-B02-4TH-1020",0,0%,No,No
0,E-APP-B02-4TH-1010,Approval for Stairs Conc. Dim.  & RFT DWGs (B02) (4th),Approved Baseline.EN.2.A.P02.B02.SUP.4thF,Approved Baseline,10,10,23-Feb-26,5-Mar-26,23-Feb-26,5-Mar-26,235,245,0,0,0,0,"E-SUB-B02-4TH-1010, E-SUB-B02-4TH-1010","CON-B02-4TH-1040, CON-B02-4TH-1050",0,0%,No,No
0,E-APP-B02-4TH-1020,Approval for Beams Conc. Dim.  & RFT DWGs (B02) (4th),Approved Baseline.EN.2.A.P02.B02.SUP.4thF,Approved Baseline,10,10,26-Feb-26,9-Mar-26,26-Feb-26,9-Mar-26,232,242,0,0,0,0,"E-SUB-B02-4TH-1020, E-SUB-B02-4TH-1020","CON-B02-4TH-1040, CON-B02-4TH-1050",0,0%,No,No
0,E-APP-B02-4TH-1030,Approval for Slabs Conc. Dim.  & RFT DWGs (B02) (4th),Approved Baseline.EN.2.A.P02.B02.SUP.4thF,Approved Baseline,10,10,2-Mar-26,12-Mar-26,2-Mar-26,12-Mar-26,229,239,0,0,0,0,"E-SUB-B02-4TH-1030, E-SUB-B02-4TH-1030","CON-B02-4TH-1040, CON-B02-4TH-1050",0,0%,No,No
0,,,,,16,16,11-Mar-26,2-Apr-26,11-Mar-26,2-Apr-26,0,267,0,0,0,0,,,0,,,
0,E-APP-B02-RF-1000,Approval for Col. & Walls Conc. Dim.  & RFT DWGs (B02) (RF),Approved Baseline.EN.2.A.P02.B02.SUP.RF,Approved Baseline,10,10,11-Mar-26,26-Mar-26,11-Mar-26,26-Mar-26,254,265,0,0,0,0,"E-SUB-B02-RF-1000, E-SUB-B02-RF-1000","CON-B02-RF-1020, CON-B02-RF-1010",0,0%,No,No
0,E-APP-B02-RF-1010,Approval for Beams Conc. Dim.  & RFT DWGs (B02) (RF),Approved Baseline.EN.2.A.P02.B02.SUP.RF,Approved Baseline,10,10,15-Mar-26,30-Mar-26,15-Mar-26,30-Mar-26,259,270,0,0,0,0,"E-SUB-B02-RF-1010, E-SUB-B02-RF-1010","CON-B02-RF-1040, CON-B02-RF-1050",0,0%,No,No
0,E-APP-B02-RF-1020,Approval for Slabs Conc. Dim.  & RFT DWGs (B02) (RF),Approved Baseline.EN.2.A.P02.B02.SUP.RF,Approved Baseline,10,10,23-Mar-26,2-Apr-26,23-Mar-26,2-Apr-26,256,267,0,0,0,0,"E-SUB-B02-RF-1020, E-SUB-B02-RF-1020","CON-B02-RF-1040, CON-B02-RF-1050",0,0%,No,No
0,,,,,200,200,4-Oct-25,7-Jun-26,4-Oct-25,7-Jun-26,0,221,0,0,0,0,,,0,,,
0,,,,,134,134,7-Oct-25,14-Mar-26,7-Oct-25,14-Mar-26,0,280,0,0,0,0,,,0,,,
0,,,,,127,127,7-Oct-25,5-Mar-26,7-Oct-25,5-Mar-26,0,280,0,0,0,0,,,0,,,
0,,,,,10,10,7-Oct-25,18-Oct-25,7-Oct-25,18-Oct-25,0,30,0,0,0,0,,,0,,,
0,E-APP-B03-REP-1000,Approval for General Replacement Plan & Typical Sections for Replacement / Backfilling DWGs (B03),Approved Baseline.EN.2.A.P01.B03.SUB.4,Approved Baseline,10,10,7-Oct-25,18-Oct-25,7-Oct-25,18-Oct-25,30,30,0,0,0,0,"E-SUB-B03-REP-1000, E-SUB-B03-REP-1000",CON-EW-B03-1000,0,0%,No,No
0,,,,,16,16,1-Nov-25,18-Nov-25,1-Nov-25,18-Nov-25,0,40,0,0,0,0,,,0,,,
0,E-APP-B03-FOOT-1010,Approval for PC Raft Conc. Dim. DWGs (B03) (footing),Approved Baseline.EN.2.A.P01.B03.SUB.1,Approved Baseline,10,10,1-Nov-25,11-Nov-25,1-Nov-25,11-Nov-25,37,37,0,0,0,0,"E-SUB-B03-FOOT-1010, E-SUB-B03-FOOT-1010",CON-B03-FOOT-1000,0,0%,No,No
0,E-APP-B03-FOOT-1000,Approval for  Waterproofing Layout Plan (B03),Approved Baseline.EN.2.A.P01.B03.SUB.1,Approved Baseline,10,10,2-Nov-25,12-Nov-25,2-Nov-25,12-Nov-25,41,41,0,0,0,0,"E-SUB-B03-FOOT-1000, E-SUB-B03-FOOT-1000","CON-B03-FOOT-1030, CON-B03-FOOT-1110, CON-B03-SOG-1020",0,0%,No,No
0,E-APP-B03-FOOT-1020,Approval for RC Raft & Footings Conc. Dim. DWGs  (B03) (footing),Approved Baseline.EN.2.A.P01.B03.SUB.1,Approved Baseline,10,10,4-Nov-25,15-Nov-25,4-Nov-25,15-Nov-25,42,42,0,0,0,0,"E-SUB-B03-FOOT-1020, E-SUB-B03-FOOT-1020","CON-B03-FOOT-1040, CON-B03-FOOT-1060",0,0%,No,No
0,E-APP-B03-FOOT-1030,Approval for RC Raft & Footings RFT DWGs  (B03) (footing),Approved Baseline.EN.2.A.P01.B03.SUB.1,Approved Baseline,10,10,8-Nov-25,18-Nov-25,8-Nov-25,18-Nov-25,40,40,0,0,0,0,"E-SUB-B03-FOOT-1030, E-SUB-B03-FOOT-1030","CON-B03-FOOT-1050, CON-B03-FOOT-1070",0,0%,No,No
0,,,,,80,80,1-Dec-25,5-Mar-26,1-Dec-25,5-Mar-26,0,280,0,0,0,0,,,0,,,
0,E-APP-B03-BAS02-1000,Approval for Col. & Walls Conc. Dim.  & RFT DWGs  (B03) (Bas 02),Approved Baseline.EN.2.A.P01.B03.SUB.3,Approved Baseline,10,10,1-Dec-25,11-Dec-25,1-Dec-25,11-Dec-25,34,34,0,0,0,0,"E-SUB-B03-BAS02-1000, E-SUB-B03-BAS02-1000","CON-B03-BAS02-1010, CON-B03-BAS02-1020",0,0%,No,No
0,E-APP-B03-BAS02-1010,Approval for Stairs Conc. Dim.  & RFT DWGs  (B03) (Bas 02),Approved Baseline.EN.2.A.P01.B03.SUB.3,Approved Baseline,10,10,4-Dec-25,15-Dec-25,4-Dec-25,15-Dec-25,50,58,0,0,0,0,"E-SUB-B03-BAS02-1010, E-SUB-B03-BAS02-1010","CON-B03-BAS02-1050, CON-B03-BAS02-1070",0,0%,No,No
0,E-APP-B03-BAS02-1020,Approval for Beams Conc. Dim.  & RFT DWGs  (B03) (Bas 02),Approved Baseline.EN.2.A.P01.B03.SUB.3,Approved Baseline,10,10,8-Dec-25,18-Dec-25,8-Dec-25,18-Dec-25,45,45,0,0,0,0,"E-SUB-B03-BAS02-1020, E-SUB-B03-BAS02-1020","CON-B03-BAS02-1040, CON-B03-BAS02-1060",0,0%,No,No
0,E-APP-B03-BAS02-1030,Approval for Slabs Conc. Dim.  & RFT DWGs  (B03) (Bas 02),Approved Baseline.EN.2.A.P01.B03.SUB.3,Approved Baseline,10,10,11-Dec-25,22-Dec-25,11-Dec-25,22-Dec-25,42,42,0,0,0,0,"E-SUB-B03-BAS02-1030, E-SUB-B03-BAS02-1030","CON-B03-BAS02-1040, CON-B03-BAS02-1060",0,0%,No,No
0,,,,,13,13,19-Feb-26,5-Mar-26,19-Feb-26,5-Mar-26,0,280,0,0,0,0,,,0,,,
0,E-APP-B03-SOG-1000,Approval for S.O.G Conc. Dim. DWGs  (B03) (Sog),Approved Baseline.EN.2.A.P01.B03.SUB.3.2,Approved Baseline,10,10,19-Feb-26,2-Mar-26,19-Feb-26,2-Mar-26,26,283,0,0,0,0,"E-SUB-B03-SOG-1000, E-SUB-B03-SOG-1000",CON-B03-SOG-1040,0,0%,No,No
0,E-APP-B03-SOG-1010,Approval for S.O.G RFT DWGs  (B03) (Sog),Approved Baseline.EN.2.A.P01.B03.SUB.3.2,Approved Baseline,10,10,23-Feb-26,5-Mar-26,23-Feb-26,5-Mar-26,23,280,0,0,0,0,"E-SUB-B03-SOG-1010, E-SUB-B03-SOG-1010",CON-B03-SOG-1040,0,0%,No,No
0,,,,,19,19,11-Dec-25,1-Jan-26,11-Dec-25,1-Jan-26,0,67,0,0,0,0,,,0,,,
0,E-APP-B03-BAS01-1000,Approval for Col. & Walls Conc. Dim.  & RFT DWGs  (B03) (Bas 01),Approved Baseline.EN.2.A.P01.B03.SUB.2,Approved Baseline,10,10,11-Dec-25,22-Dec-25,11-Dec-25,22-Dec-25,56,56,0,0,0,0,"E-SUB-B03-BAS01-1000, E-SUB-B03-BAS01-1000","CON-B03-BAS01-1010, CON-B03-BAS01-1020",0,0%,No,No
0,E-APP-B03-BAS01-1010,Approval for Stairs Conc. Dim.  & RFT DWGs  (B03) (Bas 01),Approved Baseline.EN.2.A.P01.B03.SUB.2,Approved Baseline,10,10,15-Dec-25,25-Dec-25,15-Dec-25,25-Dec-25,73,73,0,0,0,0,"E-SUB-B03-BAS01-1010, E-SUB-B03-BAS01-1010","CON-B03-BAS01-1060, CON-B03-BAS01-1070",0,0%,No,No
0,E-APP-B03-BAS01-1020,Approval for Beams Conc. Dim.  & RFT DWGs  (B03) (Bas 01),Approved Baseline.EN.2.A.P01.B03.SUB.2,Approved Baseline,10,10,18-Dec-25,29-Dec-25,18-Dec-25,29-Dec-25,67,67,0,0,0,0,"E-SUB-B03-BAS01-1020, E-SUB-B03-BAS01-1020","CON-B03-BAS01-1040, CON-B03-BAS01-1050",0,0%,No,No
0,E-APP-B03-BAS01-1030,Approval for Slabs Conc. Dim.  & RFT DWGs  (B03) (Bas 01),Approved Baseline.EN.2.A.P01.B03.SUB.2,Approved Baseline,10,10,22-Dec-25,1-Jan-26,22-Dec-25,1-Jan-26,64,64,0,0,0,0,"E-SUB-B03-BAS01-1030, E-SUB-B03-BAS01-1030","CON-B03-BAS01-1040, CON-B03-BAS01-1050",0,0%,No,No
0,,,,,70,70,21-Dec-25,14-Mar-26,21-Dec-25,14-Mar-26,0,280,0,0,0,0,,,0,,,
0,,,,,19,19,21-Dec-25,12-Jan-26,21-Dec-25,12-Jan-26,0,86,0,0,0,0,,,0,,,
0,E-APP-B03-GR-1000,Approval for Col. & Walls Conc. Dim.  & RFT DWGs  (B03) (GF),Approved Baseline.EN.2.A.P01.B03.SUP.GF,Approved Baseline,10,10,21-Dec-25,31-Dec-25,21-Dec-25,31-Dec-25,81,81,0,0,0,0,"E-SUB-B03-GR-1000, E-SUB-B03-GR-1000","CON-B03-GR-1010, CON-B03-GR-1020",0,0%,No,No
0,E-APP-B03-GR-1010,Approval for Stairs Conc. Dim.  & RFT DWGs  (B03) (GF),Approved Baseline.EN.2.A.P01.B03.SUP.GF,Approved Baseline,10,10,24-Dec-25,4-Jan-26,24-Dec-25,4-Jan-26,92,92,0,0,0,0,"E-SUB-B03-GR-1010, E-SUB-B03-GR-1010","CON-B03-GR-1050, CON-B03-GR-1070",0,0%,No,No
0,E-APP-B03-GR-1020,Approval for Beams Conc. Dim.  & RFT DWGs  (B03) (GF),Approved Baseline.EN.2.A.P01.B03.SUP.GF,Approved Baseline,10,10,28-Dec-25,8-Jan-26,28-Dec-25,8-Jan-26,87,87,0,0,0,0,"E-SUB-B03-GR-1020, E-SUB-B03-GR-1020","CON-B03-GR-1040, CON-B03-GR-1060",0,0%,No,No
0,E-APP-B03-GR-1030,Approval for Slabs Conc. Dim.  & RFT DWGs  (B03) (GF),Approved Baseline.EN.2.A.P01.B03.SUP.GF,Approved Baseline,10,10,31-Dec-25,12-Jan-26,31-Dec-25,12-Jan-26,84,84,0,0,0,0,"E-SUB-B03-GR-1030, E-SUB-B03-GR-1030","CON-B03-GR-1040, CON-B03-GR-1060",0,0%,No,No
0,,,,,19,19,31-Dec-25,22-Jan-26,31-Dec-25,22-Jan-26,0,122,0,0,0,0,,,0,,,
0,E-APP-B03-1ST-1000,Approval for Col. & Walls Conc. Dim.  & RFT DWGs  (B03) (1st),Approved Baseline.EN.2.A.P01.B03.SUP.1stF,Approved Baseline,10,10,31-Dec-25,12-Jan-26,31-Dec-25,12-Jan-26,113,113,0,0,0,0,"E-SUB-B03-1ST-1000, E-SUB-B03-1ST-1000","CON-B03-1ST-1010, CON-B03-1ST-1020",0,0%,No,No
0,E-APP-B03-1ST-1010,Approval for Stairs Conc. Dim.  & RFT DWGs  (B03) (1st),Approved Baseline.EN.2.A.P01.B03.SUP.1stF,Approved Baseline,10,10,4-Jan-26,15-Jan-26,4-Jan-26,15-Jan-26,128,128,0,0,0,0,"E-SUB-B03-1ST-1010, E-SUB-B03-1ST-1010","CON-B03-1ST-1040, CON-B03-1ST-1050",0,0%,No,No
0,E-APP-B03-1ST-1020,Approval for Beams Conc. Dim.  & RFT DWGs  (B03) (1st),Approved Baseline.EN.2.A.P01.B03.SUP.1stF,Approved Baseline,10,10,8-Jan-26,19-Jan-26,8-Jan-26,19-Jan-26,125,125,0,0,0,0,"E-SUB-B03-1ST-1020, E-SUB-B03-1ST-1020","CON-B03-1ST-1040, CON-B03-1ST-1050",0,0%,No,No
0,E-APP-B03-1ST-1030,Approval for Slabs Conc. Dim.  & RFT DWGs  (B03) (1st),Approved Baseline.EN.2.A.P01.B03.SUP.1stF,Approved Baseline,10,10,12-Jan-26,22-Jan-26,12-Jan-26,22-Jan-26,122,122,0,0,0,0,"E-SUB-B03-1ST-1030, E-SUB-B03-1ST-1030","CON-B03-1ST-1040, CON-B03-1ST-1050",0,0%,No,No
0,,,,,19,19,11-Jan-26,2-Feb-26,11-Jan-26,2-Feb-26,0,169,0,0,0,0,,,0,,,
0,E-APP-B03-2ND-1000,Approval for Col. & Walls Conc. Dim.  & RFT DWGs  (B03) (2nd),Approved Baseline.EN.2.A.P01.B03.SUP.2ndF,Approved Baseline,10,10,11-Jan-26,21-Jan-26,11-Jan-26,21-Jan-26,160,160,0,0,0,0,"E-SUB-B03-2ND-1000, E-SUB-B03-2ND-1000","CON-B03-2ND-1010, CON-B03-2ND-1020",0,0%,No,No
0,E-APP-B03-2ND-1010,Approval for Stairs Conc. Dim.  & RFT DWGs  (B03) (2nd),Approved Baseline.EN.2.A.P01.B03.SUP.2ndF,Approved Baseline,10,10,14-Jan-26,26-Jan-26,14-Jan-26,26-Jan-26,175,175,0,0,0,0,"E-SUB-B03-2ND-1010, E-SUB-B03-2ND-1010","CON-B03-2ND-1040, CON-B03-2ND-1050",0,0%,No,No
0,E-APP-B03-2ND-1020,Approval for Beams Conc. Dim.  & RFT DWGs  (B03) (2nd),Approved Baseline.EN.2.A.P01.B03.SUP.2ndF,Approved Baseline,10,10,18-Jan-26,29-Jan-26,18-Jan-26,29-Jan-26,172,172,0,0,0,0,"E-SUB-B03-2ND-1020, E-SUB-B03-2ND-1020","CON-B03-2ND-1040, CON-B03-2ND-1050",0,0%,No,No
0,E-APP-B03-2ND-1030,Approval for Slabs Conc. Dim.  & RFT DWGs  (B03) (2nd),Approved Baseline.EN.2.A.P01.B03.SUP.2ndF,Approved Baseline,10,10,21-Jan-26,2-Feb-26,21-Jan-26,2-Feb-26,169,169,0,0,0,0,"E-SUB-B03-2ND-1030, E-SUB-B03-2ND-1030","CON-B03-2ND-1040, CON-B03-2ND-1050",0,0%,No,No
0,,,,,19,19,21-Jan-26,12-Feb-26,21-Jan-26,12-Feb-26,0,213,0,0,0,0,,,0,,,
0,E-APP-B03-3RD-1000,Approval for Col. & Walls Conc. Dim.  & RFT DWGs  (B03) (3rd),Approved Baseline.EN.2.A.P01.B03.SUP.3rdF,Approved Baseline,10,10,21-Jan-26,2-Feb-26,21-Jan-26,2-Feb-26,204,204,0,0,0,0,"E-SUB-B03-3RD-1000, E-SUB-B03-3RD-1000","CON-B03-3RD-1010, CON-B03-3RD-1020",0,0%,No,No
0,E-APP-B03-3RD-1010,Approval for Stairs Conc. Dim.  & RFT DWGs  (B03) (3rd),Approved Baseline.EN.2.A.P01.B03.SUP.3rdF,Approved Baseline,10,10,26-Jan-26,5-Feb-26,26-Jan-26,5-Feb-26,219,219,0,0,0,0,"E-SUB-B03-3RD-1010, E-SUB-B03-3RD-1010","CON-B03-3RD-1040, CON-B03-3RD-1050",0,0%,No,No
0,E-APP-B03-3RD-1020,Approval for Beams Conc. Dim.  & RFT DWGs  (B03) (3rd),Approved Baseline.EN.2.A.P01.B03.SUP.3rdF,Approved Baseline,10,10,29-Jan-26,9-Feb-26,29-Jan-26,9-Feb-26,216,216,0,0,0,0,"E-SUB-B03-3RD-1020, E-SUB-B03-3RD-1020","CON-B03-3RD-1040, CON-B03-3RD-1050",0,0%,No,No
0,E-APP-B03-3RD-1030,Approval for Slabs Conc. Dim.  & RFT DWGs  (B03) (3rd),Approved Baseline.EN.2.A.P01.B03.SUP.3rdF,Approved Baseline,10,10,2-Feb-26,12-Feb-26,2-Feb-26,12-Feb-26,213,213,0,0,0,0,"E-SUB-B03-3RD-1030, E-SUB-B03-3RD-1030","CON-B03-3RD-1040, CON-B03-3RD-1050",0,0%,No,No
0,,,,,19,19,10-Feb-26,3-Mar-26,10-Feb-26,3-Mar-26,0,251,0,0,0,0,,,0,,,
0,E-APP-B03-4TH-1000,Approval for Col. & Walls Conc. Dim.  & RFT DWGs  (B03) (4th),Approved Baseline.EN.2.A.P01.B03.SUP.4thF,Approved Baseline,10,10,10-Feb-26,21-Feb-26,10-Feb-26,21-Feb-26,242,242,0,0,0,0,"E-SUB-B03-4TH-1000, E-SUB-B03-4TH-1000","CON-B03-4TH-1010, CON-B03-4TH-1020",0,0%,No,No
0,E-APP-B03-4TH-1010,Approval for Stairs Conc. Dim.  & RFT DWGs  (B03) (4th),Approved Baseline.EN.2.A.P01.B03.SUP.4thF,Approved Baseline,10,10,14-Feb-26,24-Feb-26,14-Feb-26,24-Feb-26,257,257,0,0,0,0,"E-SUB-B03-4TH-1010, E-SUB-B03-4TH-1010","CON-B03-4TH-1040, CON-B03-4TH-1050",0,0%,No,No
0,E-APP-B03-4TH-1020,Approval for Beams Conc. Dim.  & RFT DWGs  (B03) (4th),Approved Baseline.EN.2.A.P01.B03.SUP.4thF,Approved Baseline,10,10,17-Feb-26,28-Feb-26,17-Feb-26,28-Feb-26,254,254,0,0,0,0,"E-SUB-B03-4TH-1020, E-SUB-B03-4TH-1020","CON-B03-4TH-1040, CON-B03-4TH-1050",0,0%,No,No
0,E-APP-B03-4TH-1030,Approval for Slabs Conc. Dim.  & RFT DWGs  (B03) (4th),Approved Baseline.EN.2.A.P01.B03.SUP.4thF,Approved Baseline,10,10,21-Feb-26,3-Mar-26,21-Feb-26,3-Mar-26,251,251,0,0,0,0,"E-SUB-B03-4TH-1030, E-SUB-B03-4TH-1030","CON-B03-4TH-1040, CON-B03-4TH-1050",0,0%,No,No
0,,,,,16,16,24-Feb-26,14-Mar-26,24-Feb-26,14-Mar-26,0,280,0,0,0,0,,,0,,,
0,E-APP-B03-RF-1000,Approval for Col. & Walls Conc. Dim.  & RFT DWGs  (B03) (RF),Approved Baseline.EN.2.A.P01.B03.SUP.RF,Approved Baseline,10,10,24-Feb-26,7-Mar-26,24-Feb-26,7-Mar-26,280,280,0,0,0,0,"E-SUB-B03-RF-1000, E-SUB-B03-RF-1000","CON-B03-RF-1020, CON-B03-RF-1010",0,0%,No,No
0,E-APP-B03-RF-1010,Approval for Beams Conc. Dim.  & RFT DWGs  (B03) (RF),Approved Baseline.EN.2.A.P01.B03.SUP.RF,Approved Baseline,10,10,28-Feb-26,10-Mar-26,28-Feb-26,10-Mar-26,283,283,0,0,0,0,"E-SUB-B03-RF-1010, E-SUB-B03-RF-1010","CON-B03-RF-1040, CON-B03-RF-1050",0,0%,No,No
0,E-APP-B03-RF-1020,Approval for Slabs Conc. Dim.  & RFT DWGs  (B03) (RF),Approved Baseline.EN.2.A.P01.B03.SUP.RF,Approved Baseline,10,10,3-Mar-26,14-Mar-26,3-Mar-26,14-Mar-26,280,280,0,0,0,0,"E-SUB-B03-RF-1020, E-SUB-B03-RF-1020","CON-B03-RF-1040, CON-B03-RF-1050",0,0%,No,No
0,,,,,200,200,4-Oct-25,7-Jun-26,4-Oct-25,7-Jun-26,0,221,0,0,0,0,,,0,,,
0,,,,,162,162,4-Oct-25,19-Apr-26,4-Oct-25,19-Apr-26,0,249,0,0,0,0,,,0,,,
0,,,,,10,10,11-Nov-25,22-Nov-25,11-Nov-25,22-Nov-25,0,29,0,0,0,0,,,0,,,
0,E-APP-B04-REP-1000,Approval for General Replacement Plan & Typical Sections for Replacement / Backfilling DWGs (B04),Approved Baseline.EN.2.A.P01.B04.SUB.1,Approved Baseline,10,10,11-Nov-25,22-Nov-25,11-Nov-25,22-Nov-25,29,29,0,0,0,0,"E-SUB-B04-REP-1000, E-SUB-B04-REP-1000",CON-EW-B04-1000,0,0%,No,No
0,,,,,31,31,13-Oct-25,17-Nov-25,13-Oct-25,17-Nov-25,0,50,0,0,0,0,,,0,,,
0,E-APP-B04-FOOT-1000,Approval for  Waterproofing Layout Plan (B04),Approved Baseline.EN.2.A.P01.B04.SUB.F,Approved Baseline,10,10,13-Oct-25,23-Oct-25,13-Oct-25,23-Oct-25,28,28,0,0,0,0,"E-SUB-B04-FOOT-1000, E-SUB-B04-FOOT-1000","CON-B04-FOOT-1030, CON-B04-WT-1050, CON-B04-FOOT-1110, CON-B04-SOG-1020, CON-B04-WT-1200",0,0%,No,No
0,E-APP-B04-FOOT-1010,Approval for PC Raft Conc. Dim. DWGs (B04) (footing),Approved Baseline.EN.2.A.P01.B04.SUB.F,Approved Baseline,10,10,29-Oct-25,9-Nov-25,29-Oct-25,9-Nov-25,49,49,0,0,0,0,"E-SUB-B04-FOOT-1010, E-SUB-B04-FOOT-1010",CON-B04-FOOT-1000,0,0%,No,No
0,E-APP-B04-FOOT-1020,Approval for RC Raft & Footings Conc. Dim. DWGs (B04) (footing),Approved Baseline.EN.2.A.P01.B04.SUB.F,Approved Baseline,10,10,2-Nov-25,12-Nov-25,2-Nov-25,12-Nov-25,52,52,0,0,0,0,"E-SUB-B04-FOOT-1020, E-SUB-B04-FOOT-1020","CON-B04-FOOT-1040, CON-B04-FOOT-1060",0,0%,No,No
0,E-APP-B04-FOOT-1030,Approval for RC Raft & Footings RFT DWGs (B04) (footing),Approved Baseline.EN.2.A.P01.B04.SUB.F,Approved Baseline,10,10,6-Nov-25,17-Nov-25,6-Nov-25,17-Nov-25,49,50,0,0,0,0,"E-SUB-B04-FOOT-1030, E-SUB-B04-FOOT-1030","CON-B04-FOOT-1050, CON-B04-FOOT-1070",0,0%,No,No
0,,,,,162,162,4-Oct-25,19-Apr-26,4-Oct-25,19-Apr-26,0,249,0,0,0,0,,,0,,,
0,E-APP-B04-BAS02-1000,Approval for Col. & Walls Conc. Dim.  & RFT DWGs (B04) (Bas 02),Approved Baseline.EN.2.A.P01.B04.SUB.2ndF,Approved Baseline,10,10,1-Dec-25,11-Dec-25,1-Dec-25,11-Dec-25,41,41,0,0,0,0,"E-SUB-B04-BAS02-1000, E-SUB-B04-BAS02-1000","CON-B04-BAS02-1010, CON-B04-BAS02-1020",0,0%,No,No
0,E-APP-B04-BAS02-1010,Approval for Stairs Conc. Dim.  & RFT DWGs (B04) (Bas 02),Approved Baseline.EN.2.A.P01.B04.SUB.2ndF,Approved Baseline,10,10,4-Dec-25,15-Dec-25,4-Dec-25,15-Dec-25,57,70,0,0,0,0,"E-SUB-B04-BAS02-1010, E-SUB-B04-BAS02-1010","CON-B04-BAS02-1050, CON-B04-BAS02-1080",0,0%,No,No
0,E-APP-B04-BAS02-1020,Approval for Ramps Conc. Dim.  & RFT DWGs (B04) (Bas 02),Approved Baseline.EN.2.A.P01.B04.SUB.2ndF,Approved Baseline,10,10,8-Dec-25,18-Dec-25,8-Dec-25,18-Dec-25,54,67,0,0,0,0,"E-SUB-B04-BAS02-1020, E-SUB-B04-BAS02-1020","CON-B04-BAS02-1050, CON-B04-BAS02-1090",0,0%,No,No
0,E-APP-B04-BAS02-1030,Approval for Beams Conc. Dim.  & RFT DWGs (B04) (Bas 02),Approved Baseline.EN.2.A.P01.B04.SUB.2ndF,Approved Baseline,10,10,11-Dec-25,22-Dec-25,11-Dec-25,22-Dec-25,50,50,0,0,0,0,"E-SUB-B04-BAS02-1030, E-SUB-B04-BAS02-1030","CON-B04-BAS02-1040, CON-B04-BAS02-1060",0,0%,No,No
0,E-APP-B04-BAS02-1040,Approval for Slabs Conc. Dim.  & RFT DWGs (B04) (Bas 02),Approved Baseline.EN.2.A.P01.B04.SUB.2ndF,Approved Baseline,10,10,15-Dec-25,25-Dec-25,15-Dec-25,25-Dec-25,47,47,0,0,0,0,"E-SUB-B04-BAS02-1040, E-SUB-B04-BAS02-1040","CON-B04-BAS02-1040, CON-B04-BAS02-1060",0,0%,No,No
0,,,,,22,22,4-Oct-25,29-Oct-25,4-Oct-25,29-Oct-25,0,86,0,0,0,0,,,0,,,
0,E-APP-B04-WT-1000,Approval for PC Raft Conc. Dim. DWGs (B04) (Water Tank),Approved Baseline.EN.2.A.P01.B04.SUB.2ndF.WT,Approved Baseline,10,10,4-Oct-25,15-Oct-25,4-Oct-25,15-Oct-25,20,25,0,0,0,0,"E-SUB-B04-WT-1000, E-SUB-B04-WT-1000",CON-B04-WT-1020,0,0%,No,No
0,E-APP-B04-WT-1010,Approval for RC Raft Conc. Dim. DWGs (B04) (Water Tank),Approved Baseline.EN.2.A.P01.B04.SUB.2ndF.WT,Approved Baseline,10,10,8-Oct-25,19-Oct-25,8-Oct-25,19-Oct-25,34,34,0,0,0,0,"E-SUB-B04-WT-1010, E-SUB-B04-WT-1010",CON-B04-WT-1060,0,0%,No,No
0,E-APP-B04-WT-1020,Approval for RC Raft RFT DWGs (B04) (Water Tank),Approved Baseline.EN.2.A.P01.B04.SUB.2ndF.WT,Approved Baseline,10,10,12-Oct-25,22-Oct-25,12-Oct-25,22-Oct-25,35,35,0,0,0,0,"E-SUB-B04-WT-1020, E-SUB-B04-WT-1020",CON-B04-WT-1070,0,0%,No,No
0,E-APP-B04-WT-1030,Approval for Col. & Walls DWGs (B04) (Water Tank),Approved Baseline.EN.2.A.P01.B04.SUB.2ndF.WT,Approved Baseline,10,10,15-Oct-25,26-Oct-25,15-Oct-25,26-Oct-25,40,40,0,0,0,0,"E-SUB-B04-WT-1030, E-SUB-B04-WT-1030","CON-B04-WT-1100, CON-B04-WT-1110",0,0%,No,No
0,E-APP-B04-WT-1040,Approval for Slabs DWGs (B04) (Water Tank),Approved Baseline.EN.2.A.P01.B04.SUB.2ndF.WT,Approved Baseline,10,10,19-Oct-25,29-Oct-25,19-Oct-25,29-Oct-25,48,86,0,0,0,0,"E-SUB-B04-WT-1040, E-SUB-B04-WT-1040","CON-B04-WT-1150, CON-B04-WT-1160",0,0%,No,No
0,,,,,13,13,4-Apr-26,19-Apr-26,4-Apr-26,19-Apr-26,0,249,0,0,0,0,,,0,,,
0,E-APP-B04-SOG-1000,Approval for S.O.G Conc. Dim. DWGs (B04) (Sog),Approved Baseline.EN.2.A.P01.B04.SUB.2ndF.SOG,Approved Baseline,10,10,4-Apr-26,15-Apr-26,4-Apr-26,15-Apr-26,3,252,0,0,0,0,"E-SUB-B04-SOG-1000, E-SUB-B04-SOG-1000",CON-B04-SOG-1040,0,0%,No,No
0,E-APP-B04-SOG-1010,Approval for S.O.G RFT DWGs (B04) (Sog),Approved Baseline.EN.2.A.P01.B04.SUB.2ndF.SOG,Approved Baseline,10,10,7-Apr-26,19-Apr-26,7-Apr-26,19-Apr-26,0,249,0,0,0,0,"E-SUB-B04-SOG-1010, E-SUB-B04-SOG-1010",CON-B04-SOG-1040,0,0%,No,No
0,,,,,22,22,21-Dec-25,15-Jan-26,21-Dec-25,15-Jan-26,0,58,0,0,0,0,,,0,,,
0,E-APP-B04-BAS01-1000,Approval for Col. & Walls Conc. Dim.  & RFT DWGs (B04) (Bas 01),Approved Baseline.EN.2.A.P01.B04.SUB.1stB,Approved Baseline,10,10,21-Dec-25,31-Dec-25,21-Dec-25,31-Dec-25,56,56,0,0,0,0,"E-SUB-B04-BAS01-1000, E-SUB-B04-BAS01-1000","CON-B04-BAS01-1010, CON-B04-BAS01-1020",0,0%,No,No
0,E-APP-B04-BAS01-1010,Approval for Stairs Conc. Dim.  & RFT DWGs (B04) (Bas 01),Approved Baseline.EN.2.A.P01.B04.SUB.1stB,Approved Baseline,10,10,24-Dec-25,4-Jan-26,24-Dec-25,4-Jan-26,67,67,0,0,0,0,"E-SUB-B04-BAS01-1010, E-SUB-B04-BAS01-1010","CON-B04-BAS01-1060, CON-B04-BAS01-1090",0,0%,No,No
0,E-APP-B04-BAS01-1020,Approval for Ramps Conc. Dim.  & RFT DWGs (B04) (Bas 01),Approved Baseline.EN.2.A.P01.B04.SUB.1stB,Approved Baseline,10,10,28-Dec-25,8-Jan-26,28-Dec-25,8-Jan-26,62,62,0,0,0,0,"E-SUB-B04-BAS01-1020, E-SUB-B04-BAS01-1020","CON-B04-BAS01-1080, CON-B04-BAS01-1050",0,0%,No,No
0,E-APP-B04-BAS01-1030,Approval for Beams Conc. Dim.  & RFT DWGs (B04) (Bas 01),Approved Baseline.EN.2.A.P01.B04.SUB.1stB,Approved Baseline,10,10,31-Dec-25,12-Jan-26,31-Dec-25,12-Jan-26,59,59,0,0,0,0,"E-SUB-B04-BAS01-1030, E-SUB-B04-BAS01-1030","CON-B04-BAS01-1040, CON-B04-BAS01-1070",0,0%,No,No
0,E-APP-B04-BAS01-1040,Approval for Slabs Conc. Dim.  & RFT DWGs (B04) (Bas 01),Approved Baseline.EN.2.A.P01.B04.SUB.1stB,Approved Baseline,10,10,4-Jan-26,15-Jan-26,4-Jan-26,15-Jan-26,56,56,0,0,0,0,"E-SUB-B04-BAS01-1040, E-SUB-B04-BAS01-1040","CON-B04-BAS01-1040, CON-B04-BAS01-1070",0,0%,No,No
0,,,,,121,121,5-Jan-26,7-Jun-26,5-Jan-26,7-Jun-26,0,221,0,0,0,0,,,0,,,
0,,,,,19,19,5-Jan-26,28-Jan-26,5-Jan-26,28-Jan-26,0,76,0,0,0,0,,,0,,,
0,E-APP-B04-GR-1000,Approval for Col. & Walls Conc. Dim.  & RFT DWGs (B04) (GF),Approved Baseline.EN.2.A.P01.B04.SUP.GF,Approved Baseline,10,10,5-Jan-26,17-Jan-26,5-Jan-26,17-Jan-26,71,71,0,0,0,0,"E-SUB-B04-GR-1000, E-SUB-B04-GR-1000","CON-B04-GR-1010, CON-B04-GR-1020",0,0%,No,No
0,E-APP-B04-GR-1010,Approval for Stairs Conc. Dim.  & RFT DWGs (B04) (GF),Approved Baseline.EN.2.A.P01.B04.SUP.GF,Approved Baseline,10,10,10-Jan-26,20-Jan-26,10-Jan-26,20-Jan-26,81,82,0,0,0,0,"E-SUB-B04-GR-1010, E-SUB-B04-GR-1010","CON-B04-GR-1050, CON-B04-GR-1070",0,0%,No,No
0,E-APP-B04-GR-1020,Approval for Beams Conc. Dim.  & RFT DWGs (B04) (GF),Approved Baseline.EN.2.A.P01.B04.SUP.GF,Approved Baseline,10,10,13-Jan-26,24-Jan-26,13-Jan-26,24-Jan-26,76,76,0,0,0,0,"E-SUB-B04-GR-1020, E-SUB-B04-GR-1020","CON-B04-GR-1040, CON-B04-GR-1060",0,0%,No,No
0,E-APP-B04-GR-1030,Approval for Slabs Conc. Dim.  & RFT DWGs (B04) (GF),Approved Baseline.EN.2.A.P01.B04.SUP.GF,Approved Baseline,10,10,17-Jan-26,28-Jan-26,17-Jan-26,28-Jan-26,73,73,0,0,0,0,"E-SUB-B04-GR-1030, E-SUB-B04-GR-1030","CON-B04-GR-1040, CON-B04-GR-1060",0,0%,No,No
0,,,,,19,19,17-Jan-26,8-Feb-26,17-Jan-26,8-Feb-26,0,90,0,0,0,0,,,0,,,
0,E-APP-B04-1ST-1000,Approval for Col. & Walls Conc. Dim.  & RFT DWGs (B04) (1st),Approved Baseline.EN.2.A.P01.B04.SUP.1stF,Approved Baseline,10,10,17-Jan-26,28-Jan-26,17-Jan-26,28-Jan-26,89,89,0,0,0,0,"E-SUB-B04-1ST-1000, E-SUB-B04-1ST-1000","CON-B04-1ST-1010, CON-B04-1ST-1020",0,0%,No,No
0,E-APP-B04-1ST-1010,Approval for Stairs Conc. Dim.  & RFT DWGs (B04) (1st),Approved Baseline.EN.2.A.P01.B04.SUP.1stF,Approved Baseline,10,10,20-Jan-26,1-Feb-26,20-Jan-26,1-Feb-26,96,96,0,0,0,0,"E-SUB-B04-1ST-1010, E-SUB-B04-1ST-1010","CON-B04-1ST-1040, CON-B04-1ST-1050",0,0%,No,No
0,E-APP-B04-1ST-1020,Approval for Beams Conc. Dim.  & RFT DWGs (B04) (1st),Approved Baseline.EN.2.A.P01.B04.SUP.1stF,Approved Baseline,10,10,24-Jan-26,4-Feb-26,24-Jan-26,4-Feb-26,93,93,0,0,0,0,"E-SUB-B04-1ST-1020, E-SUB-B04-1ST-1020","CON-B04-1ST-1040, CON-B04-1ST-1050",0,0%,No,No
0,E-APP-B04-1ST-1030,Approval for Slabs Conc. Dim.  & RFT DWGs (B04) (1st),Approved Baseline.EN.2.A.P01.B04.SUP.1stF,Approved Baseline,10,10,28-Jan-26,8-Feb-26,28-Jan-26,8-Feb-26,90,90,0,0,0,0,"E-SUB-B04-1ST-1030, E-SUB-B04-1ST-1030","CON-B04-1ST-1040, CON-B04-1ST-1050",0,0%,No,No
0,,,,,19,19,1-Feb-26,22-Feb-26,1-Feb-26,22-Feb-26,0,112,0,0,0,0,,,0,,,
0,E-APP-B04-2ND-1000,Approval for Col. & Walls Conc. Dim.  & RFT DWGs (B04) (2nd),Approved Baseline.EN.2.A.P01.B04.SUP.2ndF,Approved Baseline,10,10,1-Feb-26,11-Feb-26,1-Feb-26,11-Feb-26,109,109,0,0,0,0,"E-SUB-B04-2ND-1000, E-SUB-B04-2ND-1000","CON-B04-2ND-1010, CON-B04-2ND-1020",0,0%,No,No
0,E-APP-B04-2ND-1010,Approval for Stairs Conc. Dim.  & RFT DWGs (B04) (2nd),Approved Baseline.EN.2.A.P01.B04.SUP.2ndF,Approved Baseline,10,10,4-Feb-26,15-Feb-26,4-Feb-26,15-Feb-26,118,118,0,0,0,0,"E-SUB-B04-2ND-1010, E-SUB-B04-2ND-1010","CON-B04-2ND-1040, CON-B04-2ND-1050",0,0%,No,No
0,E-APP-B04-2ND-1020,Approval for Beams Conc. Dim.  & RFT DWGs (B04) (2nd),Approved Baseline.EN.2.A.P01.B04.SUP.2ndF,Approved Baseline,10,10,8-Feb-26,18-Feb-26,8-Feb-26,18-Feb-26,115,115,0,0,0,0,"E-SUB-B04-2ND-1020, E-SUB-B04-2ND-1020","CON-B04-2ND-1040, CON-B04-2ND-1050",0,0%,No,No
0,E-APP-B04-2ND-1030,Approval for Slabs Conc. Dim.  & RFT DWGs (B04) (2nd),Approved Baseline.EN.2.A.P01.B04.SUP.2ndF,Approved Baseline,10,10,11-Feb-26,22-Feb-26,11-Feb-26,22-Feb-26,112,112,0,0,0,0,"E-SUB-B04-2ND-1030, E-SUB-B04-2ND-1030","CON-B04-2ND-1040, CON-B04-2ND-1050",0,0%,No,No
0,,,,,19,19,15-Feb-26,8-Mar-26,15-Feb-26,8-Mar-26,0,134,0,0,0,0,,,0,,,
0,E-APP-B04-2RD-1000,Approval for Col. & Walls Conc. Dim.  & RFT DWGs (B04) (3rd),Approved Baseline.EN.2.A.P01.B04.SUP.3rdF,Approved Baseline,10,10,15-Feb-26,25-Feb-26,15-Feb-26,25-Feb-26,131,131,0,0,0,0,"E-SUB-B04-3RD-1000, E-SUB-B04-3RD-1000","CON-B04-3RD-1010, CON-B04-3RD-1020",0,0%,No,No
0,E-APP-B04-2RD-1010,Approval for Stairs Conc. Dim.  & RFT DWGs (B04) (3rd),Approved Baseline.EN.2.A.P01.B04.SUP.3rdF,Approved Baseline,10,10,18-Feb-26,1-Mar-26,18-Feb-26,1-Mar-26,140,140,0,0,0,0,"E-SUB-B04-3RD-1010, E-SUB-B04-3RD-1010","CON-B04-3RD-1040, CON-B04-3RD-1050",0,0%,No,No
0,E-APP-B04-2RD-1020,Approval for Beams Conc. Dim.  & RFT DWGs (B04) (3rd),Approved Baseline.EN.2.A.P01.B04.SUP.3rdF,Approved Baseline,10,10,22-Feb-26,4-Mar-26,22-Feb-26,4-Mar-26,137,137,0,0,0,0,"E-SUB-B04-3RD-1020, E-SUB-B04-3RD-1020","CON-B04-3RD-1040, CON-B04-3RD-1050",0,0%,No,No
0,E-APP-B04-2RD-1030,Approval for Slabs Conc. Dim.  & RFT DWGs (B04) (3rd),Approved Baseline.EN.2.A.P01.B04.SUP.3rdF,Approved Baseline,10,10,25-Feb-26,8-Mar-26,25-Feb-26,8-Mar-26,134,134,0,0,0,0,"E-SUB-B04-3RD-1030, E-SUB-B04-3RD-1030","CON-B04-3RD-1040, CON-B04-3RD-1050",0,0%,No,No
0,,,,,19,19,1-Mar-26,26-Mar-26,1-Mar-26,26-Mar-26,0,154,0,0,0,0,,,0,,,
0,E-APP-B04-4TH-1000,Approval for Col. & Walls Conc. Dim.  & RFT DWGs (B04) (4th),Approved Baseline.EN.2.A.P01.B04.SUP.4thF,Approved Baseline,10,10,1-Mar-26,11-Mar-26,1-Mar-26,11-Mar-26,151,151,0,0,0,0,"E-SUB-B04-4TH-1000, E-SUB-B04-4TH-1000","CON-B04-4TH-1010, CON-B04-4TH-1020",0,0%,No,No
0,E-APP-B04-4TH-1010,Approval for Stairs Conc. Dim.  & RFT DWGs (B04) (4th),Approved Baseline.EN.2.A.P01.B04.SUP.4thF,Approved Baseline,10,10,4-Mar-26,15-Mar-26,4-Mar-26,15-Mar-26,160,160,0,0,0,0,"E-SUB-B04-4TH-1010, E-SUB-B04-4TH-1010","CON-B04-4TH-1040, CON-B04-4TH-1050",0,0%,No,No
0,E-APP-B04-4TH-1020,Approval for Beams Conc. Dim.  & RFT DWGs (B04) (4th),Approved Baseline.EN.2.A.P01.B04.SUP.4thF,Approved Baseline,10,10,8-Mar-26,23-Mar-26,8-Mar-26,23-Mar-26,157,157,0,0,0,0,"E-SUB-B04-4TH-1020, E-SUB-B04-4TH-1020","CON-B04-4TH-1040, CON-B04-4TH-1050",0,0%,No,No
0,E-APP-B04-4TH-1030,Approval for Slabs Conc. Dim.  & RFT DWGs (B04) (4th),Approved Baseline.EN.2.A.P01.B04.SUP.4thF,Approved Baseline,10,10,11-Mar-26,26-Mar-26,11-Mar-26,26-Mar-26,154,154,0,0,0,0,"E-SUB-B04-4TH-1030, E-SUB-B04-4TH-1030","CON-B04-4TH-1040, CON-B04-4TH-1050",0,0%,No,No
0,,,,,19,19,25-Mar-26,16-Apr-26,25-Mar-26,16-Apr-26,0,169,0,0,0,0,,,0,,,
0,E-APP-B04-5TH-1000,Approval for Col. & Walls Conc. Dim.  & RFT DWGs (B04) (5th),Approved Baseline.EN.2.A.P01.B04.SUP.5thF,Approved Baseline,10,10,25-Mar-26,5-Apr-26,25-Mar-26,5-Apr-26,167,167,0,0,0,0,"E-SUB-B04-5TH-1000, E-SUB-B04-5TH-1000","CON-B04-5TH-1010, CON-B04-5TH-1020",0,0%,No,No
0,E-APP-B04-5TH-1010,Approval for Stairs Conc. Dim.  & RFT DWGs (B04) (5th),Approved Baseline.EN.2.A.P01.B04.SUP.5thF,Approved Baseline,10,10,29-Mar-26,8-Apr-26,29-Mar-26,8-Apr-26,175,175,0,0,0,0,"E-SUB-B04-5TH-1010, E-SUB-B04-5TH-1010","CON-B04-5TH-1040, CON-B04-5TH-1050",0,0%,No,No
0,E-APP-B04-5TH-1020,Approval for Beams Conc. Dim.  & RFT DWGs (B04) (5th),Approved Baseline.EN.2.A.P01.B04.SUP.5thF,Approved Baseline,10,10,1-Apr-26,12-Apr-26,1-Apr-26,12-Apr-26,172,172,0,0,0,0,"E-SUB-B04-5TH-1020, E-SUB-B04-5TH-1020","CON-B04-5TH-1040, CON-B04-5TH-1050",0,0%,No,No
0,E-APP-B04-5TH-1030,Approval for Slabs Conc. Dim.  & RFT DWGs (B04) (5th),Approved Baseline.EN.2.A.P01.B04.SUP.5thF,Approved Baseline,10,10,5-Apr-26,16-Apr-26,5-Apr-26,16-Apr-26,169,169,0,0,0,0,"E-SUB-B04-5TH-1030, E-SUB-B04-5TH-1030","CON-B04-5TH-1040, CON-B04-5TH-1050",0,0%,No,No
0,,,,,19,19,9-Apr-26,2-May-26,9-Apr-26,2-May-26,0,183,0,0,0,0,,,0,,,
0,E-APP-B04-6TH-1000,Approval for Col. & Walls Conc. Dim.  & RFT DWGs (B04) (6th),Approved Baseline.EN.2.A.P01.B04.SUP.6thF,Approved Baseline,10,10,9-Apr-26,21-Apr-26,9-Apr-26,21-Apr-26,184,184,0,0,0,0,"E-SUB-B04-6TH-1000, E-SUB-B04-6TH-1000","CON-B04-6TH-1020, CON-B04-6TH-1010",0,0%,No,No
0,E-APP-B04-6TH-1010,Approval for Stairs Conc. Dim.  & RFT DWGs (B04) (6th),Approved Baseline.EN.2.A.P01.B04.SUP.6thF,Approved Baseline,10,10,14-Apr-26,25-Apr-26,14-Apr-26,25-Apr-26,189,189,0,0,0,0,"E-SUB-B04-6TH-1010, E-SUB-B04-6TH-1010","CON-B04-6TH-1040, CON-B04-6TH-1050",0,0%,No,No
0,E-APP-B04-6TH-1020,Approval for Beams Conc. Dim.  & RFT DWGs (B04) (6th),Approved Baseline.EN.2.A.P01.B04.SUP.6thF,Approved Baseline,10,10,18-Apr-26,28-Apr-26,18-Apr-26,28-Apr-26,186,186,0,0,0,0,"E-SUB-B04-6TH-1020, E-SUB-B04-6TH-1020","CON-B04-6TH-1040, CON-B04-6TH-1050",0,0%,No,No
0,E-APP-B04-6TH-1030,Approval for Slabs Conc. Dim.  & RFT DWGs (B04) (6th),Approved Baseline.EN.2.A.P01.B04.SUP.6thF,Approved Baseline,10,10,21-Apr-26,2-May-26,21-Apr-26,2-May-26,183,183,0,0,0,0,"E-SUB-B04-6TH-1030, E-SUB-B04-6TH-1030","CON-B04-6TH-1040, CON-B04-6TH-1050",0,0%,No,No
0,,,,,19,19,26-Apr-26,17-May-26,26-Apr-26,17-May-26,0,195,0,0,0,0,,,0,,,
0,E-APP-B04-7TH-1000,Approval for Col. & Walls Conc. Dim.  & RFT DWGs (B04) (7th),Approved Baseline.EN.2.A.P01.B04.SUP.7thF,Approved Baseline,10,10,26-Apr-26,6-May-26,26-Apr-26,6-May-26,196,196,0,0,0,0,"E-SUB-B04-7TH-1000, E-SUB-B04-7TH-1000","CON-B04-7TH-1010, CON-B04-7TH-1020",0,0%,No,No
0,E-APP-B04-7TH-1010,Approval for Stairs Conc. Dim.  & RFT DWGs (B04) (7th),Approved Baseline.EN.2.A.P01.B04.SUP.7thF,Approved Baseline,10,10,29-Apr-26,10-May-26,29-Apr-26,10-May-26,201,201,0,0,0,0,"E-SUB-B04-7TH-1010, E-SUB-B04-7TH-1010","CON-B04-7TH-1040, CON-B04-7TH-1050",0,0%,No,No
0,E-APP-B04-7TH-1020,Approval for Beams Conc. Dim.  & RFT DWGs (B04) (7th),Approved Baseline.EN.2.A.P01.B04.SUP.7thF,Approved Baseline,10,10,3-May-26,13-May-26,3-May-26,13-May-26,198,198,0,0,0,0,"E-SUB-B04-7TH-1020, E-SUB-B04-7TH-1020","CON-B04-7TH-1040, CON-B04-7TH-1050",0,0%,No,No
0,E-APP-B04-7TH-1030,Approval for Slabs Conc. Dim.  & RFT DWGs (B04) (7th),Approved Baseline.EN.2.A.P01.B04.SUP.7thF,Approved Baseline,10,10,6-May-26,17-May-26,6-May-26,17-May-26,195,195,0,0,0,0,"E-SUB-B04-7TH-1030, E-SUB-B04-7TH-1030","CON-B04-7TH-1040, CON-B04-7TH-1050",0,0%,No,No
0,,,,,19,19,10-May-26,4-Jun-26,10-May-26,4-Jun-26,0,207,0,0,0,0,,,0,,,
0,E-APP-B04-8TH-1000,Approval for Col. & Walls Conc. Dim.  & RFT DWGs (B04) (8th),Approved Baseline.EN.2.A.P01.B04.SUP.8thF,Approved Baseline,10,10,10-May-26,20-May-26,10-May-26,20-May-26,207,207,0,0,0,0,"E-SUB-B04-8TH-1000, E-SUB-B04-8TH-1000","CON-B04-8TH-1010, CON-B04-8TH-1020",0,0%,No,No
0,E-APP-B04-8TH-1010,Approval for Stairs Conc. Dim.  & RFT DWGs (B04) (8th),Approved Baseline.EN.2.A.P01.B04.SUP.8thF,Approved Baseline,10,10,13-May-26,24-May-26,13-May-26,24-May-26,213,213,0,0,0,0,"E-SUB-B04-8TH-1010, E-SUB-B04-8TH-1010","CON-B04-8TH-1040, CON-B04-8TH-1050",0,0%,No,No
0,E-APP-B04-8TH-1020,Approval for Beams Conc. Dim.  & RFT DWGs (B04) (8th),Approved Baseline.EN.2.A.P01.B04.SUP.8thF,Approved Baseline,10,10,17-May-26,1-Jun-26,17-May-26,1-Jun-26,210,210,0,0,0,0,"E-SUB-B04-8TH-1020, E-SUB-B04-8TH-1020","CON-B04-8TH-1040, CON-B04-8TH-1050",0,0%,No,No
0,E-APP-B04-8TH-1030,Approval for Slabs Conc. Dim.  & RFT DWGs (B04) (8th),Approved Baseline.EN.2.A.P01.B04.SUP.8thF,Approved Baseline,10,10,20-May-26,4-Jun-26,20-May-26,4-Jun-26,207,207,0,0,0,0,"E-SUB-B04-8TH-1030, E-SUB-B04-8TH-1030","CON-B04-8TH-1040, CON-B04-8TH-1050",0,0%,No,No
0,,,,,16,16,16-May-26,7-Jun-26,16-May-26,7-Jun-26,0,221,0,0,0,0,,,0,,,
0,E-APP-B04-RF-1000,Approval for Col. & Walls Conc. Dim.  & RFT DWGs (B04) (RF),Approved Baseline.EN.2.A.P01.B04.SUP.RF,Approved Baseline,10,10,16-May-26,26-May-26,16-May-26,26-May-26,223,224,0,0,0,0,"E-SUB-B04-RF-1000, E-SUB-B04-RF-1000","CON-B04-RF-1010, CON-B04-RF-1020",0,0%,No,No
0,E-APP-B04-RF-1010,Approval for  Beams Conc. Dim.  & RFT DWGs (B04) (RF),Approved Baseline.EN.2.A.P01.B04.SUP.RF,Approved Baseline,10,10,19-May-26,3-Jun-26,19-May-26,3-Jun-26,223,224,0,0,0,0,"E-SUB-B04-RF-1010, E-SUB-B04-RF-1010","CON-B04-RF-1040, CON-B04-RF-1050",0,0%,No,No
0,E-APP-B04-RF-1020,Approval for Slabs Conc. Dim.  & RFT DWGs (B04) (RF),Approved Baseline.EN.2.A.P01.B04.SUP.RF,Approved Baseline,10,10,23-May-26,7-Jun-26,23-May-26,7-Jun-26,220,221,0,0,0,0,"E-SUB-B04-RF-1020, E-SUB-B04-RF-1020","CON-B04-RF-1040, CON-B04-RF-1050",0,0%,No,No
0,,,,,493,493,11-Sep-25,16-Jan-27,11-Sep-25,16-Jan-27,0,27,0,0,0,0,,,0,,,
0,,,,,38,38,11-Sep-25,26-Oct-25,11-Sep-25,26-Oct-25,0,15,0,0,0,0,,,0,,,
0,,,,,28,28,11-Sep-25,14-Oct-25,11-Sep-25,14-Oct-25,0,15,0,0,0,0,,,0,,,
0,P-MS-1000,Submittal for RFT Rebar,Approved Baseline.P.MS.SS,Approved Baseline,18,18,11-Sep-25,1-Oct-25,11-Sep-25,1-Oct-25,0,6,0,0,0,0,KD-MS-1000,"P-MA-1000, P-MA-1000",0,0%,No,No
0,P-MS-1020,Submittal for Soil Replacement,Approved Baseline.P.MS.SS,Approved Baseline,18,18,14-Sep-25,4-Oct-25,14-Sep-25,4-Oct-25,0,0,0,0,0,0,KD-MS-1000,"P-MA-1010, P-MA-1010",0,0%,Yes,Yes
0,P-MS-1010,Submittal for Plain Concrete,Approved Baseline.P.MS.SS,Approved Baseline,18,18,14-Sep-25,4-Oct-25,14-Sep-25,4-Oct-25,0,20,0,0,0,0,KD-MS-1000,"P-MA-1020, P-MA-1020",0,0%,No,No
0,P-MS-1030,Submittal for Rc Concrete,Approved Baseline.P.MS.SS,Approved Baseline,18,18,21-Sep-25,12-Oct-25,21-Sep-25,12-Oct-25,0,4,0,0,0,0,KD-MS-1000,"P-MA-1030, P-MA-1030",0,0%,No,No
0,P-MS-1040,Submittal for Waterproofing,Approved Baseline.P.MS.SS,Approved Baseline,18,18,23-Sep-25,14-Oct-25,23-Sep-25,14-Oct-25,0,0,0,0,0,0,KD-MS-1000,"P-MA-1040, P-MA-1040",0,0%,Yes,Yes
0,P-MS-1050,Submittal for cold applied damp-proofing,Approved Baseline.P.MS.SS,Approved Baseline,18,18,23-Sep-25,14-Oct-25,23-Sep-25,14-Oct-25,0,0,0,0,0,0,KD-MS-1000,"P-MA-1050, P-MA-1050",0,0%,Yes,Yes
0,P-MS-1060,Submittal for cold Crystalline waterproofing for Water tank,Approved Baseline.P.MS.SS,Approved Baseline,18,18,23-Sep-25,14-Oct-25,23-Sep-25,14-Oct-25,0,15,0,0,0,0,KD-MS-1000,"P-MA-1060, P-MA-1060",0,0%,No,No
0,,,,,20,20,2-Oct-25,26-Oct-25,2-Oct-25,26-Oct-25,0,15,0,0,0,0,,,0,,,
0,P-MA-1000,Approval for RFT Rebar,Approved Baseline.P.MS.SA,Approved Baseline,10,10,2-Oct-25,14-Oct-25,2-Oct-25,14-Oct-25,0,6,0,0,0,0,"P-MS-1000, P-MS-1000","P-MPOS-1000, P-MPOS-1070, P-MPOS-1080, P-MPOS-1090, P-MPOS-1100, P-MPOS-1110, P-MPOS-1120, P-MPOS-1130, P-MPOS-1140, P-MPOS-1150, P-MPOS-1160, P-MPOS-1170, P-MPOS-1180, P-MPOS-1190",0,0%,No,No
0,P-MA-1010,Approval for Soil Replacement,Approved Baseline.P.MS.SA,Approved Baseline,10,10,5-Oct-25,16-Oct-25,5-Oct-25,16-Oct-25,0,0,0,0,0,0,"P-MS-1020, P-MS-1020",P-MPOS-1010,0,0%,Yes,Yes
0,P-MA-1020,Approval for Plain Concrete,Approved Baseline.P.MS.SA,Approved Baseline,10,10,5-Oct-25,16-Oct-25,5-Oct-25,16-Oct-25,0,20,0,0,0,0,"P-MS-1010, P-MS-1010",P-MPOS-1020,0,0%,No,No
0,P-MA-1030,Approval for Rc Concrete,Approved Baseline.P.MS.SA,Approved Baseline,10,10,13-Oct-25,23-Oct-25,13-Oct-25,23-Oct-25,0,4,0,0,0,0,"P-MS-1030, P-MS-1030",P-MPOS-1030,0,0%,No,No
0,P-MA-1040,Approval for Waterproofing,Approved Baseline.P.MS.SA,Approved Baseline,10,10,15-Oct-25,26-Oct-25,15-Oct-25,26-Oct-25,0,0,0,0,0,0,"P-MS-1040, P-MS-1040",P-MPOS-1040,0,0%,Yes,Yes
0,P-MA-1050,Approval for cold applied damp-proofing,Approved Baseline.P.MS.SA,Approved Baseline,10,10,15-Oct-25,26-Oct-25,15-Oct-25,26-Oct-25,0,0,0,0,0,0,"P-MS-1050, P-MS-1050",P-MPOS-1050,0,0%,Yes,Yes
0,P-MA-1060,Approval for cold Crystalline waterproofing for Water tank,Approved Baseline.P.MS.SA,Approved Baseline,10,10,15-Oct-25,26-Oct-25,15-Oct-25,26-Oct-25,0,15,0,0,0,0,"P-MS-1060, P-MS-1060",P-MPOS-1060,0,0%,No,No
0,,,,,456,456,18-Oct-25,16-Jan-27,18-Oct-25,16-Jan-27,0,27,0,0,0,0,,,0,,,
0,,,,,335,335,18-Oct-25,29-Nov-26,18-Oct-25,29-Nov-26,0,45,0,0,0,0,,,0,,,
0,P-MPOS-1010,P.O for  Soil Replacement,Approved Baseline.P.PC.PO,Approved Baseline,2,2,18-Oct-25,19-Oct-25,18-Oct-25,19-Oct-25,0,0,0,0,0,0,P-MA-1010,P-MDEL-1010,0,0%,Yes,Yes
0,P-MPOS-1020,P.O for  Plain Concrete,Approved Baseline.P.PC.PO,Approved Baseline,2,2,18-Oct-25,19-Oct-25,18-Oct-25,19-Oct-25,0,20,0,0,0,0,P-MA-1020,P-MDEL-1020,0,0%,No,No
0,P-MPOS-1030,P.O for  Rc Concrete,Approved Baseline.P.PC.PO,Approved Baseline,2,2,25-Oct-25,26-Oct-25,25-Oct-25,26-Oct-25,0,4,0,0,0,0,P-MA-1030,P-MDEL-1030,0,0%,No,No
0,P-MPOS-1040,P.O for  Waterproofing,Approved Baseline.P.PC.PO,Approved Baseline,2,2,27-Oct-25,28-Oct-25,27-Oct-25,28-Oct-25,0,0,0,0,0,0,P-MA-1040,P-MDEL-1040,0,0%,Yes,Yes
0,P-MPOS-1050,P.O for cold applied damp-proofing,Approved Baseline.P.PC.PO,Approved Baseline,2,2,27-Oct-25,28-Oct-25,27-Oct-25,28-Oct-25,0,0,0,0,0,0,P-MA-1050,P-MDEL-1050,0,0%,Yes,Yes
0,P-MPOS-1060,P.O for cold Crystalline waterproofing for Water tank,Approved Baseline.P.PC.PO,Approved Baseline,2,2,27-Oct-25,28-Oct-25,27-Oct-25,28-Oct-25,0,15,0,0,0,0,P-MA-1060,P-MDEL-1060,0,0%,No,No
0,,,,,334,334,19-Oct-25,29-Nov-26,19-Oct-25,29-Nov-26,0,45,0,0,0,0,,,0,,,
0,P-MPOS-1000,P.O for Rebar Patch#1 (Footing & Water tank),Approved Baseline.P.PC.PO.1,Approved Baseline,2,2,19-Oct-25,20-Oct-25,19-Oct-25,20-Oct-25,0,25,0,0,0,0,P-MA-1000,P-MDEL-1000,0,0%,No,No
0,P-MPOS-1070,P.O for Rebar Patch#2  (Basement 2),Approved Baseline.P.PC.PO.1,Approved Baseline,2,2,24-Nov-25,25-Nov-25,24-Nov-25,25-Nov-25,0,23,0,0,0,0,P-MA-1000,P-MDEL-1170,0,0%,No,No
0,P-MPOS-1080,P.O for Rebar Patch#3  (Basement 1),Approved Baseline.P.PC.PO.1,Approved Baseline,2,2,5-Jan-26,6-Jan-26,5-Jan-26,6-Jan-26,0,21,0,0,0,0,P-MA-1000,P-MDEL-1160,0,0%,No,No
0,P-MPOS-1090,P.O for Rebar Patch#4  (SOG),Approved Baseline.P.PC.PO.1,Approved Baseline,2,2,23-Feb-26,24-Feb-26,23-Feb-26,24-Feb-26,0,270,0,0,0,0,P-MA-1000,P-MDEL-1150,0,0%,No,No
0,P-MPOS-1100,P.O for Rebar Patch#5  (Ground floor),Approved Baseline.P.PC.PO.1,Approved Baseline,2,2,7-Mar-26,8-Mar-26,7-Mar-26,8-Mar-26,0,6,0,0,0,0,P-MA-1000,P-MDEL-1130,0,0%,No,No
0,P-MPOS-1110,P.O for Rebar Patch#6  (1st floor),Approved Baseline.P.PC.PO.1,Approved Baseline,2,2,4-Apr-26,5-Apr-26,4-Apr-26,5-Apr-26,0,21,0,0,0,0,P-MA-1000,P-MDEL-1120,0,0%,No,No
0,P-MPOS-1120,P.O for Rebar Patch#7  (2nd floor),Approved Baseline.P.PC.PO.1,Approved Baseline,2,2,10-May-26,11-May-26,10-May-26,11-May-26,0,17,0,0,0,0,P-MA-1000,P-MDEL-1110,0,0%,No,No
0,P-MPOS-1130,P.O for Rebar Patch#8  (3rd floor),Approved Baseline.P.PC.PO.1,Approved Baseline,2,2,7-Jun-26,8-Jun-26,7-Jun-26,8-Jun-26,0,21,0,0,0,0,P-MA-1000,P-MDEL-1100,0,0%,No,No
0,P-MPOS-1140,P.O for Rebar Patch#9  (4th floor),Approved Baseline.P.PC.PO.1,Approved Baseline,2,2,4-Jul-26,5-Jul-26,4-Jul-26,5-Jul-26,0,21,0,0,0,0,P-MA-1000,P-MDEL-1090,0,0%,No,No
0,P-MPOS-1150,P.O for Rebar Patch#10  (5th floor),Approved Baseline.P.PC.PO.1,Approved Baseline,2,2,6-Aug-26,8-Aug-26,6-Aug-26,8-Aug-26,0,21,0,0,0,0,P-MA-1000,P-MDEL-1080,0,0%,No,No
0,P-MPOS-1160,P.O for Rebar Patch#11  (6th floor),Approved Baseline.P.PC.PO.1,Approved Baseline,2,2,2-Sep-26,3-Sep-26,2-Sep-26,3-Sep-26,0,22,0,0,0,0,P-MA-1000,P-MDEL-1070,0,0%,No,No
0,P-MPOS-1170,P.O for Rebar Patch#12  (7th floor),Approved Baseline.P.PC.PO.1,Approved Baseline,2,2,5-Oct-26,7-Oct-26,5-Oct-26,7-Oct-26,0,22,0,0,0,0,P-MA-1000,P-MDEL-1190,0,0%,No,No
0,P-MPOS-1180,P.O for Rebar Patch#13  (8th floor),Approved Baseline.P.PC.PO.1,Approved Baseline,2,2,29-Oct-26,31-Oct-26,29-Oct-26,31-Oct-26,0,21,0,0,0,0,P-MA-1000,P-MDEL-1180,0,0%,No,No
0,P-MPOS-1190,P.O for Rebar Patch#14  (Roof floor),Approved Baseline.P.PC.PO.1,Approved Baseline,2,2,28-Nov-26,29-Nov-26,28-Nov-26,29-Nov-26,0,22,0,0,0,0,P-MA-1000,P-MDEL-1200,0,0%,No,No
0,,,,,453,453,21-Oct-25,16-Jan-27,21-Oct-25,16-Jan-27,0,27,0,0,0,0,,,0,,,
0,P-MDEL-1020,Delivery for Plain Concrete,Approved Baseline.P.PC.DS,Approved Baseline,2,2,21-Oct-25,22-Oct-25,21-Oct-25,22-Oct-25,17,23,0,0,0,0,P-MPOS-1020,"CON-B01-FOOT-1000, CON-B02-FOOT-1000, CON-B04-FOOT-1000, CON-B04-WT-1020, CON-B03-FOOT-1000",0,0%,No,No
0,P-MDEL-1010,Delivery for Soil Replacement,Approved Baseline.P.PC.DS,Approved Baseline,2,2,27-Oct-25,28-Oct-25,27-Oct-25,28-Oct-25,0,0,0,0,0,0,P-MPOS-1010,"CON-EW-B01-1000, CON-EW-B02-1000, CON-EW-B03-1000, CON-EW-B04-1000",0,0%,Yes,Yes
0,P-MDEL-1030,Delivery for Rc Concrete,Approved Baseline.P.PC.DS,Approved Baseline,17,17,27-Oct-25,12-Nov-25,27-Oct-25,12-Nov-25,0,4,0,0,0,0,P-MPOS-1030,"CON-B01-FOOT-1010, CON-B01-FOOT-1090, CON-B02-FOOT-1010, CON-B02-FOOT-1090, CON-B04-FOOT-1010, CON-B04-FOOT-1080, CON-B03-FOOT-1010, CON-B03-FOOT-1080, CON-B01-BAS02-1030, CON-B01-BAS02-1130, CON-B01-BAS02-1100, CON-B04-WT-1030, CON-B04-WT-1080, CON-B04-WT-1130, CON-B04-WT-1170, CON-B02-BAS02-1030, CON-B02-BAS02-1100, CON-B02-BAS02-1080, CON-B03-BAS02-1030, CON-B03-BAS02-1100, CON-B03-BAS02-1080, CON-B02-SOG-1050, CON-B01-SOG-1050, CON-B01-BAS01-1030, CON-B01-BAS01-1110, CON-B01-BAS01-1100, CON-B02-BAS01-1030, CON-B02-BAS01-1090, CON-B02-BAS01-1080, CON-B04-BAS01-1030, CON-B04-BAS01-1120, CON-B04-BAS01-1100, CON-B03-BAS01-1030, CON-B03-BAS01-1090, CON-B03-BAS01-1080, CON-B04-SOG-1050, CON-B03-SOG-1050, CON-B01-GR-1030, CON-B01-GR-1090, CON-B01-GR-1080, CON-B02-GR-1030, CON-B02-GR-1100, CON-B02-GR-1080, CON-B04-GR-1030, CON-B04-GR-1080, CON-B04-GR-1090, CON-B03-GR-1030, CON-B03-GR-1080, CON-B03-GR-1090, CON-B01-6TH-1030, CON-B01-6TH-1060, CON-B01-7TH-1030, CON-B01-7TH-1060, CON-B01-8TH-1030, CON-B01-8TH-1060, CON-B01-1ST-1030, CON-B01-1ST-1060, CON-B01-2ND-1030, CON-B01-2ND-1060, CON-B01-3RD-1030, CON-B01-3RD-1060, CON-B01-4TH-1030, CON-B01-4TH-1060, CON-B01-5TH-1030, CON-B01-5TH-1060, CON-B01-9TH-1030, CON-B01-9TH-1060, CON-B02-1ST-1030, CON-B02-1ST-1060, CON-B02-2ND-1030, CON-B02-2ND-1060, CON-B02-3RD-1030, CON-B02-3RD-1060, CON-B02-4TH-1030, CON-B02-4TH-1060, CON-B02-RF-1030, CON-B02-RF-1060, CON-B03-1ST-1030, CON-B03-1ST-1060, CON-B03-2ND-1030, CON-B03-2ND-1060, CON-B03-3RD-1030, CON-B03-3RD-1060, CON-B03-4TH-1030, CON-B03-4TH-1060, CON-B04-1ST-1030, CON-B04-1ST-1060, CON-B04-2ND-1030, CON-B04-2ND-1060, CON-B04-3RD-1030, CON-B04-3RD-1060, CON-B04-4TH-1030, CON-B04-4TH-1060, CON-B04-5TH-1030, CON-B04-5TH-1060, CON-B04-6TH-1030, CON-B04-6TH-1060, CON-B04-7TH-1030, CON-B04-7TH-1060, CON-B04-8TH-1030, CON-B04-8TH-1060, CON-B04-RF-1030, CON-B04-RF-1060, CON-B03-RF-1030, CON-B03-RF-1060, CON-B04-BAS02-1030, CON-B04-BAS02-1130, CON-B04-BAS02-1100, CON-B04-BAS02-1110, CON-B04-BAS01-1110, CON-B01-BAS02-1110, CON-B01-BAS01-1130",0,0%,No,No
0,P-MDEL-1040,Delivery for Waterproofing,Approved Baseline.P.PC.DS,Approved Baseline,28,28,29-Oct-25,25-Nov-25,29-Oct-25,25-Nov-25,0,0,0,0,0,0,P-MPOS-1040,"CON-B01-FOOT-1030, CON-B02-FOOT-1030, CON-B04-FOOT-1030, CON-B03-FOOT-1030, CON-B04-WT-1050, CON-B02-SOG-1020, CON-B01-SOG-1020, CON-B04-SOG-1020, CON-B03-SOG-1020",0,0%,Yes,Yes
0,P-MDEL-1050,Delivery for cold applied damp-proofing,Approved Baseline.P.PC.DS,Approved Baseline,49,49,29-Oct-25,16-Dec-25,29-Oct-25,16-Dec-25,0,0,0,0,0,0,P-MPOS-1050,"CON-B01-FOOT-1110, CON-B02-FOOT-1110, CON-B04-FOOT-1110, CON-B03-FOOT-1110, CON-B04-WT-1120",0,0%,Yes,Yes
0,P-MDEL-1060,Delivery for cold Crystalline waterproofing for Water tank,Approved Baseline.P.PC.DS,Approved Baseline,67,67,3-Dec-25,7-Feb-26,3-Dec-25,7-Feb-26,0,18,0,0,0,0,P-MPOS-1060,CON-B04-WT-1200,0,0%,No,No
0,,,,,441,441,2-Nov-25,16-Jan-27,2-Nov-25,16-Jan-27,0,27,0,0,0,0,,,0,,,
0,P-MDEL-1000,Delivery for Rebar Patch#1 (Footing & Water tank),Approved Baseline.P.PC.DS.DR,Approved Baseline,2,2,2-Nov-25,3-Nov-25,2-Nov-25,3-Nov-25,29,29,0,0,0,0,P-MPOS-1000,"CON-B01-FOOT-1050, CON-B01-FOOT-1070, CON-B02-FOOT-1050, CON-B02-FOOT-1070, CON-B04-FOOT-1050, CON-B04-FOOT-1070, CON-B04-WT-1070, CON-B04-WT-1110, CON-B04-WT-1160, CON-B03-FOOT-1050, CON-B03-FOOT-1070",0,0%,No,No
0,P-MDEL-1170,Delivery for Rebar Patch#2  (Basement 2),Approved Baseline.P.PC.DS.DR,Approved Baseline,2,2,26-Nov-25,27-Nov-25,26-Nov-25,27-Nov-25,27,27,0,0,0,0,P-MPOS-1070,"CON-B01-BAS02-1010, CON-B01-BAS02-1070, CON-B01-BAS02-1080, CON-B02-BAS02-1010, CON-B02-BAS02-1060, CON-B02-BAS02-1070, CON-B03-BAS02-1010, CON-B03-BAS02-1060, CON-B03-BAS02-1070, CON-B04-BAS02-1010, CON-B04-BAS02-1060, CON-B04-BAS02-1080, CON-B01-BAS02-1090, CON-B04-BAS02-1090",0,0%,No,No
0,P-MDEL-1160,Delivery for Rebar Patch#3  (Basement 1),Approved Baseline.P.PC.DS.DR,Approved Baseline,2,2,12-Jan-26,13-Jan-26,12-Jan-26,13-Jan-26,26,26,0,0,0,0,P-MPOS-1080,"CON-B01-BAS01-1010, CON-B01-BAS01-1060, CON-B01-BAS01-1080, CON-B02-BAS01-1010, CON-B02-BAS01-1060, CON-B02-BAS01-1070, CON-B04-BAS01-1010, CON-B04-BAS01-1070, CON-B04-BAS01-1090, CON-B03-BAS01-1010, CON-B03-BAS01-1050, CON-B03-BAS01-1070, CON-B01-BAS01-1090, CON-B04-BAS01-1080",0,0%,No,No
0,P-MDEL-1150,Delivery for Rebar Patch#4  (SOG),Approved Baseline.P.PC.DS.DR,Approved Baseline,2,2,25-Feb-26,26-Feb-26,25-Feb-26,26-Feb-26,39,331,0,0,0,0,P-MPOS-1090,"CON-B02-SOG-1040, CON-B01-SOG-1040, CON-B04-SOG-1040, CON-B03-SOG-1040",0,0%,No,No
0,P-MDEL-1130,Delivery for Rebar Patch#5  (Ground floor),Approved Baseline.P.PC.DS.DR,Approved Baseline,2,2,9-Mar-26,10-Mar-26,9-Mar-26,10-Mar-26,11,11,0,0,0,0,P-MPOS-1100,"CON-B01-GR-1010, CON-B01-GR-1060, CON-B01-GR-1070, CON-B02-GR-1010, CON-B02-GR-1060, CON-B02-GR-1070, CON-B04-GR-1010, CON-B04-GR-1060, CON-B04-GR-1070, CON-B03-GR-1010, CON-B03-GR-1060, CON-B03-GR-1070",0,0%,No,No
0,P-MDEL-1120,Delivery for Rebar Patch#6  (1st floor),Approved Baseline.P.PC.DS.DR,Approved Baseline,2,2,6-Apr-26,7-Apr-26,6-Apr-26,7-Apr-26,25,25,0,0,0,0,P-MPOS-1110,"CON-B01-1ST-1010, CON-B01-1ST-1050, CON-B02-1ST-1010, CON-B02-1ST-1050, CON-B03-1ST-1010, CON-B03-1ST-1050, CON-B04-1ST-1010, CON-B04-1ST-1050",0,0%,No,No
0,P-MDEL-1110,Delivery for Rebar Patch#7  (2nd floor),Approved Baseline.P.PC.DS.DR,Approved Baseline,2,2,20-May-26,21-May-26,20-May-26,21-May-26,25,25,0,0,0,0,P-MPOS-1120,"CON-B01-2ND-1010, CON-B01-2ND-1050, CON-B02-2ND-1010, CON-B02-2ND-1050, CON-B03-2ND-1010, CON-B03-2ND-1050, CON-B04-2ND-1010, CON-B04-2ND-1050",0,0%,No,No
0,P-MDEL-1100,Delivery for Rebar Patch#8  (3rd floor),Approved Baseline.P.PC.DS.DR,Approved Baseline,2,2,28-Jun-26,29-Jun-26,28-Jun-26,29-Jun-26,25,25,0,0,0,0,P-MPOS-1130,"CON-B01-3RD-1010, CON-B01-3RD-1050, CON-B02-3RD-1010, CON-B02-3RD-1050, CON-B03-3RD-1010, CON-B03-3RD-1050, CON-B04-3RD-1010, CON-B04-3RD-1050",0,0%,No,No
0,P-MDEL-1090,Delivery for Rebar Patch#9  (4th floor),Approved Baseline.P.PC.DS.DR,Approved Baseline,2,2,5-Aug-26,6-Aug-26,5-Aug-26,6-Aug-26,26,26,0,0,0,0,P-MPOS-1140,"CON-B01-4TH-1010, CON-B01-4TH-1050, CON-B02-4TH-1010, CON-B02-4TH-1050, CON-B03-4TH-1010, CON-B03-4TH-1050, CON-B04-4TH-1010, CON-B04-4TH-1050",0,0%,No,No
0,P-MDEL-1080,Delivery for Rebar Patch#10  (5th floor),Approved Baseline.P.PC.DS.DR,Approved Baseline,2,2,16-Sep-26,17-Sep-26,16-Sep-26,17-Sep-26,26,26,0,0,0,0,P-MPOS-1150,"CON-B01-5TH-1010, CON-B01-5TH-1050, CON-B04-5TH-1010, CON-B04-5TH-1050",0,0%,No,No
0,P-MDEL-1070,Delivery for Rebar Patch#11  (6th floor),Approved Baseline.P.PC.DS.DR,Approved Baseline,2,2,20-Oct-26,21-Oct-26,20-Oct-26,21-Oct-26,26,26,0,0,0,0,P-MPOS-1160,"CON-B01-6TH-1010, CON-B01-6TH-1050, CON-B04-6TH-1010, CON-B04-6TH-1050",0,0%,No,No
0,P-MDEL-1190,Delivery for Rebar Patch#12  (7th floor),Approved Baseline.P.PC.DS.DR,Approved Baseline,2,2,23-Nov-26,24-Nov-26,23-Nov-26,24-Nov-26,26,26,0,0,0,0,P-MPOS-1170,"CON-B01-7TH-1010, CON-B01-7TH-1050, CON-B04-7TH-1010, CON-B04-7TH-1050",0,0%,No,No
0,P-MDEL-1180,Delivery for Rebar Patch#13  (8th floor),Approved Baseline.P.PC.DS.DR,Approved Baseline,2,2,27-Dec-26,28-Dec-26,27-Dec-26,28-Dec-26,25,25,0,0,0,0,P-MPOS-1180,"CON-B01-8TH-1010, CON-B01-8TH-1050, CON-B04-8TH-1010, CON-B04-8TH-1050",0,0%,No,No
0,P-MDEL-1200,Delivery for Rebar Patch#14  (Roof floor),Approved Baseline.P.PC.DS.DR,Approved Baseline,2,2,15-Jan-27,16-Jan-27,15-Jan-27,16-Jan-27,14,27,0,0,0,0,P-MPOS-1190,"CON-B01-9TH-1010, CON-B01-9TH-1050, CON-B02-RF-1010, CON-B02-RF-1050, CON-B04-RF-1010, CON-B04-RF-1050, CON-B03-RF-1010, CON-B03-RF-1050",0,0%,No,No
0,,,,,505,505,25-Oct-25,13-Mar-27,25-Oct-25,13-Mar-27,0,14,0,0,0,1094,,,1094,,,
0,,,,,55,55,3-Nov-25,5-Jan-26,3-Nov-25,5-Jan-26,0,0,0,0,0,576,,,576,,,
0,,,,,18,18,3-Nov-25,23-Nov-25,3-Nov-25,23-Nov-25,0,0,0,0,0,160,,,160,,,
0,CON-EW-B01-1000,Soil Replacement & Leveling & Compaction (B01),Approved Baseline.CON.EW.B01,Approved Baseline,15,15,3-Nov-25,19-Nov-25,3-Nov-25,19-Nov-25,0,0,0,0,0,140,"KD-MOB-1020, E-APP-B01-REP-1000, P-MDEL-1010","CON-EW-B01-1010, CON-EW-B01-1010, AB-SUB-B01-REP-1000, CON-EW-B02-1000",140,0%,Yes,Yes
0,CON-EW-B01-1010,Soil Compaction Test (B01),Approved Baseline.CON.EW.B01,Approved Baseline,15,15,6-Nov-25,23-Nov-25,6-Nov-25,23-Nov-25,0,0,0,0,0,20,"CON-EW-B01-1000, CON-EW-B01-1000","CON-B01-FOOT-1000, AB-SUB-B01-REP-1000",20,0%,Yes,Yes
0,,,,,23,23,12-Nov-25,8-Dec-25,12-Nov-25,8-Dec-25,0,0,0,0,0,160,,,160,,,
0,CON-EW-B02-1000,Soil Replacement & Leveling & Compaction (B02),Approved Baseline.CON.EW.B02,Approved Baseline,20,20,12-Nov-25,4-Dec-25,12-Nov-25,4-Dec-25,0,0,0,0,0,140,"E-APP-B02-REP-1000, P-MDEL-1010, CON-EW-B01-1000","CON-EW-B02-1010, CON-EW-B02-1010, AB-SUB-B02-REP-1000, CON-EW-B03-1000",140,0%,Yes,Yes
0,CON-EW-B02-1010,Soil Compaction Test (B02),Approved Baseline.CON.EW.B02,Approved Baseline,20,20,16-Nov-25,8-Dec-25,16-Nov-25,8-Dec-25,0,0,0,0,0,20,"CON-EW-B02-1000, CON-EW-B02-1000","CON-B02-FOOT-1000, AB-SUB-B02-REP-1000",20,0%,Yes,Yes
0,,,,,23,23,29-Nov-25,24-Dec-25,29-Nov-25,24-Dec-25,0,0,0,0,0,160,,,160,,,
0,CON-EW-B03-1000,Soil Replacement & Leveling & Compaction (B03),Approved Baseline.CON.EW.B03,Approved Baseline,20,20,29-Nov-25,21-Dec-25,29-Nov-25,21-Dec-25,0,0,0,0,0,140,"E-APP-B03-REP-1000, P-MDEL-1010, CON-EW-B02-1000","CON-EW-B03-1010, CON-EW-B03-1010, AB-SUB-B03-REP-1000",140,0%,Yes,Yes
0,CON-EW-B03-1010,Soil Compaction Test (B03),Approved Baseline.CON.EW.B03,Approved Baseline,20,20,2-Dec-25,24-Dec-25,2-Dec-25,24-Dec-25,0,0,0,0,0,20,"CON-EW-B03-1000, CON-EW-B03-1000","CON-B03-FOOT-1000, AB-SUB-B03-REP-1000",20,0%,Yes,Yes
0,,,,,9,9,27-Dec-25,5-Jan-26,27-Dec-25,5-Jan-26,0,0,0,0,0,96,,,96,,,
0,CON-EW-B04-1000,Soil Replacement & Leveling & Compaction (B04),Approved Baseline.CON.EW.B04,Approved Baseline,7,7,27-Dec-25,3-Jan-26,27-Dec-25,3-Jan-26,0,0,0,0,0,84,"E-APP-B04-REP-1000, P-MDEL-1010, CON-B04-WT-1140","CON-EW-B04-1010, CON-EW-B04-1010, AB-SUB-B04-REP-1000",84,0%,Yes,Yes
0,CON-EW-B04-1010,Soil Compaction Test (B04),Approved Baseline.CON.EW.B04,Approved Baseline,7,7,29-Dec-25,5-Jan-26,29-Dec-25,5-Jan-26,0,0,0,0,0,12,"CON-EW-B04-1000, CON-EW-B04-1000","CON-B04-FOOT-1000, AB-SUB-B04-REP-1000",12,0%,Yes,Yes
0,,,,,473,473,26-Nov-25,13-Mar-27,26-Nov-25,13-Mar-27,0,14,0,0,0,231,,,231,,,
0,,,,,473,473,26-Nov-25,13-Mar-27,26-Nov-25,13-Mar-27,0,14,0,0,0,129,,,129,,,
0,,,,,189,189,26-Nov-25,2-Jun-26,26-Nov-25,2-Jun-26,0,298,0,0,0,120,,,120,,,
0,,,,,35,35,26-Nov-25,30-Dec-25,26-Nov-25,30-Dec-25,0,365,0,0,0,62,,,62,,,
0,CON-B01-FOOT-1000,Shuttering for PC Raft (B01) (footing),Approved Baseline.CON.P02.B01.SUB.F,Approved Baseline,1,1,26-Nov-25,26-Nov-25,26-Nov-25,26-Nov-25,0,0,0,0,0,0,"CON-EW-B01-1010, E-APP-B01-FOOT-1000, P-MDEL-1020",CON-B01-FOOT-1010,0,0%,Yes,Yes
0,CON-B01-FOOT-1010,Pouring for PC Raft (B01) (footing),Approved Baseline.CON.P02.B01.SUB.F,Approved Baseline,1,1,27-Nov-25,27-Nov-25,27-Nov-25,27-Nov-25,0,0,0,0,0,0,"CON-B01-FOOT-1000, P-MDEL-1030","CON-B01-FOOT-1020, AB-SUB-B01-FOOT-1000",0,0%,Yes,Yes
0,CON-B01-FOOT-1020,Curing for PC Raft (B01) (footing),Approved Baseline.CON.P02.B01.SUB.F,Approved Baseline,3,3,28-Nov-25,30-Nov-25,28-Nov-25,30-Nov-25,0,0,0,0,0,0,CON-B01-FOOT-1010,"CON-B01-FOOT-1030, CON-B01-FOOT-1030",0,0%,Yes,Yes
0,CON-B01-FOOT-1030,Waterproofing & Ins. Protection works (B01) (footing),Approved Baseline.CON.P02.B01.SUB.F,Approved Baseline,2,2,1-Dec-25,2-Dec-25,1-Dec-25,2-Dec-25,0,0,0,0,0,0,"CON-B01-FOOT-1020, P-MDEL-1040, E-APP-B01-FOOT-1030, CON-B01-FOOT-1020","AB-SUB-B01-FOOT-1010, CON-B01-FOOT-1040",0,0%,Yes,Yes
0,CON-B01-FOOT-1040,Shuttering for RC Raft & Footings (B01) (footing),Approved Baseline.CON.P02.B01.SUB.F,Approved Baseline,12,12,3-Dec-25,16-Dec-25,3-Dec-25,16-Dec-25,0,0,0,0,0,0,"E-APP-B01-FOOT-1010, CON-B01-FOOT-1030","CON-B01-FOOT-1050, CON-B01-FOOT-1050, CON-B01-FOOT-1060",0,0%,Yes,Yes
0,CON-B01-FOOT-1050,RFT for RC Raft & Footings (B01) (footing),Approved Baseline.CON.P02.B01.SUB.F,Approved Baseline,12,12,6-Dec-25,18-Dec-25,6-Dec-25,18-Dec-25,0,0,0,0,0,12,"CON-B01-FOOT-1040, E-APP-B01-FOOT-1020, CON-B01-FOOT-1040, P-MDEL-1000",CON-B01-FOOT-1090,12,0%,Yes,Yes
0,CON-B01-FOOT-1060,Shuttering for Columns & Walls Below SOG (B01) (footing),Approved Baseline.CON.P02.B01.SUB.F,Approved Baseline,8,8,8-Dec-25,16-Dec-25,8-Dec-25,16-Dec-25,0,2,0,0,0,0,"CON-B01-FOOT-1040, E-APP-B01-FOOT-1010","CON-B01-FOOT-1070, CON-B01-FOOT-1070",0,0%,No,No
0,CON-B01-FOOT-1070,RFT for Columns & Walls Below SOG (B01) (footing),Approved Baseline.CON.P02.B01.SUB.F,Approved Baseline,8,8,9-Dec-25,17-Dec-25,9-Dec-25,17-Dec-25,0,2,0,0,0,8,"CON-B01-FOOT-1060, CON-B01-FOOT-1060, E-APP-B01-FOOT-1020, P-MDEL-1000",CON-B01-FOOT-1080,8,0%,No,No
0,CON-B01-FOOT-1080,Pouring Columns & Walls Below SOG (B01) (footing),Approved Baseline.CON.P02.B01.SUB.F,Approved Baseline,1,1,18-Dec-25,18-Dec-25,18-Dec-25,18-Dec-25,2,2,0,0,0,0,CON-B01-FOOT-1070,CON-B01-FOOT-1100,0,0%,No,No
0,CON-B01-FOOT-1090,Pouring for RC Raft & Footings (B01) (footing),Approved Baseline.CON.P02.B01.SUB.F,Approved Baseline,2,2,20-Dec-25,21-Dec-25,20-Dec-25,21-Dec-25,0,0,0,0,0,0,"CON-B01-FOOT-1050, P-MDEL-1030","CON-B01-FOOT-1100, AB-SUB-B01-FOOT-1020, AB-SUB-B01-FOOT-1030",0,0%,Yes,Yes
0,CON-B01-FOOT-1100,Curing & Deshuttering for RC Raft & Footings (B01) (footing),Approved Baseline.CON.P02.B01.SUB.F,Approved Baseline,3,3,22-Dec-25,24-Dec-25,22-Dec-25,24-Dec-25,0,0,0,0,0,0,"CON-B01-FOOT-1090, CON-B01-FOOT-1080","CON-B01-FOOT-1110, CON-B01-BAS02-1000",0,0%,Yes,Yes
0,CON-B01-FOOT-1110,Bitumen Ins. for RC Raft & Footings (B01) (footing),Approved Baseline.CON.P02.B01.SUB.F,Approved Baseline,3,3,25-Dec-25,28-Dec-25,25-Dec-25,28-Dec-25,0,298,0,0,0,0,"P-MDEL-1050, E-APP-B01-FOOT-1030, CON-B01-FOOT-1100",CON-B01-FOOT-1120,0,0%,No,No
0,CON-B01-FOOT-1120,Soil Backfilling (B01) (footing),Approved Baseline.CON.P02.B01.SUB.F,Approved Baseline,2,2,29-Dec-25,30-Dec-25,29-Dec-25,30-Dec-25,83,298,0,0,0,42,CON-B01-FOOT-1110,CON-B01-SOG-1000,42,0%,No,No
0,,,,,160,160,25-Dec-25,2-Jun-26,25-Dec-25,2-Jun-26,0,298,0,0,0,57,,,57,,,
0,CON-B01-BAS02-1000,"Scaffolding works for Walls, Col. & Cores (B01) (Bas 02)",Approved Baseline.CON.P02.B01.SUB.2ndB,Approved Baseline,7,7,25-Dec-25,1-Jan-26,25-Dec-25,1-Jan-26,0,0,0,0,0,0,CON-B01-FOOT-1100,"CON-B01-BAS02-1010, CON-B01-BAS02-1010",0,0%,Yes,Yes
0,CON-B01-BAS02-1010,"RFT for Walls, Col. & Cores (B01) (Bas 02)",Approved Baseline.CON.P02.B01.SUB.2ndB,Approved Baseline,15,15,25-Dec-25,12-Jan-26,25-Dec-25,12-Jan-26,0,0,0,0,0,1,"CON-B01-BAS02-1000, CON-B01-BAS02-1000, E-APP-B01-BAS02-1000, P-MDEL-1170","CON-B01-BAS02-1020, CON-B01-BAS02-1020",1,0%,Yes,Yes
0,CON-B01-BAS02-1020,"Shuttering for Walls, Col. & Cores (B01) (Bas 02)",Approved Baseline.CON.P02.B01.SUB.2ndB,Approved Baseline,15,15,29-Dec-25,15-Jan-26,29-Dec-25,15-Jan-26,0,0,0,0,0,0,"CON-B01-BAS02-1010, CON-B01-BAS02-1010, E-APP-B01-BAS02-1000",CON-B01-BAS02-1030,0,0%,Yes,Yes
0,CON-B01-BAS02-1030,"Pouring for Walls, Col. & Cores (B01) (Bas 02)",Approved Baseline.CON.P02.B01.SUB.2ndB,Approved Baseline,2,2,17-Jan-26,18-Jan-26,17-Jan-26,18-Jan-26,0,0,0,0,0,0,"CON-B01-BAS02-1020, P-MDEL-1030","CON-B01-BAS02-1040, AB-SUB-B01-BAS2-1000, CON-B01-BAS02-1060",0,0%,Yes,Yes
0,CON-B01-BAS02-1040,Shuttering for Slabs & Beams (B01) (Bas 02),Approved Baseline.CON.P02.B01.SUB.2ndB,Approved Baseline,10,10,19-Jan-26,31-Jan-26,19-Jan-26,31-Jan-26,0,0,0,0,0,0,"E-APP-B01-BAS02-1040, E-APP-B01-BAS02-1030, CON-B01-BAS02-1030","CON-B01-BAS02-1070, CON-B01-BAS02-1050, CON-B01-BAS02-1070",0,0%,Yes,Yes
0,CON-B01-BAS02-1050,Shuttering for Stairs  (B01) (Bas 02),Approved Baseline.CON.P02.B01.SUB.2ndB,Approved Baseline,8,8,21-Jan-26,31-Jan-26,21-Jan-26,31-Jan-26,0,3,0,0,0,0,"E-APP-B01-BAS02-1010, CON-B01-BAS02-1040","CON-B01-BAS02-1080, CON-B01-BAS02-1080",0,0%,No,No
0,CON-B01-BAS02-1060,Shuttering for  Ramps (B01) (Bas 02),Approved Baseline.CON.P02.B01.SUB.2ndB,Approved Baseline,10,10,21-Jan-26,2-Feb-26,21-Jan-26,2-Feb-26,0,1,0,0,0,0,"E-APP-B01-BAS02-1020, CON-B01-BAS02-1030","CON-B01-BAS02-1090, CON-B01-BAS02-1090",0,0%,No,No
0,CON-B01-BAS02-1070,RFT for Slabs & Beams (B01) (Bas 02),Approved Baseline.CON.P02.B01.SUB.2ndB,Approved Baseline,10,10,22-Jan-26,3-Feb-26,22-Jan-26,3-Feb-26,0,0,0,0,0,0,"CON-B01-BAS02-1040, CON-B01-BAS02-1040, E-APP-B01-BAS02-1030, E-APP-B01-BAS02-1040, P-MDEL-1170",CON-B01-BAS02-1130,0,0%,Yes,Yes
0,CON-B01-BAS02-1080,RFT for Stairs (B01) (Bas 02),Approved Baseline.CON.P02.B01.SUB.2ndB,Approved Baseline,6,6,24-Jan-26,31-Jan-26,24-Jan-26,31-Jan-26,0,3,0,0,0,0,"CON-B01-BAS02-1050, CON-B01-BAS02-1050, E-APP-B01-BAS02-1010, P-MDEL-1170",CON-B01-BAS02-1100,0,0%,No,No
0,CON-B01-BAS02-1090,RFT for Ramps (B01) (Bas 02),Approved Baseline.CON.P02.B01.SUB.2ndB,Approved Baseline,8,8,24-Jan-26,2-Feb-26,24-Jan-26,2-Feb-26,0,1,0,0,0,0,"CON-B01-BAS02-1060, CON-B01-BAS02-1060, E-APP-B01-BAS02-1020, P-MDEL-1170",CON-B01-BAS02-1110,0,0%,No,No
0,CON-B01-BAS02-1100,Pouring for Stairs (B01) (Bas 02),Approved Baseline.CON.P02.B01.SUB.2ndB,Approved Baseline,2,2,1-Feb-26,2-Feb-26,1-Feb-26,2-Feb-26,0,3,0,0,0,0,"CON-B01-BAS02-1080, P-MDEL-1030","AB-SUB-B01-BAS2-1010, 123456",0,0%,No,No
0,CON-B01-BAS02-1110,Pouring for  Ramps (B01) (Bas 02),Approved Baseline.CON.P02.B01.SUB.2ndB,Approved Baseline,2,2,3-Feb-26,4-Feb-26,3-Feb-26,4-Feb-26,0,1,0,0,0,0,"CON-B01-BAS02-1090, P-MDEL-1030","AB-SUB-B01-BAS2-1020, 123456",0,0%,No,No
0,CON-B01-BAS02-1130,Pouring for Slabs & Beams (B01) (Bas 02),Approved Baseline.CON.P02.B01.SUB.2ndB,Approved Baseline,2,2,4-Feb-26,5-Feb-26,4-Feb-26,5-Feb-26,0,0,0,0,0,0,"CON-B01-BAS02-1070, P-MDEL-1030","CON-B01-BAS02-1140, AB-SUB-B01-BAS2-1040, AB-SUB-B01-BAS2-1030, CON-B01-BAS02-1120",0,0%,Yes,Yes
0,123456,Curing for Ramps & Stairs (B01) (Bas 02),Approved Baseline.CON.P02.B01.SUB.2ndB,Approved Baseline,3,3,5-Feb-26,7-Feb-26,5-Feb-26,7-Feb-26,1,1,0,0,0,0,"CON-B01-BAS02-1100, CON-B01-BAS02-1110",CON-B01-BAS01-1000,0,0%,No,No
0,CON-B01-BAS02-1120,"Curing for Slabs, Beams, Ramps & Stairs (B01) (Bas 02)",Approved Baseline.CON.P02.B01.SUB.2ndB,Approved Baseline,3,3,6-Feb-26,8-Feb-26,6-Feb-26,8-Feb-26,0,0,0,0,0,0,CON-B01-BAS02-1130,CON-B01-BAS01-1000,0,0%,Yes,Yes
0,CON-B01-BAS02-1140,Dismantling Formwork (B01) (Bas 02),Approved Baseline.CON.P02.B01.SUB.2ndB,Approved Baseline,1,1,23-Feb-26,23-Feb-26,23-Feb-26,23-Feb-26,0,7,0,0,0,0,CON-B01-BAS02-1130,"CON-B01-BAS01-1060, CON-B01-SOG-1000",0,0%,No,No
0,,,,,49,49,15-Apr-26,2-Jun-26,15-Apr-26,2-Jun-26,0,298,0,0,0,56,,,56,,,
0,CON-B01-SOG-1000,Soil Backfilling & Compaction (B01) (Sog),Approved Baseline.CON.P02.B01.SUB.2ndB.SOG,Approved Baseline,7,7,15-Apr-26,22-Apr-26,15-Apr-26,22-Apr-26,0,215,0,0,0,49,"CON-B01-BAS02-1140, CON-B01-FOOT-1120","CON-B01-SOG-1010, CON-B02-SOG-1000, CON-B01-SOG-1010",49,0%,No,No
0,CON-B01-SOG-1010,Soil Compaction Test (B01) (Sog),Approved Baseline.CON.P02.B01.SUB.2ndB.SOG,Approved Baseline,7,7,18-Apr-26,25-Apr-26,18-Apr-26,25-Apr-26,0,215,0,0,0,7,"CON-B01-SOG-1000, CON-B01-SOG-1000","CON-B01-SOG-1020, CON-B02-SOG-1010, CON-B01-SOG-1020",7,0%,No,No
0,CON-B01-SOG-1020,DPM Layer works (B01) (Sog),Approved Baseline.CON.P02.B01.SUB.2ndB.SOG,Approved Baseline,15,15,26-Apr-26,12-May-26,26-Apr-26,12-May-26,0,215,0,0,0,0,"CON-B01-SOG-1010, P-MDEL-1040, E-APP-B01-FOOT-1030, CON-B01-SOG-1010","CON-B01-SOG-1030, CON-B01-SOG-1030",0,0%,No,No
0,CON-B01-SOG-1030,Blinding Concrete works (B01) (Sog),Approved Baseline.CON.P02.B01.SUB.2ndB.SOG,Approved Baseline,12,12,2-May-26,14-May-26,2-May-26,14-May-26,0,215,0,0,0,0,"CON-B01-SOG-1020, CON-B01-SOG-1020","CON-B01-SOG-1040, CON-B01-SOG-1040, CON-B02-SOG-1030",0,0%,No,No
0,CON-B01-SOG-1040,Shuttering & RFT for S.O.G (B01) (Sog),Approved Baseline.CON.P02.B01.SUB.2ndB.SOG,Approved Baseline,15,15,7-May-26,24-May-26,7-May-26,24-May-26,0,215,0,0,0,0,"CON-B01-SOG-1030, CON-B01-SOG-1030, E-APP-B01-SOG-1010, E-APP-B01-SOG-1000, P-MDEL-1150","CON-B01-SOG-1050, CON-B01-SOG-1050, CON-B02-SOG-1040, AB-SUB-B01-SOG-1000",0,0%,No,No
0,CON-B01-SOG-1050,Pouring for S.O.G (B01) (Sog),Approved Baseline.CON.P02.B01.SUB.2ndB.SOG,Approved Baseline,12,12,16-May-26,2-Jun-26,16-May-26,2-Jun-26,0,218,0,0,0,0,"CON-B01-SOG-1040, CON-B01-SOG-1040, P-MDEL-1030","CON-B01-SOG-1060, CON-B01-SOG-1060, CON-B02-SOG-1050, AB-SUB-B01-SOG-1010",0,0%,No,No
0,CON-B01-SOG-1060,Curing & Smoothing Surface for S.O.G (B01) (Sog),Approved Baseline.CON.P02.B01.SUB.2ndB.SOG,Approved Baseline,12,12,22-May-26,2-Jun-26,22-May-26,2-Jun-26,298,298,0,0,0,0,"CON-B01-SOG-1050, CON-B01-SOG-1050",HO-1010,0,0%,No,No
0,,,,,58,58,9-Feb-26,7-Apr-26,9-Feb-26,7-Apr-26,0,0,0,0,0,1,,,1,,,
0,CON-B01-BAS01-1000,"Scaffolding works for Walls, Col. & Cores (B01) (Bas 01)",Approved Baseline.CON.P02.B01.SUB.1stB,Approved Baseline,7,7,9-Feb-26,16-Feb-26,9-Feb-26,16-Feb-26,0,0,0,0,0,0,"CON-B01-BAS02-1120, 123456","CON-B01-BAS01-1010, CON-B01-BAS01-1010",0,0%,Yes,Yes
0,CON-B01-BAS01-1010,"RFT for Walls, Col. & Cores (B01) (Bas 01)",Approved Baseline.CON.P02.B01.SUB.1stB,Approved Baseline,12,12,9-Feb-26,22-Feb-26,9-Feb-26,22-Feb-26,0,0,0,0,0,1,"CON-B01-BAS01-1000, CON-B01-BAS01-1000, E-APP-B01-BAS01-1000, P-MDEL-1160","CON-B01-BAS01-1020, CON-B01-BAS01-1030, CON-B01-BAS01-1020",1,0%,Yes,Yes
0,CON-B01-BAS01-1020,"Shuttering for Walls, Col. & Cores (B01) (Bas 01)",Approved Baseline.CON.P02.B01.SUB.1stB,Approved Baseline,12,12,12-Feb-26,25-Feb-26,12-Feb-26,25-Feb-26,0,0,0,0,0,0,"CON-B01-BAS01-1010, CON-B01-BAS01-1010, E-APP-B01-BAS01-1000",CON-B01-BAS01-1030,0,0%,Yes,Yes
0,CON-B01-BAS01-1030,"Pouring for Walls, Col. & Cores (B01) (Bas 01)",Approved Baseline.CON.P02.B01.SUB.1stB,Approved Baseline,2,2,26-Feb-26,28-Feb-26,26-Feb-26,28-Feb-26,0,0,0,0,0,0,"CON-B01-BAS01-1020, CON-B01-BAS01-1010, P-MDEL-1030","CON-B01-BAS01-1040, AB-SUB-B01-BAS1-1000",0,0%,Yes,Yes
0,CON-B01-BAS01-1040,Shuttering for Slabs & Beams (B01) (Bas 01),Approved Baseline.CON.P02.B01.SUB.1stB,Approved Baseline,8,8,1-Mar-26,9-Mar-26,1-Mar-26,9-Mar-26,0,0,0,0,0,0,"E-APP-B01-BAS01-1040, E-APP-B01-BAS01-1030, CON-B01-BAS01-1030","CON-B01-BAS01-1050, CON-B01-BAS01-1060, CON-B01-BAS01-1060",0,0%,Yes,Yes
0,CON-B01-BAS01-1050,Shuttering for Stairs  (B01) (Bas 01),Approved Baseline.CON.P02.B01.SUB.1stB,Approved Baseline,8,8,3-Mar-26,11-Mar-26,3-Mar-26,11-Mar-26,0,10,0,0,0,0,"CON-B01-BAS01-1040, E-APP-B01-BAS01-1010","CON-B01-BAS01-1080, CON-B01-BAS01-1070, CON-B01-BAS01-1080",0,0%,No,No
0,CON-B01-BAS01-1060,RFT for Slabs & Beams (B01) (Bas 01),Approved Baseline.CON.P02.B01.SUB.1stB,Approved Baseline,10,10,3-Mar-26,14-Mar-26,3-Mar-26,14-Mar-26,0,0,0,0,0,0,"CON-B01-BAS01-1040, CON-B01-BAS01-1040, CON-B01-BAS02-1140, E-APP-B01-BAS01-1030, E-APP-B01-BAS01-1040, P-MDEL-1160",CON-B01-BAS01-1110,0,0%,Yes,Yes
0,CON-B01-BAS01-1070,Shuttering for  Ramps (B01) (Bas 01),Approved Baseline.CON.P02.B01.SUB.1stB,Approved Baseline,8,8,4-Mar-26,12-Mar-26,4-Mar-26,12-Mar-26,0,10,0,0,0,0,"CON-B01-BAS01-1050, E-APP-B01-BAS01-1020","CON-B01-BAS01-1090, CON-B01-BAS01-1090",0,0%,No,No
0,CON-B01-BAS01-1080,RFT for Stairs  (B01) (Bas 01),Approved Baseline.CON.P02.B01.SUB.1stB,Approved Baseline,6,6,7-Mar-26,12-Mar-26,7-Mar-26,12-Mar-26,0,12,0,0,0,0,"CON-B01-BAS01-1050, CON-B01-BAS01-1050, E-APP-B01-BAS01-1010, P-MDEL-1160",CON-B01-BAS01-1100,0,0%,No,No
0,CON-B01-BAS01-1090,RFT for  Ramps (B01) (Bas 01),Approved Baseline.CON.P02.B01.SUB.1stB,Approved Baseline,8,8,7-Mar-26,15-Mar-26,7-Mar-26,15-Mar-26,0,10,0,0,0,0,"CON-B01-BAS01-1070, CON-B01-BAS01-1070, E-APP-B01-BAS01-1020, P-MDEL-1160",CON-B01-BAS01-1130,0,0%,No,No
0,CON-B01-BAS01-1100,Pouring for Stairs  (B01) (Bas 01),Approved Baseline.CON.P02.B01.SUB.1stB,Approved Baseline,2,2,14-Mar-26,15-Mar-26,14-Mar-26,15-Mar-26,0,12,0,0,0,0,"CON-B01-BAS01-1080, P-MDEL-1030","CON-B01-BAS01-1120, AB-SUB-B01-BAS1-1010, CON-B01-BAS01-1150",0,0%,No,No
0,CON-B01-BAS01-1110,Pouring for Slabs & Beams (B01) (Bas 01),Approved Baseline.CON.P02.B01.SUB.1stB,Approved Baseline,2,2,15-Mar-26,21-Mar-26,15-Mar-26,21-Mar-26,0,0,0,0,0,0,"CON-B01-BAS01-1060, P-MDEL-1030","CON-B01-BAS01-1140, AB-SUB-B01-BAS1-1030, AB-SUB-B01-BAS1-1020, CON-B01-GR-1000",0,0%,Yes,Yes
0,CON-B01-BAS01-1120,"Curing for Slabs, Beams (B01) (Bas 01)",Approved Baseline.CON.P02.B01.SUB.1stB,Approved Baseline,3,3,16-Mar-26,18-Mar-26,16-Mar-26,18-Mar-26,19,19,0,0,0,0,CON-B01-BAS01-1100,CON-B01-BAS01-1140,0,0%,No,No
0,CON-B01-BAS01-1130,Pouring for  Ramps (B01) (Bas 01),Approved Baseline.CON.P02.B01.SUB.1stB,Approved Baseline,2,2,21-Mar-26,22-Mar-26,21-Mar-26,22-Mar-26,0,10,0,0,0,0,"CON-B01-BAS01-1090, P-MDEL-1030","AB-SUB-B01-BAS1-1040, CON-B01-BAS01-1140, CON-B01-BAS01-1150",0,0%,No,No
0,CON-B01-BAS01-1150,Curing for  Ramps & Stairs (B01) (Bas 01),Approved Baseline.CON.P02.B01.SUB.1stB,Approved Baseline,3,3,23-Mar-26,25-Mar-26,23-Mar-26,25-Mar-26,12,12,0,0,0,0,"CON-B01-BAS01-1100, CON-B01-BAS01-1130",CON-B01-BAS01-1140,0,0%,No,No
0,CON-B01-BAS01-1140,Dismantling Formwork (B01) (Bas 01),Approved Baseline.CON.P02.B01.SUB.1stB,Approved Baseline,1,1,7-Apr-26,7-Apr-26,7-Apr-26,7-Apr-26,0,0,0,0,0,0,"CON-B01-BAS01-1110, CON-B01-BAS01-1120, CON-B01-BAS01-1130, CON-B01-BAS01-1150",CON-B01-GR-1040,0,0%,Yes,No
0,,,,,357,357,22-Mar-26,13-Mar-27,22-Mar-26,13-Mar-27,0,0,0,0,0,9,,,9,,,
0,,,,,55,55,22-Mar-26,15-May-26,22-Mar-26,15-May-26,0,1,0,0,0,1,,,1,,,
0,CON-B01-GR-1000,"Scaffolding works for Walls, Col. & Cores (B01) (GR)",Approved Baseline.CON.P02.B01.SUP.GF,Approved Baseline,7,7,22-Mar-26,29-Mar-26,22-Mar-26,29-Mar-26,0,0,0,0,0,0,CON-B01-BAS01-1110,"CON-B01-GR-1010, CON-B01-GR-1010",0,0%,Yes,Yes
0,CON-B01-GR-1010,"RFT for Walls, Col. & Cores (B01) (GR)",Approved Baseline.CON.P02.B01.SUP.GF,Approved Baseline,10,10,22-Mar-26,1-Apr-26,22-Mar-26,1-Apr-26,0,0,0,0,0,1,"CON-B01-GR-1000, CON-B01-GR-1000, E-APP-B01-GR-1000, P-MDEL-1130","CON-B01-GR-1020, CON-B01-GR-1020",1,0%,Yes,Yes
0,CON-B01-GR-1020,"Shuttering for Walls, Col. & Cores (B01) (GR)",Approved Baseline.CON.P02.B01.SUP.GF,Approved Baseline,10,10,24-Mar-26,4-Apr-26,24-Mar-26,4-Apr-26,0,0,0,0,0,0,"CON-B01-GR-1010, CON-B01-GR-1010, E-APP-B01-GR-1000",CON-B01-GR-1030,0,0%,Yes,Yes
0,CON-B01-GR-1030,"Pouring for Walls, Col. & Cores (B01) (GR)",Approved Baseline.CON.P02.B01.SUP.GF,Approved Baseline,2,2,5-Apr-26,6-Apr-26,5-Apr-26,6-Apr-26,0,0,0,0,0,0,"CON-B01-GR-1020, P-MDEL-1030","AB-SUB-B01-GR-1000, CON-B01-GR-1040, CON-B01-GR-1050",0,0%,Yes,Yes
0,CON-B01-GR-1050,Shuttering for Stairs  (B01) (GR),Approved Baseline.CON.P02.B01.SUP.GF,Approved Baseline,8,8,9-Apr-26,19-Apr-26,9-Apr-26,19-Apr-26,0,0,0,0,0,0,"E-APP-B01-GR-1010, CON-B01-GR-1030","CON-B01-GR-1070, CON-B01-GR-1070",0,0%,Yes,Yes
0,CON-B01-GR-1070,RFT for Stairs  (B01) (GR),Approved Baseline.CON.P02.B01.SUP.GF,Approved Baseline,8,8,12-Apr-26,21-Apr-26,12-Apr-26,21-Apr-26,0,0,0,0,0,0,"CON-B01-GR-1050, CON-B01-GR-1050, E-APP-B01-GR-1010, P-MDEL-1130",CON-B01-GR-1080,0,0%,Yes,Yes
0,CON-B01-GR-1040,Shuttering for Slabs & Beams (B01) (GR),Approved Baseline.CON.P02.B01.SUP.GF,Approved Baseline,8,8,12-Apr-26,21-Apr-26,12-Apr-26,21-Apr-26,0,0,0,0,0,0,"E-APP-B01-GR-1030, E-APP-B01-GR-1020, CON-B01-GR-1030, CON-B01-BAS01-1140","CON-B01-GR-1060, CON-B01-GR-1060",0,0%,Yes,No
0,CON-B01-GR-1060,RFT for Slabs & Beams (B01) (GR),Approved Baseline.CON.P02.B01.SUP.GF,Approved Baseline,10,10,15-Apr-26,26-Apr-26,15-Apr-26,26-Apr-26,0,0,0,0,0,0,"CON-B01-GR-1040, CON-B01-GR-1040, E-APP-B01-GR-1020, E-APP-B01-GR-1030, P-MDEL-1130",CON-B01-GR-1090,0,0%,Yes,No
0,CON-B01-GR-1080,Pouring for Stairs  (B01) (GR),Approved Baseline.CON.P02.B01.SUP.GF,Approved Baseline,2,2,22-Apr-26,23-Apr-26,22-Apr-26,23-Apr-26,0,0,0,0,0,0,"CON-B01-GR-1070, P-MDEL-1030","CON-B01-GR-1100, AB-SUB-B01-GR-1010",0,0%,Yes,Yes
0,CON-B01-GR-1100,"Curing for Slabs, Beams & Stairs (B01) (GR)",Approved Baseline.CON.P02.B01.SUP.GF,Approved Baseline,5,5,24-Apr-26,28-Apr-26,24-Apr-26,28-Apr-26,0,0,0,0,0,0,CON-B01-GR-1080,CON-B01-1ST-1000,0,0%,Yes,Yes
0,CON-B01-GR-1090,Pouring for Slabs & Beams (B01) (GR),Approved Baseline.CON.P02.B01.SUP.GF,Approved Baseline,2,2,27-Apr-26,28-Apr-26,27-Apr-26,28-Apr-26,0,0,0,0,0,0,"CON-B01-GR-1060, P-MDEL-1030","CON-B01-GR-1110, KD-MS-1040, AB-SUB-B01-GR-1030, AB-SUB-B01-GR-1020",0,0%,Yes,No
0,CON-B01-GR-1110,Dismantling Formwork (B01) (GR),Approved Baseline.CON.P02.B01.SUP.GF,Approved Baseline,1,1,15-May-26,15-May-26,15-May-26,15-May-26,1,1,0,0,0,0,CON-B01-GR-1090,CON-B01-1ST-1040,0,0%,No,No
0,,,,,58,58,29-Apr-26,25-Jun-26,29-Apr-26,25-Jun-26,0,5,0,0,0,1,,,1,,,
0,CON-B01-1ST-1000,"Scaffolding works for Walls, Col. & Cores (B01) (1st)",Approved Baseline.CON.P02.B01.SUP.1stF,Approved Baseline,5,5,29-Apr-26,4-May-26,29-Apr-26,4-May-26,0,0,0,0,0,0,CON-B01-GR-1100,"CON-B01-1ST-1010, CON-B01-1ST-1010",0,0%,Yes,Yes
0,CON-B01-1ST-1010,"RFT for Walls, Col. & Cores (B01) (1st)",Approved Baseline.CON.P02.B01.SUP.1stF,Approved Baseline,7,7,3-May-26,10-May-26,3-May-26,10-May-26,0,0,0,0,0,1,"CON-B01-1ST-1000, CON-B01-1ST-1000, E-APP-B01-1ST-1000, P-MDEL-1120","CON-B01-1ST-1020, CON-B01-1ST-1020",1,0%,Yes,Yes
0,CON-B01-1ST-1020,"Shuttering for Walls, Col. & Cores (B01) (1st)",Approved Baseline.CON.P02.B01.SUP.1stF,Approved Baseline,7,7,6-May-26,13-May-26,6-May-26,13-May-26,0,0,0,0,0,0,"CON-B01-1ST-1010, CON-B01-1ST-1010, E-APP-B01-1ST-1000",CON-B01-1ST-1030,0,0%,Yes,Yes
0,CON-B01-1ST-1030,"Pouring for Walls, Col. & Cores (B01) (1st)",Approved Baseline.CON.P02.B01.SUP.1stF,Approved Baseline,2,2,14-May-26,16-May-26,14-May-26,16-May-26,0,0,0,0,0,0,"CON-B01-1ST-1020, P-MDEL-1030","CON-B01-1ST-1040, AB-SUB-B01-1ST-1000",0,0%,Yes,Yes
0,CON-B01-1ST-1040,"Shuttering for Slabs, Beams & Stairs (B01) (1st)",Approved Baseline.CON.P02.B01.SUP.1stF,Approved Baseline,12,12,17-May-26,3-Jun-26,17-May-26,3-Jun-26,0,0,0,0,0,0,"E-APP-B01-1ST-1030, E-APP-B01-1ST-1020, E-APP-B01-1ST-1010, CON-B01-1ST-1030, CON-B01-GR-1110, E-APP-B01-1ST-1010","CON-B01-1ST-1050, CON-B01-1ST-1050",0,0%,Yes,Yes
0,CON-B01-1ST-1050,"RFT for Slabs, Beams & Stairs(B01) (1st)",Approved Baseline.CON.P02.B01.SUP.1stF,Approved Baseline,12,12,21-May-26,8-Jun-26,21-May-26,8-Jun-26,0,0,0,0,0,0,"CON-B01-1ST-1040, CON-B01-1ST-1040, E-APP-B01-1ST-1010, E-APP-B01-1ST-1020, E-APP-B01-1ST-1030, P-MDEL-1120",CON-B01-1ST-1060,0,0%,Yes,Yes
0,CON-B01-1ST-1060,"Pouring for Slabs, Beams & Stairs (B01) (1st)",Approved Baseline.CON.P02.B01.SUP.1stF,Approved Baseline,3,3,9-Jun-26,11-Jun-26,9-Jun-26,11-Jun-26,0,0,0,0,0,0,"CON-B01-1ST-1050, P-MDEL-1030","CON-B01-1ST-1070, AB-SUB-B01-1ST-1030, AB-SUB-B01-1ST-1020, AB-SUB-B01-1ST-1010, CON-B01-2ND-1000",0,0%,Yes,Yes
0,CON-B01-1ST-1070,"Curing for Slabs, Beams & Stairs (B01) (1st)",Approved Baseline.CON.P02.B01.SUP.1stF,Approved Baseline,3,3,12-Jun-26,14-Jun-26,12-Jun-26,14-Jun-26,0,5,0,0,0,0,CON-B01-1ST-1060,CON-B01-1ST-1080,0,0%,No,No
0,CON-B01-1ST-1080,Dismantling Formwork (B01) (1st),Approved Baseline.CON.P02.B01.SUP.1stF,Approved Baseline,1,1,25-Jun-26,25-Jun-26,25-Jun-26,25-Jun-26,5,5,0,0,0,0,CON-B01-1ST-1070,CON-B01-2ND-1040,0,0%,No,No
0,,,,,48,48,14-Jun-26,31-Jul-26,14-Jun-26,31-Jul-26,0,7,0,0,0,1,,,1,,,
0,CON-B01-2ND-1000,"Scaffolding works for Walls, Col. & Cores (B01) (2nd)",Approved Baseline.CON.P02.B01.SUP.2ndF,Approved Baseline,5,5,14-Jun-26,18-Jun-26,14-Jun-26,18-Jun-26,0,0,0,0,0,0,CON-B01-1ST-1060,"CON-B01-2ND-1010, CON-B01-2ND-1010",0,0%,Yes,Yes
0,CON-B01-2ND-1010,"RFT for Walls, Col. & Cores (B01) (2nd)",Approved Baseline.CON.P02.B01.SUP.2ndF,Approved Baseline,7,7,16-Jun-26,23-Jun-26,16-Jun-26,23-Jun-26,0,0,0,0,0,1,"CON-B01-2ND-1000, CON-B01-2ND-1000, E-APP-B01-2ND-1000, P-MDEL-1110","CON-B01-2ND-1020, CON-B01-2ND-1020",1,0%,Yes,Yes
0,CON-B01-2ND-1020,"Shuttering for Walls, Col. & Cores (B01) (2nd)",Approved Baseline.CON.P02.B01.SUP.2ndF,Approved Baseline,7,7,20-Jun-26,27-Jun-26,20-Jun-26,27-Jun-26,0,0,0,0,0,0,"CON-B01-2ND-1010, CON-B01-2ND-1010, E-APP-B01-2ND-1000",CON-B01-2ND-1030,0,0%,Yes,Yes
0,CON-B01-2ND-1030,"Pouring for Walls, Col. & Cores (B01) (2nd)",Approved Baseline.CON.P02.B01.SUP.2ndF,Approved Baseline,2,2,28-Jun-26,29-Jun-26,28-Jun-26,29-Jun-26,0,0,0,0,0,0,"CON-B01-2ND-1020, P-MDEL-1030","CON-B01-2ND-1040, AB-SUB-B01-2ND-1000",0,0%,Yes,Yes
0,CON-B01-2ND-1040,"Shuttering for Slabs, Beams & Stairs (B01) (2nd)",Approved Baseline.CON.P02.B01.SUP.2ndF,Approved Baseline,8,8,1-Jul-26,9-Jul-26,1-Jul-26,9-Jul-26,0,0,0,0,0,0,"E-APP-B01-2ND-1030, E-APP-B01-2ND-1020, E-APP-B01-2ND-1010, CON-B01-2ND-1030, CON-B01-1ST-1080","CON-B01-2ND-1050, CON-B01-2ND-1050",0,0%,Yes,Yes
0,CON-B01-2ND-1050,"RFT for Slabs, Beams & Stairs (B01) (2nd)",Approved Baseline.CON.P02.B01.SUP.2ndF,Approved Baseline,8,8,6-Jul-26,14-Jul-26,6-Jul-26,14-Jul-26,0,0,0,0,0,0,"CON-B01-2ND-1040, CON-B01-2ND-1040, E-APP-B01-2ND-1010, E-APP-B01-2ND-1020, E-APP-B01-2ND-1030, P-MDEL-1110",CON-B01-2ND-1060,0,0%,Yes,Yes
0,CON-B01-2ND-1060,"Pouring for Slabs, Beams & Stairs (B01) (2nd)",Approved Baseline.CON.P02.B01.SUP.2ndF,Approved Baseline,3,3,15-Jul-26,18-Jul-26,15-Jul-26,18-Jul-26,0,0,0,0,0,0,"CON-B01-2ND-1050, P-MDEL-1030","CON-B01-2ND-1070, CON-B01-2ND-1080, AB-SUB-B01-2ND-1030, AB-SUB-B01-2ND-1020, AB-SUB-B01-2ND-1010, CON-B01-3RD-1000",0,0%,Yes,Yes
0,CON-B01-2ND-1070,"Curing for Slabs, Beams & Stairs (B01) (2nd)",Approved Baseline.CON.P02.B01.SUP.2ndF,Approved Baseline,3,3,19-Jul-26,21-Jul-26,19-Jul-26,21-Jul-26,9,16,0,0,0,0,CON-B01-2ND-1060,CON-B01-2ND-1080,0,0%,No,No
0,CON-B01-2ND-1080,Dismantling Formwork (B01) (2nd),Approved Baseline.CON.P02.B01.SUP.2ndF,Approved Baseline,1,1,31-Jul-26,31-Jul-26,31-Jul-26,31-Jul-26,7,7,0,0,0,0,"CON-B01-2ND-1060, CON-B01-2ND-1070",CON-B01-3RD-1040,0,0%,No,No
0,,,,,52,52,20-Jul-26,9-Sep-26,20-Jul-26,9-Sep-26,0,6,0,0,0,1,,,1,,,
0,CON-B01-3RD-1000,"Scaffolding works for Walls, Col. & Cores (B01) (3rd)",Approved Baseline.CON.P02.B01.SUP.3rdF,Approved Baseline,5,5,20-Jul-26,26-Jul-26,20-Jul-26,26-Jul-26,0,0,0,0,0,0,CON-B01-2ND-1060,"CON-B01-3RD-1010, CON-B01-3RD-1010",0,0%,Yes,Yes
0,CON-B01-3RD-1010,"RFT for Walls, Col. & Cores (B01) (3rd)",Approved Baseline.CON.P02.B01.SUP.3rdF,Approved Baseline,7,7,25-Jul-26,1-Aug-26,25-Jul-26,1-Aug-26,0,0,0,0,0,1,"CON-B01-3RD-1000, CON-B01-3RD-1000, E-APP-B01-3ED-1000, E-APP-B01-3ED-1010, E-APP-B01-3ED-1020, E-APP-B01-3ED-1030, P-MDEL-1100","CON-B01-3RD-1020, CON-B01-3RD-1020",1,0%,Yes,Yes
0,CON-B01-3RD-1020,"Shuttering for Walls, Col. & Cores (B01) (3rd)",Approved Baseline.CON.P02.B01.SUP.3rdF,Approved Baseline,7,7,28-Jul-26,4-Aug-26,28-Jul-26,4-Aug-26,0,0,0,0,0,0,"CON-B01-3RD-1010, CON-B01-3RD-1010, E-APP-B01-3ED-1000",CON-B01-3RD-1030,0,0%,Yes,Yes
0,CON-B01-3RD-1030,"Pouring for Walls, Col. & Cores (B01) (3rd)",Approved Baseline.CON.P02.B01.SUP.3rdF,Approved Baseline,2,2,5-Aug-26,6-Aug-26,5-Aug-26,6-Aug-26,0,0,0,0,0,0,"CON-B01-3RD-1020, P-MDEL-1030","CON-B01-3RD-1040, AB-SUB-B01-3RD-1000",0,0%,Yes,Yes
0,CON-B01-3RD-1040,"Shuttering for Slabs, Beams & Stairs (B01) (3rd)",Approved Baseline.CON.P02.B01.SUP.3rdF,Approved Baseline,10,10,8-Aug-26,18-Aug-26,8-Aug-26,18-Aug-26,0,0,0,0,0,0,"E-APP-B01-3ED-1030, E-APP-B01-3ED-1020, E-APP-B01-3ED-1010, CON-B01-3RD-1030, CON-B01-2ND-1080","CON-B01-3RD-1050, CON-B01-3RD-1050",0,0%,Yes,Yes
0,CON-B01-3RD-1050,"RFT for Slabs, Beams & Stairs (B01) (3rd)",Approved Baseline.CON.P02.B01.SUP.3rdF,Approved Baseline,10,10,12-Aug-26,23-Aug-26,12-Aug-26,23-Aug-26,0,0,0,0,0,0,"CON-B01-3RD-1040, CON-B01-3RD-1040, P-MDEL-1100",CON-B01-3RD-1060,0,0%,Yes,Yes
0,CON-B01-3RD-1060,"Pouring for Slabs, Beams & Stairs (B01) (3rd)",Approved Baseline.CON.P02.B01.SUP.3rdF,Approved Baseline,3,3,24-Aug-26,26-Aug-26,24-Aug-26,26-Aug-26,0,0,0,0,0,0,"CON-B01-3RD-1050, P-MDEL-1030","CON-B01-3RD-1070, AB-SUB-B01-3RD-1030, AB-SUB-B01-3RD-1010, AB-SUB-B01-3RD-1020, CON-B01-4TH-1000",0,0%,Yes,Yes
0,CON-B01-3RD-1070,"Curing for Slabs, Beams & Stairs(B01) (3rd)",Approved Baseline.CON.P02.B01.SUP.3rdF,Approved Baseline,3,3,27-Aug-26,29-Aug-26,27-Aug-26,29-Aug-26,0,6,0,0,0,0,CON-B01-3RD-1060,CON-B01-3RD-1080,0,0%,No,No
0,CON-B01-3RD-1080,Dismantling Formwork (B01) (3rd),Approved Baseline.CON.P02.B01.SUP.3rdF,Approved Baseline,1,1,9-Sep-26,9-Sep-26,9-Sep-26,9-Sep-26,6,6,0,0,0,0,CON-B01-3RD-1070,CON-B01-4TH-1040,0,0%,No,No
0,,,,,54,54,30-Aug-26,22-Oct-26,30-Aug-26,22-Oct-26,0,4,0,0,0,1,,,1,,,
0,CON-B01-4TH-1000,"Scaffolding works for Walls, Col. & Cores (B01) (4th)",Approved Baseline.CON.P02.B01.SUP.4thF,Approved Baseline,5,5,30-Aug-26,3-Sep-26,30-Aug-26,3-Sep-26,0,0,0,0,0,0,CON-B01-3RD-1060,"CON-B01-4TH-1010, CON-B01-4TH-1010",0,0%,Yes,Yes
0,CON-B01-4TH-1010,"RFT for Walls, Col. & Cores (B01) (4th)",Approved Baseline.CON.P02.B01.SUP.4thF,Approved Baseline,7,7,2-Sep-26,9-Sep-26,2-Sep-26,9-Sep-26,0,0,0,0,0,1,"CON-B01-4TH-1000, CON-B01-4TH-1000, E-APP-B01-4TH-1000, E-APP-B01-4TH-1010, E-APP-B01-4TH-1020, E-APP-B01-4TH-1030, P-MDEL-1090","CON-B01-4TH-1020, CON-B01-4TH-1020",1,0%,Yes,Yes
0,CON-B01-4TH-1020,"Shuttering for Walls, Col. & Cores (B01) (4th)",Approved Baseline.CON.P02.B01.SUP.4thF,Approved Baseline,7,7,6-Sep-26,13-Sep-26,6-Sep-26,13-Sep-26,0,0,0,0,0,0,"CON-B01-4TH-1010, CON-B01-4TH-1010, E-APP-B01-4TH-1000",CON-B01-4TH-1030,0,0%,Yes,Yes
0,CON-B01-4TH-1030,"Pouring for Walls, Col. & Cores (B01) (4th)",Approved Baseline.CON.P02.B01.SUP.4thF,Approved Baseline,2,2,14-Sep-26,15-Sep-26,14-Sep-26,15-Sep-26,0,0,0,0,0,0,"CON-B01-4TH-1020, P-MDEL-1030","CON-B01-4TH-1040, AB-SUB-B01-4TH-1000",0,0%,Yes,Yes
0,CON-B01-4TH-1040,"Shuttering for Slabs, Beams & Stairs (B01) (4th)",Approved Baseline.CON.P02.B01.SUP.4thF,Approved Baseline,12,12,16-Sep-26,29-Sep-26,16-Sep-26,29-Sep-26,0,0,0,0,0,0,"E-APP-B01-4TH-1030, E-APP-B01-4TH-1020, E-APP-B01-4TH-1010, CON-B01-4TH-1030, CON-B01-3RD-1080","CON-B01-4TH-1050, CON-B01-4TH-1050",0,0%,Yes,Yes
0,CON-B01-4TH-1050,"RFT for Slabs, Beams & Stairs (B01) (4th)",Approved Baseline.CON.P02.B01.SUP.4thF,Approved Baseline,12,12,21-Sep-26,4-Oct-26,21-Sep-26,4-Oct-26,0,0,0,0,0,0,"CON-B01-4TH-1040, CON-B01-4TH-1040, P-MDEL-1090",CON-B01-4TH-1060,0,0%,Yes,Yes
0,CON-B01-4TH-1060,"Pouring for Slabs, Beams & Stairs (B01) (4th)",Approved Baseline.CON.P02.B01.SUP.4thF,Approved Baseline,3,3,5-Oct-26,8-Oct-26,5-Oct-26,8-Oct-26,0,0,0,0,0,0,"CON-B01-4TH-1050, P-MDEL-1030","CON-B01-4TH-1070, AB-SUB-B01-4TH-1010, AB-SUB-B01-4TH-1020, AB-SUB-B01-4TH-1030, CON-B01-5TH-1000",0,0%,Yes,Yes
0,CON-B01-4TH-1070,"Curing for Slabs, Beams & Stairs (B01) (4th)",Approved Baseline.CON.P02.B01.SUP.4thF,Approved Baseline,3,3,9-Oct-26,11-Oct-26,9-Oct-26,11-Oct-26,0,4,0,0,0,0,CON-B01-4TH-1060,CON-B01-4TH-1080,0,0%,No,No
0,CON-B01-4TH-1080,Dismantling Formwork (B01) (4th),Approved Baseline.CON.P02.B01.SUP.4thF,Approved Baseline,1,1,22-Oct-26,22-Oct-26,22-Oct-26,22-Oct-26,4,4,0,0,0,0,CON-B01-4TH-1070,CON-B01-5TH-1040,0,0%,No,No
0,,,,,47,47,11-Oct-26,26-Nov-26,11-Oct-26,26-Nov-26,0,4,0,0,0,1,,,1,,,
0,CON-B01-5TH-1000,"Scaffolding works for Walls, Col. & Cores (B01) (5th)",Approved Baseline.CON.P02.B01.SUP.5thF,Approved Baseline,3,3,11-Oct-26,13-Oct-26,11-Oct-26,13-Oct-26,0,0,0,0,0,0,CON-B01-4TH-1060,"CON-B01-5TH-1010, CON-B01-5TH-1010",0,0%,Yes,Yes
0,CON-B01-5TH-1010,"RFT for Walls, Col. & Cores (B01) (5th)",Approved Baseline.CON.P02.B01.SUP.5thF,Approved Baseline,6,6,14-Oct-26,20-Oct-26,14-Oct-26,20-Oct-26,0,0,0,0,0,1,"CON-B01-5TH-1000, CON-B01-5TH-1000, E-APP-B01-5TH-1000, P-MDEL-1080","CON-B01-5TH-1020, CON-B01-5TH-1020",1,0%,Yes,Yes
0,CON-B01-5TH-1020,"Shuttering for Walls, Col. & Cores (B01) (5th)",Approved Baseline.CON.P02.B01.SUP.5thF,Approved Baseline,6,6,18-Oct-26,24-Oct-26,18-Oct-26,24-Oct-26,0,0,0,0,0,0,"CON-B01-5TH-1010, CON-B01-5TH-1010, E-APP-B01-5TH-1000",CON-B01-5TH-1030,0,0%,Yes,Yes
0,CON-B01-5TH-1030,"Pouring for Walls, Col. & Cores (B01) (5th)",Approved Baseline.CON.P02.B01.SUP.5thF,Approved Baseline,2,2,25-Oct-26,26-Oct-26,25-Oct-26,26-Oct-26,0,0,0,0,0,0,"CON-B01-5TH-1020, P-MDEL-1030","CON-B01-5TH-1040, AB-SUB-B01-5TH-1000",0,0%,Yes,Yes
0,CON-B01-5TH-1040,"Shuttering for Slabs, Beams & Stairs (B01) (5th)",Approved Baseline.CON.P02.B01.SUP.5thF,Approved Baseline,9,9,27-Oct-26,5-Nov-26,27-Oct-26,5-Nov-26,0,0,0,0,0,0,"E-APP-B01-5TH-1030, CON-B01-5TH-1030, CON-B01-4TH-1080, E-APP-B01-5TH-1010, E-APP-B01-5TH-1020","CON-B01-5TH-1050, CON-B01-5TH-1050",0,0%,Yes,Yes
0,CON-B01-5TH-1050,"RFT for Slabs, Beams & Stairs (B01) (5th)",Approved Baseline.CON.P02.B01.SUP.5thF,Approved Baseline,9,9,1-Nov-26,10-Nov-26,1-Nov-26,10-Nov-26,0,0,0,0,0,0,"CON-B01-5TH-1040, CON-B01-5TH-1040, E-APP-B01-5TH-1010, E-APP-B01-5TH-1020, E-APP-B01-5TH-1030, P-MDEL-1080",CON-B01-5TH-1060,0,0%,Yes,Yes
0,CON-B01-5TH-1060,"Pouring for Slabs, Beams & Stairs (B01) (5th)",Approved Baseline.CON.P02.B01.SUP.5thF,Approved Baseline,2,2,11-Nov-26,12-Nov-26,11-Nov-26,12-Nov-26,0,0,0,0,0,0,"CON-B01-5TH-1050, P-MDEL-1030","CON-B01-5TH-1070, AB-SUB-B01-5TH-1010, AB-SUB-B01-5TH-1020, AB-SUB-B01-5TH-1030, CON-B01-6TH-1000",0,0%,Yes,Yes
0,CON-B01-5TH-1070,"Curing for Slabs, Beams & Stairs (B01) (5th)",Approved Baseline.CON.P02.B01.SUP.5thF,Approved Baseline,3,3,13-Nov-26,15-Nov-26,13-Nov-26,15-Nov-26,0,4,0,0,0,0,CON-B01-5TH-1060,CON-B01-5TH-1080,0,0%,No,No
0,CON-B01-5TH-1080,Dismantling Formwork (B01) (5th),Approved Baseline.CON.P02.B01.SUP.5thF,Approved Baseline,1,1,26-Nov-26,26-Nov-26,26-Nov-26,26-Nov-26,4,4,0,0,0,0,CON-B01-5TH-1070,CON-B01-6TH-1040,0,0%,No,No
0,,,,,48,48,14-Nov-26,31-Dec-26,14-Nov-26,31-Dec-26,0,2,0,0,0,1,,,1,,,
0,CON-B01-6TH-1000,"Scaffolding works for Walls, Col. & Cores (B01) (6th)",Approved Baseline.CON.P02.B01.SUP.6thF,Approved Baseline,4,4,14-Nov-26,17-Nov-26,14-Nov-26,17-Nov-26,0,0,0,0,0,0,CON-B01-5TH-1060,"CON-B01-6TH-1010, CON-B01-6TH-1010",0,0%,Yes,Yes
0,CON-B01-6TH-1010,"RFT for Walls, Col. & Cores (B01) (6th)",Approved Baseline.CON.P02.B01.SUP.6thF,Approved Baseline,6,6,17-Nov-26,23-Nov-26,17-Nov-26,23-Nov-26,0,0,0,0,0,1,"CON-B01-6TH-1000, CON-B01-6TH-1000, E-APP-B01-6TH-1000, P-MDEL-1070","CON-B01-6TH-1020, CON-B01-6TH-1020",1,0%,Yes,Yes
0,CON-B01-6TH-1020,"Shuttering for Walls, Col. & Cores (B01) (6th)",Approved Baseline.CON.P02.B01.SUP.6thF,Approved Baseline,6,6,21-Nov-26,26-Nov-26,21-Nov-26,26-Nov-26,0,0,0,0,0,0,"CON-B01-6TH-1010, CON-B01-6TH-1010, E-APP-B01-6TH-1000",CON-B01-6TH-1030,0,0%,Yes,Yes
0,CON-B01-6TH-1030,"Pouring for Walls, Col. & Cores (B01) (6th)",Approved Baseline.CON.P02.B01.SUP.6thF,Approved Baseline,2,2,29-Nov-26,30-Nov-26,29-Nov-26,30-Nov-26,0,0,0,0,0,0,"CON-B01-6TH-1020, P-MDEL-1030","CON-B01-6TH-1040, AB-SUB-B01-6TH-1000",0,0%,Yes,Yes
0,CON-B01-6TH-1040,"Shuttering for Slabs, Beams & Stairs (B01) (6th)",Approved Baseline.CON.P02.B01.SUP.6thF,Approved Baseline,9,9,1-Dec-26,10-Dec-26,1-Dec-26,10-Dec-26,0,0,0,0,0,0,"E-APP-B01-6TH-1030, E-APP-B01-6TH-1020, E-APP-B01-6TH-1010, CON-B01-6TH-1030, CON-B01-5TH-1080","CON-B01-6TH-1050, CON-B01-6TH-1050",0,0%,Yes,Yes
0,CON-B01-6TH-1050,"RFT for Slabs, Beams & Stairs (B01) (6th)",Approved Baseline.CON.P02.B01.SUP.6thF,Approved Baseline,9,9,6-Dec-26,15-Dec-26,6-Dec-26,15-Dec-26,0,0,0,0,0,0,"CON-B01-6TH-1040, CON-B01-6TH-1040, E-APP-B01-6TH-1010, E-APP-B01-6TH-1020, E-APP-B01-6TH-1030, P-MDEL-1070",CON-B01-6TH-1060,0,0%,Yes,Yes
0,CON-B01-6TH-1060,"Pouring for Slabs, Beams & Stairs (B01) (6th)",Approved Baseline.CON.P02.B01.SUP.6thF,Approved Baseline,2,2,16-Dec-26,17-Dec-26,16-Dec-26,17-Dec-26,0,0,0,0,0,0,"CON-B01-6TH-1050, P-MDEL-1030","CON-B01-6TH-1070, AB-SUB-B01-6TH-1010, AB-SUB-B01-6TH-1020, AB-SUB-B01-6TH-1030, CON-B01-7TH-1000",0,0%,Yes,Yes
0,CON-B01-6TH-1070,"Curing for Slabs, Beams & Stairs (B01) (6th)",Approved Baseline.CON.P02.B01.SUP.6thF,Approved Baseline,3,3,18-Dec-26,20-Dec-26,18-Dec-26,20-Dec-26,0,2,0,0,0,0,CON-B01-6TH-1060,CON-B01-6TH-1080,0,0%,No,No
0,CON-B01-6TH-1080,Dismantling Formwork (B01) (6th),Approved Baseline.CON.P02.B01.SUP.6thF,Approved Baseline,1,1,31-Dec-26,31-Dec-26,31-Dec-26,31-Dec-26,2,2,0,0,0,0,CON-B01-6TH-1070,CON-B01-7TH-1040,0,0%,No,No
0,,,,,46,46,19-Dec-26,2-Feb-27,19-Dec-26,2-Feb-27,0,1,0,0,0,0,,,0,,,
0,CON-B01-7TH-1000,"Scaffolding works for Walls, Col. & Cores (B01) (7th)",Approved Baseline.CON.P02.B01.SUP.7thF,Approved Baseline,3,3,19-Dec-26,21-Dec-26,19-Dec-26,21-Dec-26,0,0,0,0,0,0,CON-B01-6TH-1060,"CON-B01-7TH-1010, CON-B01-7TH-1010",0,0%,Yes,Yes
0,CON-B01-7TH-1010,"RFT for Walls, Col. & Cores (B01) (7th)",Approved Baseline.CON.P02.B01.SUP.7thF,Approved Baseline,5,5,21-Dec-26,26-Dec-26,21-Dec-26,26-Dec-26,0,0,0,0,0,0,"CON-B01-7TH-1000, CON-B01-7TH-1000, E-APP-B01-7TH-1000, P-MDEL-1190","CON-B01-7TH-1020, CON-B01-7TH-1020",0,0%,Yes,Yes
0,CON-B01-7TH-1020,"Shuttering for Walls, Col. & Cores (B01) (7th)",Approved Baseline.CON.P02.B01.SUP.7thF,Approved Baseline,5,5,24-Dec-26,29-Dec-26,24-Dec-26,29-Dec-26,0,0,0,0,0,0,"CON-B01-7TH-1010, CON-B01-7TH-1010, E-APP-B01-7TH-1000",CON-B01-7TH-1030,0,0%,Yes,Yes
0,CON-B01-7TH-1030,"Pouring for Walls, Col. & Cores (B01) (7th)",Approved Baseline.CON.P02.B01.SUP.7thF,Approved Baseline,2,2,31-Dec-26,2-Jan-27,31-Dec-26,2-Jan-27,0,0,0,0,0,0,"CON-B01-7TH-1020, P-MDEL-1030","CON-B01-7TH-1040, AB-SUB-B01-7TH-1000",0,0%,Yes,Yes
0,CON-B01-7TH-1040,"Shuttering for Slabs, Beams & Stairs (B01) (7th)",Approved Baseline.CON.P02.B01.SUP.7thF,Approved Baseline,9,9,3-Jan-27,13-Jan-27,3-Jan-27,13-Jan-27,0,0,0,0,0,0,"E-APP-B01-7TH-1030, E-APP-B01-7TH-1020, E-APP-B01-7TH-1010, CON-B01-7TH-1030, CON-B01-6TH-1080","CON-B01-7TH-1050, CON-B01-7TH-1050",0,0%,Yes,Yes
0,CON-B01-7TH-1050,"RFT for Slabs, Beams & Stairs (B01) (7th)",Approved Baseline.CON.P02.B01.SUP.7thF,Approved Baseline,9,9,6-Jan-27,17-Jan-27,6-Jan-27,17-Jan-27,0,0,0,0,0,0,"CON-B01-7TH-1040, CON-B01-7TH-1040, E-APP-B01-7TH-1010, E-APP-B01-7TH-1020, E-APP-B01-7TH-1030, P-MDEL-1190",CON-B01-7TH-1060,0,0%,Yes,Yes
0,CON-B01-7TH-1060,"Pouring for Slabs, Beams & Stairs (B01) (7th)",Approved Baseline.CON.P02.B01.SUP.7thF,Approved Baseline,2,2,18-Jan-27,19-Jan-27,18-Jan-27,19-Jan-27,0,0,0,0,0,0,"CON-B01-7TH-1050, P-MDEL-1030","CON-B01-7TH-1070, AB-SUB-B01-7TH-1010, AB-SUB-B01-7TH-1020, AB-SUB-B01-7TH-1030, CON-B01-8TH-1000",0,0%,Yes,Yes
0,CON-B01-7TH-1070,"Curing for Slabs, Beams & Stairs (B01) (7th)",Approved Baseline.CON.P02.B01.SUP.7thF,Approved Baseline,3,3,20-Jan-27,22-Jan-27,20-Jan-27,22-Jan-27,0,1,0,0,0,0,CON-B01-7TH-1060,CON-B01-7TH-1080,0,0%,No,No
0,CON-B01-7TH-1080,Dismantling Formwork (B01) (7th),Approved Baseline.CON.P02.B01.SUP.7thF,Approved Baseline,1,1,2-Feb-27,2-Feb-27,2-Feb-27,2-Feb-27,1,1,0,0,0,0,CON-B01-7TH-1070,CON-B01-8TH-1040,0,0%,No,No
0,,,,,43,43,20-Jan-27,3-Mar-27,20-Jan-27,3-Mar-27,0,0,0,0,0,1,,,1,,,
0,CON-B01-8TH-1000,"Scaffolding works for Walls, Col. & Cores (B01) (8th)",Approved Baseline.CON.P02.B01.SUP.8thF,Approved Baseline,3,3,20-Jan-27,23-Jan-27,20-Jan-27,23-Jan-27,0,0,0,0,0,0,CON-B01-7TH-1060,"CON-B01-8TH-1010, CON-B01-8TH-1010",0,0%,Yes,Yes
0,CON-B01-8TH-1010,"RFT for Walls, Col. & Cores (B01) (8th)",Approved Baseline.CON.P02.B01.SUP.8thF,Approved Baseline,5,5,23-Jan-27,28-Jan-27,23-Jan-27,28-Jan-27,0,0,0,0,0,1,"CON-B01-8TH-1000, CON-B01-8TH-1000, E-APP-B01-8TH-1000, P-MDEL-1180","CON-B01-8TH-1020, CON-B01-8TH-1020",1,0%,Yes,Yes
0,CON-B01-8TH-1020,"Shuttering for Walls, Col. & Cores (B01) (8th)",Approved Baseline.CON.P02.B01.SUP.8thF,Approved Baseline,5,5,26-Jan-27,31-Jan-27,26-Jan-27,31-Jan-27,0,0,0,0,0,0,"CON-B01-8TH-1010, CON-B01-8TH-1010, E-APP-B01-8TH-1000",CON-B01-8TH-1030,0,0%,Yes,Yes
0,CON-B01-8TH-1030,"Pouring for Walls, Col. & Cores (B01) (8th)",Approved Baseline.CON.P02.B01.SUP.8thF,Approved Baseline,2,2,2-Feb-27,3-Feb-27,2-Feb-27,3-Feb-27,0,0,0,0,0,0,"CON-B01-8TH-1020, P-MDEL-1030","CON-B01-8TH-1040, AB-SUB-B01-8TH-1000",0,0%,Yes,Yes
0,CON-B01-8TH-1040,"Shuttering for Slabs, Beams & Stairs (B01) (8th)",Approved Baseline.CON.P02.B01.SUP.8thF,Approved Baseline,8,8,4-Feb-27,13-Feb-27,4-Feb-27,13-Feb-27,0,0,0,0,0,0,"E-APP-B01-8TH-1030, E-APP-B01-8TH-1020, E-APP-B01-8TH-1010, CON-B01-8TH-1030, CON-B01-7TH-1080","CON-B01-8TH-1050, CON-B01-8TH-1050",0,0%,Yes,Yes
0,CON-B01-8TH-1050,"RFT for Slabs, Beams & Stairs (B01) (8th)",Approved Baseline.CON.P02.B01.SUP.8thF,Approved Baseline,8,8,7-Feb-27,15-Feb-27,7-Feb-27,15-Feb-27,0,0,0,0,0,0,"CON-B01-8TH-1040, CON-B01-8TH-1040, E-APP-B01-8TH-1010, E-APP-B01-8TH-1020, E-APP-B01-8TH-1030, P-MDEL-1180",CON-B01-8TH-1060,0,0%,Yes,Yes
0,CON-B01-8TH-1060,"Pouring for Slabs, Beams & Stairs (B01) (8th)",Approved Baseline.CON.P02.B01.SUP.8thF,Approved Baseline,2,2,16-Feb-27,17-Feb-27,16-Feb-27,17-Feb-27,0,0,0,0,0,0,"CON-B01-8TH-1050, P-MDEL-1030","CON-B01-8TH-1070, AB-SUB-B01-8TH-1010, AB-SUB-B01-8TH-1020, AB-SUB-B01-8TH-1030",0,0%,Yes,Yes
0,CON-B01-8TH-1070,"Curing for Slabs, Beams & Stairs (B01) (8th)",Approved Baseline.CON.P02.B01.SUP.8thF,Approved Baseline,3,3,18-Feb-27,20-Feb-27,18-Feb-27,20-Feb-27,0,0,0,0,0,0,CON-B01-8TH-1060,"CON-B01-8TH-1080, CON-B01-9TH-1000",0,0%,Yes,Yes
0,CON-B01-8TH-1080,Dismantling Formwork (B01) (8th),Approved Baseline.CON.P02.B01.SUP.8thF,Approved Baseline,1,1,3-Mar-27,3-Mar-27,3-Mar-27,3-Mar-27,0,0,0,0,0,0,CON-B01-8TH-1070,CON-B01-9TH-1060,0,0%,Yes,Yes
0,,,,,21,21,21-Feb-27,13-Mar-27,21-Feb-27,13-Mar-27,0,0,0,0,0,1,,,1,,,
0,CON-B01-9TH-1000,"Scaffolding works for Walls, Col. & Cores (B01) (RF)",Approved Baseline.CON.P02.B01.SUP.RF,Approved Baseline,1,1,21-Feb-27,21-Feb-27,21-Feb-27,21-Feb-27,0,1,0,0,0,0,CON-B01-8TH-1070,CON-B01-9TH-1010,0,0%,No,No
0,CON-B01-9TH-1010,"RFT for Walls, Col. & Cores (B01) (RF)",Approved Baseline.CON.P02.B01.SUP.RF,Approved Baseline,2,2,22-Feb-27,23-Feb-27,22-Feb-27,23-Feb-27,0,1,0,0,0,1,"CON-B01-9TH-1000, E-APP-B01-RF-1000, P-MDEL-1200",CON-B01-9TH-1020,1,0%,No,No
0,CON-B01-9TH-1020,"Shuttering for Walls, Col. & Cores (B01) (RF)",Approved Baseline.CON.P02.B01.SUP.RF,Approved Baseline,1,1,24-Feb-27,24-Feb-27,24-Feb-27,24-Feb-27,0,1,0,0,0,0,"CON-B01-9TH-1010, E-APP-B01-RF-1000",CON-B01-9TH-1030,0,0%,No,No
0,CON-B01-9TH-1030,"Pouring for Walls, Col. & Cores (B01) (RF)",Approved Baseline.CON.P02.B01.SUP.RF,Approved Baseline,1,1,25-Feb-27,25-Feb-27,25-Feb-27,25-Feb-27,0,1,0,0,0,0,"CON-B01-9TH-1020, P-MDEL-1030","CON-B01-9TH-1040, AB-SUB-B01-RF-1000",0,0%,No,No
0,CON-B01-9TH-1040,"Shuttering for Slabs, Beams  (B01) (RF)",Approved Baseline.CON.P02.B01.SUP.RF,Approved Baseline,2,2,27-Feb-27,28-Feb-27,27-Feb-27,28-Feb-27,0,1,0,0,0,0,"E-APP-B01-RF-1010, E-APP-B01-RF-1020, CON-B01-9TH-1030","CON-B01-9TH-1050, CON-B01-9TH-1050",0,0%,No,No
0,CON-B01-9TH-1050,"RFT for Slabs, Beams  (B01) (RF)",Approved Baseline.CON.P02.B01.SUP.RF,Approved Baseline,3,3,28-Feb-27,2-Mar-27,28-Feb-27,2-Mar-27,1,1,0,0,0,0,"CON-B01-9TH-1040, CON-B01-9TH-1040, E-APP-B01-RF-1010, E-APP-B01-RF-1020, P-MDEL-1200",CON-B01-9TH-1060,0,0%,No,No
0,CON-B01-9TH-1060,"Pouring for Slabs, Beams  (B01) (RF)",Approved Baseline.CON.P02.B01.SUP.RF,Approved Baseline,1,1,4-Mar-27,4-Mar-27,4-Mar-27,4-Mar-27,0,0,0,0,0,0,"CON-B01-9TH-1050, P-MDEL-1030, CON-B01-8TH-1080","CON-B01-9TH-1070, AB-SUB-B01-RF-1010, AB-SUB-B01-RF-1020",0,0%,Yes,Yes
0,CON-B01-9TH-1070,"Curing for Slabs, Beams  (B01) (RF)",Approved Baseline.CON.P02.B01.SUP.RF,Approved Baseline,3,3,5-Mar-27,7-Mar-27,5-Mar-27,7-Mar-27,0,0,0,0,0,0,CON-B01-9TH-1060,CON-B01-9TH-1080,0,0%,Yes,Yes
0,CON-B01-9TH-1080,Dismantling Formwork (B01) (RF),Approved Baseline.CON.P02.B01.SUP.RF,Approved Baseline,1,1,13-Mar-27,13-Mar-27,13-Mar-27,13-Mar-27,0,0,0,0,0,0,CON-B01-9TH-1070,HO-1010,0,0%,Yes,Yes
0,,,,,451,451,9-Dec-25,4-Mar-27,9-Dec-25,4-Mar-27,0,23,0,0,0,102,,,102,,,
0,,,,,194,194,9-Dec-25,20-Jun-26,9-Dec-25,20-Jun-26,0,280,0,0,0,88,,,88,,,
0,,,,,34,34,9-Dec-25,11-Jan-26,9-Dec-25,11-Jan-26,0,372,0,0,0,35,,,35,,,
0,CON-B02-FOOT-1000,Shuttering for PC Raft (B02) (footing),Approved Baseline.CON.P02.B02.SUB.F,Approved Baseline,1,1,9-Dec-25,9-Dec-25,9-Dec-25,9-Dec-25,0,0,0,0,0,0,"E-APP-B02-FOOT-1000, CON-EW-B02-1010, P-MDEL-1020","CON-B02-FOOT-1010, AB-SUB-B02-FOOT-1000",0,0%,Yes,Yes
0,CON-B02-FOOT-1010,Pouring for PC Raft (B02) (footing),Approved Baseline.CON.P02.B02.SUB.F,Approved Baseline,1,1,10-Dec-25,10-Dec-25,10-Dec-25,10-Dec-25,0,0,0,0,0,0,"CON-B02-FOOT-1000, P-MDEL-1030","CON-B02-FOOT-1020, AB-SUB-B02-FOOT-1000",0,0%,Yes,Yes
0,CON-B02-FOOT-1020,Curing for PC Raft (B02) (footing),Approved Baseline.CON.P02.B02.SUB.F,Approved Baseline,3,3,11-Dec-25,13-Dec-25,11-Dec-25,13-Dec-25,0,0,0,0,0,0,CON-B02-FOOT-1010,"CON-B02-FOOT-1030, CON-B02-FOOT-1030",0,0%,Yes,Yes
0,CON-B02-FOOT-1030,Waterproofing & Ins. Protection works (B02) (footing),Approved Baseline.CON.P02.B02.SUB.F,Approved Baseline,2,2,14-Dec-25,15-Dec-25,14-Dec-25,15-Dec-25,0,0,0,0,0,0,"CON-B02-FOOT-1020, P-MDEL-1040, E-APP-B02-FOOT-1030, CON-B02-FOOT-1020","CON-B02-FOOT-1040, CON-B02-FOOT-1040",0,0%,Yes,Yes
0,CON-B02-FOOT-1040,Shuttering for RC Raft & Footings (B02) (footing),Approved Baseline.CON.P02.B02.SUB.F,Approved Baseline,10,10,17-Dec-25,28-Dec-25,17-Dec-25,28-Dec-25,0,0,0,0,0,0,"CON-B02-FOOT-1030, E-APP-B02-FOOT-1010, CON-B02-FOOT-1030","CON-B02-FOOT-1050, AB-SUB-B02-FOOT-1010, CON-B02-FOOT-1050, CON-B02-FOOT-1060",0,0%,Yes,Yes
0,CON-B02-FOOT-1050,RFT for RC Raft & Footings (B02) (footing),Approved Baseline.CON.P02.B02.SUB.F,Approved Baseline,10,10,20-Dec-25,30-Dec-25,20-Dec-25,30-Dec-25,0,0,0,0,0,1,"CON-B02-FOOT-1040, E-APP-B02-FOOT-1020, CON-B02-FOOT-1040, P-MDEL-1000","CON-B02-FOOT-1090, AB-SUB-B02-FOOT-1020",1,0%,Yes,Yes
0,CON-B02-FOOT-1060,Shuttering for Columns & Walls Below SOG (B01) (footing),Approved Baseline.CON.P02.B02.SUB.F,Approved Baseline,6,6,22-Dec-25,28-Dec-25,22-Dec-25,28-Dec-25,0,2,0,0,0,0,"CON-B02-FOOT-1040, E-APP-B02-FOOT-1010","CON-B02-FOOT-1070, CON-B02-FOOT-1070",0,0%,No,No
0,CON-B02-FOOT-1070,RFT for Columns & Walls Below SOG (B02) (footing),Approved Baseline.CON.P02.B02.SUB.F,Approved Baseline,6,6,23-Dec-25,29-Dec-25,23-Dec-25,29-Dec-25,0,2,0,0,0,6,"CON-B02-FOOT-1060, CON-B02-FOOT-1060, E-APP-B02-FOOT-1020, P-MDEL-1000",CON-B02-FOOT-1080,6,0%,No,No
0,CON-B02-FOOT-1080,Pouring Columns & Walls Below SOG (B01) (footing),Approved Baseline.CON.P02.B02.SUB.F,Approved Baseline,1,1,30-Dec-25,30-Dec-25,30-Dec-25,30-Dec-25,2,2,0,0,0,0,CON-B02-FOOT-1070,CON-B02-FOOT-1100,0,0%,No,No
0,CON-B02-FOOT-1090,Pouring for RC Raft & Footings (B02) (footing),Approved Baseline.CON.P02.B02.SUB.F,Approved Baseline,2,2,31-Dec-25,1-Jan-26,31-Dec-25,1-Jan-26,0,0,0,0,0,0,"CON-B02-FOOT-1050, P-MDEL-1030","CON-B02-FOOT-1100, AB-SUB-B02-FOOT-1020",0,0%,Yes,Yes
0,CON-B02-FOOT-1100,Curing & Deshuttering for RC Raft & Footings (B02) (footing),Approved Baseline.CON.P02.B02.SUB.F,Approved Baseline,3,3,2-Jan-26,4-Jan-26,2-Jan-26,4-Jan-26,0,0,0,0,0,0,"CON-B02-FOOT-1090, CON-B02-FOOT-1080","CON-B02-BAS02-1000, CON-B02-FOOT-1110",0,0%,Yes,Yes
0,CON-B02-FOOT-1110,Bitumen Ins. for RC Raft & Footings (B02) (footing),Approved Baseline.CON.P02.B02.SUB.F,Approved Baseline,3,3,5-Jan-26,8-Jan-26,5-Jan-26,8-Jan-26,0,304,0,0,0,0,"P-MDEL-1050, E-APP-B02-FOOT-1030, CON-B02-FOOT-1100","AB-SUB-B02-FOOT-1030, CON-B02-FOOT-1120",0,0%,No,No
0,CON-B02-FOOT-1120,Soil Backfilling (B02) (footing),Approved Baseline.CON.P02.B02.SUB.F,Approved Baseline,2,2,10-Jan-26,11-Jan-26,10-Jan-26,11-Jan-26,81,304,0,0,0,28,CON-B02-FOOT-1110,CON-B02-SOG-1000,28,0%,No,No
0,,,,,167,167,5-Jan-26,20-Jun-26,5-Jan-26,20-Jun-26,0,280,0,0,0,52,,,52,,,
0,CON-B02-BAS02-1000,"Scaffolding works for Walls, Col. & Cores (B02) (Bas 02)",Approved Baseline.CON.P02.B02.SUB.2ndB,Approved Baseline,7,7,5-Jan-26,13-Jan-26,5-Jan-26,13-Jan-26,0,0,0,0,0,0,CON-B02-FOOT-1100,"CON-B02-BAS02-1010, CON-B03-BAS02-1000, CON-B02-BAS02-1010",0,0%,Yes,Yes
0,CON-B02-BAS02-1010,"RFT for Walls, Col. & Cores (B02) (Bas 02)",Approved Baseline.CON.P02.B02.SUB.2ndB,Approved Baseline,12,12,5-Jan-26,19-Jan-26,5-Jan-26,19-Jan-26,0,0,0,0,0,1,"CON-B02-BAS02-1000, CON-B02-BAS02-1000, E-APP-B02-BAS02-1000, P-MDEL-1170","CON-B02-BAS02-1020, CON-B03-BAS02-1010, CON-B02-BAS02-1020",1,0%,Yes,Yes
0,CON-B02-BAS02-1020,"Shuttering for Walls, Col. & Cores (B02) (Bas 02)",Approved Baseline.CON.P02.B02.SUB.2ndB,Approved Baseline,12,12,10-Jan-26,22-Jan-26,10-Jan-26,22-Jan-26,0,0,0,0,0,0,"CON-B02-BAS02-1010, CON-B02-BAS02-1010, E-APP-B02-BAS02-1000","CON-B02-BAS02-1030, CON-B03-BAS02-1020",0,0%,Yes,Yes
0,CON-B02-BAS02-1030,"Pouring for Walls, Col. & Cores (B02) (Bas 02)",Approved Baseline.CON.P02.B02.SUB.2ndB,Approved Baseline,2,2,24-Jan-26,26-Jan-26,24-Jan-26,26-Jan-26,0,0,0,0,0,0,"CON-B02-BAS02-1020, P-MDEL-1030","CON-B03-BAS02-1030, CON-B02-BAS02-1040, AB-SUB-B02-BAS2-1000",0,0%,Yes,Yes
0,CON-B02-BAS02-1040,Shuttering for Slabs & Beams (B02) (Bas 02),Approved Baseline.CON.P02.B02.SUB.2ndB,Approved Baseline,8,8,27-Jan-26,4-Feb-26,27-Jan-26,4-Feb-26,0,0,0,0,0,0,"E-APP-B02-BAS02-1030, E-APP-B02-BAS02-1020, CON-B02-BAS02-1030","CON-B02-BAS02-1050, CON-B02-BAS02-1060, CON-B03-BAS02-1040, CON-B02-BAS02-1060",0,0%,Yes,Yes
0,CON-B02-BAS02-1050,Shuttering for Stairs (B02) (Bas 02),Approved Baseline.CON.P02.B02.SUB.2ndB,Approved Baseline,6,6,29-Jan-26,4-Feb-26,29-Jan-26,4-Feb-26,0,0,0,0,0,0,"CON-B02-BAS02-1040, E-APP-B02-BAS02-1010","CON-B02-BAS02-1070, CON-B03-BAS02-1050, CON-B02-BAS02-1070",0,0%,Yes,Yes
0,CON-B02-BAS02-1060,RFT for Slabs & Beams (B02) (Bas 02),Approved Baseline.CON.P02.B02.SUB.2ndB,Approved Baseline,10,10,29-Jan-26,9-Feb-26,29-Jan-26,9-Feb-26,0,3,0,0,0,0,"CON-B02-BAS02-1040, CON-B02-BAS02-1040, E-APP-B02-BAS02-1020, E-APP-B02-BAS02-1030, P-MDEL-1170","CON-B03-BAS02-1060, CON-B02-BAS02-1100",0,0%,No,No
0,CON-B02-BAS02-1070,RFT for Stairs  (B02) (Bas 02),Approved Baseline.CON.P02.B02.SUB.2ndB,Approved Baseline,6,6,1-Feb-26,7-Feb-26,1-Feb-26,7-Feb-26,0,0,0,0,0,0,"CON-B02-BAS02-1050, CON-B02-BAS02-1050, E-APP-B02-BAS02-1010, P-MDEL-1170","CON-B03-BAS02-1070, CON-B02-BAS02-1080, AB-SUB-B02-BAS2-1010",0,0%,Yes,Yes
0,CON-B02-BAS02-1080,Pouring for Stairs  (B02) (Bas 02),Approved Baseline.CON.P02.B02.SUB.2ndB,Approved Baseline,2,2,8-Feb-26,9-Feb-26,8-Feb-26,9-Feb-26,0,0,0,0,0,0,"CON-B02-BAS02-1070, P-MDEL-1030","CON-B03-BAS02-1080, CON-B02-BAS02-1090",0,0%,Yes,Yes
0,CON-B02-BAS02-1100,Pouring for Slabs & Beams (B02) (Bas 02),Approved Baseline.CON.P02.B02.SUB.2ndB,Approved Baseline,2,2,10-Feb-26,11-Feb-26,10-Feb-26,11-Feb-26,0,3,0,0,0,0,"CON-B02-BAS02-1060, P-MDEL-1030","CON-B03-BAS02-1100, CON-B02-BAS02-1110, AB-SUB-B02-BAS2-1020, AB-SUB-B02-BAS2-1030",0,0%,No,No
0,CON-B02-BAS02-1090,"Curing for Slabs, Beams & Stairs (B02) (Bas 02)",Approved Baseline.CON.P02.B02.SUB.2ndB,Approved Baseline,5,5,10-Feb-26,14-Feb-26,10-Feb-26,14-Feb-26,0,0,0,0,0,0,CON-B02-BAS02-1080,"CON-B03-BAS02-1090, CON-B02-BAS02-1110, CON-B02-BAS01-1000",0,0%,Yes,Yes
0,CON-B02-BAS02-1110,Dismantling Formwork (B02) (Bas 02),Approved Baseline.CON.P02.B02.SUB.2ndB,Approved Baseline,1,1,1-Mar-26,1-Mar-26,1-Mar-26,1-Mar-26,3,3,0,0,0,0,"CON-B02-BAS02-1100, CON-B02-BAS02-1090","CON-B03-BAS02-1110, CON-B02-SOG-1000, CON-B02-BAS01-1040",0,0%,No,No
0,,,,,59,59,23-Apr-26,20-Jun-26,23-Apr-26,20-Jun-26,0,280,0,0,0,51,,,51,,,
0,CON-B02-SOG-1000,Soil Backfilling & Compaction (B02) (Sog),Approved Baseline.CON.P02.B02.SUB.2ndB.1,Approved Baseline,7,7,23-Apr-26,30-Apr-26,23-Apr-26,30-Apr-26,0,223,0,0,0,49,"CON-B01-SOG-1000, CON-B02-BAS02-1110, CON-B02-FOOT-1120",CON-B02-SOG-1010,49,0%,No,No
0,CON-B02-SOG-1010,Soil Compaction Test (B02) (Sog),Approved Baseline.CON.P02.B02.SUB.2ndB.1,Approved Baseline,2,2,2-May-26,3-May-26,2-May-26,3-May-26,0,223,0,0,0,2,"CON-B02-SOG-1000, CON-B01-SOG-1010",CON-B02-SOG-1020,2,0%,No,No
0,CON-B02-SOG-1020,DPM Layer works (B02) (Sog),Approved Baseline.CON.P02.B02.SUB.2ndB.1,Approved Baseline,15,15,4-May-26,20-May-26,4-May-26,20-May-26,5,223,0,0,0,0,"CON-B02-SOG-1010, P-MDEL-1040, E-APP-B02-FOOT-1030","CON-B02-SOG-1030, CON-B02-SOG-1030",0,0%,No,No
0,CON-B02-SOG-1030,Blinding Concrete works (B02) (Sog),Approved Baseline.CON.P02.B02.SUB.2ndB.1,Approved Baseline,12,12,16-May-26,2-Jun-26,16-May-26,2-Jun-26,3,218,0,0,0,0,"CON-B02-SOG-1020, CON-B02-SOG-1020, CON-B01-SOG-1030","CON-B02-SOG-1040, CON-B02-SOG-1040",0,0%,No,No
0,CON-B02-SOG-1040,Shuttering & RFT for S.O.G (B02) (Sog),Approved Baseline.CON.P02.B02.SUB.2ndB.1,Approved Baseline,15,15,25-May-26,15-Jun-26,25-May-26,15-Jun-26,0,215,0,0,0,0,"CON-B02-SOG-1030, CON-B02-SOG-1030, CON-B01-SOG-1040, E-APP-B02-SOG-1010, E-APP-B02-SOG-1000, E-APP-B02-SOG-1010, P-MDEL-1150","CON-B02-SOG-1050, CON-B02-SOG-1050, AB-SUB-B02-SOG-1000, AB-SUB-B02-SOG-1010",0,0%,No,No
0,CON-B02-SOG-1050,Pouring for S.O.G (B02) (Sog),Approved Baseline.CON.P02.B02.SUB.2ndB.1,Approved Baseline,12,12,7-Jun-26,20-Jun-26,7-Jun-26,20-Jun-26,0,215,0,0,0,0,"CON-B02-SOG-1040, CON-B02-SOG-1040, CON-B01-SOG-1050, P-MDEL-1030","CON-B02-SOG-1060, CON-B02-SOG-1060, AB-SUB-B02-SOG-1010, AB-SUB-B02-SOG-1000",0,0%,No,No
0,CON-B02-SOG-1060,Curing & Smoothing Surface for S.O.G (B02) (Sog),Approved Baseline.CON.P02.B02.SUB.2ndB.1,Approved Baseline,10,10,11-Jun-26,20-Jun-26,11-Jun-26,20-Jun-26,258,280,0,0,0,0,"CON-B02-SOG-1050, CON-B02-SOG-1050",HO-1020,0,0%,No,No
0,,,,,57,57,15-Feb-26,12-Apr-26,15-Feb-26,12-Apr-26,0,0,0,0,0,1,,,1,,,
0,CON-B02-BAS01-1000,"Scaffolding works for Walls, Col. & Cores (B02) (Bas 01)",Approved Baseline.CON.P02.B02.SUB.1stB,Approved Baseline,7,7,15-Feb-26,22-Feb-26,15-Feb-26,22-Feb-26,0,0,0,0,0,0,CON-B02-BAS02-1090,"CON-B02-BAS01-1010, CON-B03-BAS01-1000, CON-B02-BAS01-1010",0,0%,Yes,Yes
0,CON-B02-BAS01-1010,"RFT for Walls, Col. & Cores (B02) (Bas 01)",Approved Baseline.CON.P02.B02.SUB.1stB,Approved Baseline,12,12,15-Feb-26,28-Feb-26,15-Feb-26,28-Feb-26,0,0,0,0,0,1,"CON-B02-BAS01-1000, CON-B02-BAS01-1000, E-APP-B02-BAS01-1000, P-MDEL-1160","CON-B02-BAS01-1020, CON-B03-BAS01-1010, CON-B02-BAS01-1020",1,0%,Yes,Yes
0,CON-B02-BAS01-1020,"Shuttering for Walls, Col. & Cores (B02) (Bas 01)",Approved Baseline.CON.P02.B02.SUB.1stB,Approved Baseline,12,12,17-Feb-26,2-Mar-26,17-Feb-26,2-Mar-26,0,0,0,0,0,0,"CON-B02-BAS01-1010, CON-B02-BAS01-1010, E-APP-B02-BAS01-1000","CON-B02-BAS01-1030, CON-B03-BAS01-1020",0,0%,Yes,No
0,CON-B02-BAS01-1030,"Pouring for Walls, Col. & Cores (B02) (Bas 01)",Approved Baseline.CON.P02.B02.SUB.1stB,Approved Baseline,2,2,3-Mar-26,4-Mar-26,3-Mar-26,4-Mar-26,0,0,0,0,0,0,"CON-B02-BAS01-1020, P-MDEL-1030","CON-B03-BAS01-1030, CON-B02-BAS01-1040, AB-SUB-B02-BAS1-1000",0,0%,Yes,No
0,CON-B02-BAS01-1040,Shuttering for Slabs & Beams (B02) (Bas 01),Approved Baseline.CON.P02.B02.SUB.1stB,Approved Baseline,8,8,5-Mar-26,14-Mar-26,5-Mar-26,14-Mar-26,0,0,0,0,0,0,"E-APP-B02-BAS01-1030, E-APP-B02-BAS01-1020, CON-B02-BAS01-1030, CON-B02-BAS02-1110","CON-B02-BAS01-1050, CON-B02-BAS01-1060, CON-B03-BAS01-1040, CON-B02-BAS01-1060",0,0%,Yes,No
0,CON-B02-BAS01-1050,Shuttering for Stairs (B02) (Bas 01),Approved Baseline.CON.P02.B02.SUB.1stB,Approved Baseline,6,6,8-Mar-26,14-Mar-26,8-Mar-26,14-Mar-26,0,3,0,0,0,0,"CON-B02-BAS01-1040, E-APP-B02-BAS01-1010","CON-B02-BAS01-1070, CON-B03-BAS01-1060, CON-B02-BAS01-1070",0,0%,No,No
0,CON-B02-BAS01-1060,RFT for Slabs & Beams (B02) (Bas 01),Approved Baseline.CON.P02.B02.SUB.1stB,Approved Baseline,10,10,8-Mar-26,23-Mar-26,8-Mar-26,23-Mar-26,0,0,0,0,0,0,"CON-B02-BAS01-1040, CON-B02-BAS01-1040, E-APP-B02-BAS01-1020, E-APP-B02-BAS01-1030, P-MDEL-1160","CON-B03-BAS01-1050, CON-B02-BAS01-1090",0,0%,Yes,No
0,CON-B02-BAS01-1070,RFT for Stairs  (B02) (Bas 01),Approved Baseline.CON.P02.B02.SUB.1stB,Approved Baseline,6,6,10-Mar-26,21-Mar-26,10-Mar-26,21-Mar-26,0,3,0,0,0,0,"CON-B02-BAS01-1050, CON-B02-BAS01-1050, E-APP-B02-BAS01-1010, P-MDEL-1160","CON-B03-BAS01-1070, CON-B02-BAS01-1080",0,0%,No,No
0,CON-B02-BAS01-1080,Pouring for Stairs  (B02) (Bas 01),Approved Baseline.CON.P02.B02.SUB.1stB,Approved Baseline,2,2,22-Mar-26,23-Mar-26,22-Mar-26,23-Mar-26,0,3,0,0,0,0,"CON-B02-BAS01-1070, P-MDEL-1030","CON-B03-BAS01-1080, CON-B02-BAS01-1100, AB-SUB-B02-BAS1-1010",0,0%,No,No
0,CON-B02-BAS01-1090,Pouring for Slabs & Beams (B02) (Bas 01),Approved Baseline.CON.P02.B02.SUB.1stB,Approved Baseline,2,2,24-Mar-26,25-Mar-26,24-Mar-26,25-Mar-26,0,0,0,0,0,0,"CON-B02-BAS01-1060, P-MDEL-1030","CON-B02-BAS01-1110, AB-SUB-B02-BAS1-1020, AB-SUB-B02-BAS1-1030, CON-B02-GR-1000",0,0%,Yes,No
0,CON-B02-BAS01-1100,"Curing for Slabs, Beams Stairs (B02) (Bas 01)",Approved Baseline.CON.P02.B02.SUB.1stB,Approved Baseline,5,5,24-Mar-26,28-Mar-26,24-Mar-26,28-Mar-26,4,4,0,0,0,0,CON-B02-BAS01-1080,"CON-B03-BAS01-1100, CON-B02-BAS01-1110",0,0%,No,No
0,CON-B02-BAS01-1110,Dismantling Formwork (B02) (Bas 01),Approved Baseline.CON.P02.B02.SUB.1stB,Approved Baseline,1,1,12-Apr-26,12-Apr-26,12-Apr-26,12-Apr-26,0,0,0,0,0,0,"CON-B02-BAS01-1090, CON-B02-BAS01-1100",CON-B02-GR-1040,0,0%,Yes,No
0,,,,,340,340,30-Mar-26,4-Mar-27,30-Mar-26,4-Mar-27,0,23,0,0,0,14,,,14,,,
0,,,,,65,65,30-Mar-26,2-Jun-26,30-Mar-26,2-Jun-26,0,32,0,0,0,1,,,1,,,
0,CON-B02-GR-1000,"Scaffolding works for Walls, Col. & Cores (B02) (GR)",Approved Baseline.CON.P02.B02.SUP.GF,Approved Baseline,7,7,30-Mar-26,6-Apr-26,30-Mar-26,6-Apr-26,0,4,0,0,0,0,CON-B02-BAS01-1090,"CON-B02-GR-1010, CON-B02-GR-1010",0,0%,No,No
0,CON-B02-GR-1010,"RFT for Walls, Col. & Cores (B02) (GR)",Approved Baseline.CON.P02.B02.SUP.GF,Approved Baseline,12,12,30-Mar-26,12-Apr-26,30-Mar-26,12-Apr-26,0,4,0,0,0,1,"CON-B02-GR-1000, CON-B02-GR-1000, E-APP-B02-GR-1000, P-MDEL-1130","CON-B02-GR-1020, CON-B02-GR-1020",1,0%,No,No
0,CON-B02-GR-1020,"Shuttering for Walls, Col. & Cores (B02) (GR)",Approved Baseline.CON.P02.B02.SUP.GF,Approved Baseline,12,12,1-Apr-26,15-Apr-26,1-Apr-26,15-Apr-26,0,4,0,0,0,0,"CON-B02-GR-1010, CON-B02-GR-1010, E-APP-B02-GR-1000",CON-B02-GR-1030,0,0%,No,No
0,CON-B02-GR-1030,"Pouring for Walls, Col. & Cores (B02) (GR)",Approved Baseline.CON.P02.B02.SUP.GF,Approved Baseline,2,2,16-Apr-26,18-Apr-26,16-Apr-26,18-Apr-26,0,4,0,0,0,0,"CON-B02-GR-1020, P-MDEL-1030","CON-B02-GR-1040, AB-SUB-B02-GR-1000, CON-B02-GR-1050",0,0%,No,No
0,CON-B02-GR-1050,Shuttering for Stairs  (B02) (GR),Approved Baseline.CON.P02.B02.SUP.GF,Approved Baseline,8,8,20-Apr-26,28-Apr-26,20-Apr-26,28-Apr-26,0,13,0,0,0,0,"CON-B02-GR-1030, E-APP-B02-GR-1010","CON-B02-GR-1070, CON-B02-GR-1070",0,0%,No,No
0,CON-B02-GR-1070,RFT for Stairs  (B02) (GR),Approved Baseline.CON.P02.B02.SUP.GF,Approved Baseline,8,8,22-Apr-26,30-Apr-26,22-Apr-26,30-Apr-26,0,13,0,0,0,0,"CON-B02-GR-1050, CON-B02-GR-1050, E-APP-B02-GR-1010, P-MDEL-1130",CON-B02-GR-1080,0,0%,No,No
0,CON-B02-GR-1040,Shuttering for Slabs & Beams (B02) (GR),Approved Baseline.CON.P02.B02.SUP.GF,Approved Baseline,10,10,23-Apr-26,4-May-26,23-Apr-26,4-May-26,0,0,0,0,0,0,"CON-B02-GR-1030, CON-B02-BAS01-1110, E-APP-B02-GR-1020, E-APP-B02-GR-1030","CON-B02-GR-1060, CON-B02-GR-1060",0,0%,Yes,No
0,CON-B02-GR-1060,RFT for Slabs & Beams (B02) (GR),Approved Baseline.CON.P02.B02.SUP.GF,Approved Baseline,12,12,26-Apr-26,9-May-26,26-Apr-26,9-May-26,0,0,0,0,0,0,"CON-B02-GR-1040, CON-B02-GR-1040, E-APP-B02-GR-1020, E-APP-B02-GR-1030, P-MDEL-1130",CON-B02-GR-1100,0,0%,Yes,No
0,CON-B02-GR-1080,Pouring for Stairs  (B02) (GR),Approved Baseline.CON.P02.B02.SUP.GF,Approved Baseline,2,2,2-May-26,3-May-26,2-May-26,3-May-26,0,13,0,0,0,0,"CON-B02-GR-1070, P-MDEL-1030","CON-B02-GR-1090, AB-SUB-B02-GR-1010",0,0%,No,No
0,CON-B02-GR-1090,"Curing for Slabs, Beams Stairs (B02) (GR)",Approved Baseline.CON.P02.B02.SUP.GF,Approved Baseline,5,5,4-May-26,8-May-26,4-May-26,8-May-26,3,15,0,0,0,0,CON-B02-GR-1080,CON-B02-1ST-1000,0,0%,No,No
0,CON-B02-GR-1100,Pouring for Slabs & Beams (B02) (GR),Approved Baseline.CON.P02.B02.SUP.GF,Approved Baseline,2,2,10-May-26,11-May-26,10-May-26,11-May-26,0,0,0,0,0,0,"CON-B02-GR-1060, P-MDEL-1030","CON-B02-GR-1110, KD-MS-1040, AB-SUB-B02-GR-1020, AB-SUB-B02-GR-1030",0,0%,Yes,No
0,CON-B02-GR-1110,Dismantling Formwork (B02) (GR),Approved Baseline.CON.P02.B02.SUP.GF,Approved Baseline,1,1,2-Jun-26,2-Jun-26,2-Jun-26,2-Jun-26,19,32,0,0,0,0,CON-B02-GR-1100,CON-B02-1ST-1040,0,0%,No,No
0,,,,,58,58,1-Jun-26,28-Jul-26,1-Jun-26,28-Jul-26,0,35,0,0,0,10,,,10,,,
0,CON-B02-1ST-1000,"Scaffolding works for Walls, Col. & Cores (B02) (1st)",Approved Baseline.CON.P02.B02.SUP.1stF,Approved Baseline,6,6,1-Jun-26,7-Jun-26,1-Jun-26,7-Jun-26,0,10,0,0,0,0,CON-B02-GR-1090,"CON-B02-1ST-1010, CON-B02-1ST-1010",0,0%,No,No
0,CON-B02-1ST-1010,"RFT for Walls, Col. & Cores (B02) (1st)",Approved Baseline.CON.P02.B02.SUP.1stF,Approved Baseline,10,10,4-Jun-26,15-Jun-26,4-Jun-26,15-Jun-26,0,10,0,0,0,10,"CON-B02-1ST-1000, CON-B02-1ST-1000, E-APP-B02-1ST-1000, P-MDEL-1120","CON-B02-1ST-1020, CON-B02-1ST-1020",10,0%,No,No
0,CON-B02-1ST-1020,"Shuttering for Walls, Col. & Cores (B02) (1st)",Approved Baseline.CON.P02.B02.SUP.1stF,Approved Baseline,10,10,8-Jun-26,18-Jun-26,8-Jun-26,18-Jun-26,0,10,0,0,0,0,"CON-B02-1ST-1010, CON-B02-1ST-1010, E-APP-B02-1ST-1000",CON-B02-1ST-1030,0,0%,No,No
0,CON-B02-1ST-1030,"Pouring for Walls, Col. & Cores (B02) (1st)",Approved Baseline.CON.P02.B02.SUP.1stF,Approved Baseline,2,2,20-Jun-26,21-Jun-26,20-Jun-26,21-Jun-26,0,10,0,0,0,0,"CON-B02-1ST-1020, P-MDEL-1030","CON-B02-1ST-1040, AB-SUB-B02-1ST-1000",0,0%,No,No
0,CON-B02-1ST-1040,"Shuttering for Slabs, Beams & Stairs (B02) (1st)",Approved Baseline.CON.P02.B02.SUP.1stF,Approved Baseline,12,12,22-Jun-26,6-Jul-26,22-Jun-26,6-Jul-26,0,10,0,0,0,0,"E-APP-B02-1ST-1030, E-APP-B02-1ST-1020, E-APP-B02-1ST-1010, CON-B02-1ST-1030, CON-B02-GR-1110","CON-B02-1ST-1050, CON-B02-1ST-1050",0,0%,No,No
0,CON-B02-1ST-1050,"RFT for Slabs, Beams & Stairs (B02) (1st)",Approved Baseline.CON.P02.B02.SUP.1stF,Approved Baseline,12,12,27-Jun-26,11-Jul-26,27-Jun-26,11-Jul-26,0,10,0,0,0,0,"CON-B02-1ST-1040, CON-B02-1ST-1040, E-APP-B02-1ST-1010, E-APP-B02-1ST-1020, E-APP-B02-1ST-1030, P-MDEL-1120",CON-B02-1ST-1060,0,0%,No,No
0,CON-B02-1ST-1060,"Pouring for Slabs, Beams & Stairs (B02) (1st)",Approved Baseline.CON.P02.B02.SUP.1stF,Approved Baseline,3,3,12-Jul-26,14-Jul-26,12-Jul-26,14-Jul-26,0,10,0,0,0,0,"CON-B02-1ST-1050, P-MDEL-1030","CON-B02-1ST-1070, CON-B02-1ST-1080, AB-SUB-B02-1ST-1010, AB-SUB-B02-1ST-1020, AB-SUB-B02-1ST-1030",0,0%,No,No
0,CON-B02-1ST-1070,"Curing for Slabs, Beams & Stairs (B02) (1st)",Approved Baseline.CON.P02.B02.SUP.1stF,Approved Baseline,5,5,15-Jul-26,19-Jul-26,15-Jul-26,19-Jul-26,0,13,0,0,0,0,CON-B02-1ST-1060,CON-B02-2ND-1000,0,0%,No,No
0,CON-B02-1ST-1080,Dismantling Formwork (B02) (1st),Approved Baseline.CON.P02.B02.SUP.1stF,Approved Baseline,1,1,28-Jul-26,28-Jul-26,28-Jul-26,28-Jul-26,21,35,0,0,0,0,CON-B02-1ST-1060,CON-B02-2ND-1040,0,0%,No,No
0,,,,,62,62,28-Jul-26,27-Sep-26,28-Jul-26,27-Sep-26,0,35,0,0,0,1,,,1,,,
0,CON-B02-2ND-1000,"Scaffolding works for Walls, Col. & Cores (B02) (2nd)",Approved Baseline.CON.P02.B02.SUP.2ndF,Approved Baseline,5,5,28-Jul-26,2-Aug-26,28-Jul-26,2-Aug-26,0,11,0,0,0,0,CON-B02-1ST-1070,"CON-B02-2ND-1010, CON-B02-2ND-1010",0,0%,No,No
0,CON-B02-2ND-1010,"RFT for Walls, Col. & Cores (B02) (2nd)",Approved Baseline.CON.P02.B02.SUP.2ndF,Approved Baseline,12,12,30-Jul-26,12-Aug-26,30-Jul-26,12-Aug-26,0,11,0,0,0,1,"CON-B02-2ND-1000, CON-B02-2ND-1000, E-APP-B02-2ND-1000, P-MDEL-1110","CON-B02-2ND-1020, CON-B02-2ND-1020",1,0%,No,No
0,CON-B02-2ND-1020,"Shuttering for Walls, Col. & Cores (B02) (2nd)",Approved Baseline.CON.P02.B02.SUP.2ndF,Approved Baseline,12,12,3-Aug-26,16-Aug-26,3-Aug-26,16-Aug-26,0,11,0,0,0,0,"CON-B02-2ND-1010, CON-B02-2ND-1010, E-APP-B02-2ND-1000",CON-B02-2ND-1030,0,0%,No,No
0,CON-B02-2ND-1030,"Pouring for Walls, Col. & Cores (B02) (2nd)",Approved Baseline.CON.P02.B02.SUP.2ndF,Approved Baseline,2,2,17-Aug-26,18-Aug-26,17-Aug-26,18-Aug-26,0,11,0,0,0,0,"CON-B02-2ND-1020, P-MDEL-1030","CON-B02-2ND-1040, AB-SUB-B02-2ND-1000",0,0%,No,No
0,CON-B02-2ND-1040,"Shuttering for Slabs, Beams & Stairs (B02) (2nd)",Approved Baseline.CON.P02.B02.SUP.2ndF,Approved Baseline,15,15,19-Aug-26,6-Sep-26,19-Aug-26,6-Sep-26,0,11,0,0,0,0,"E-APP-B02-2ND-1030, E-APP-B02-2ND-1020, E-APP-B02-2ND-1010, CON-B02-2ND-1030, CON-B02-1ST-1080","CON-B02-2ND-1050, CON-B02-2ND-1050",0,0%,No,No
0,CON-B02-2ND-1050,"RFT for Slabs, Beams & Stairs (B02) (2nd)",Approved Baseline.CON.P02.B02.SUP.2ndF,Approved Baseline,15,15,24-Aug-26,10-Sep-26,24-Aug-26,10-Sep-26,0,11,0,0,0,0,"CON-B02-2ND-1040, CON-B02-2ND-1040, E-APP-B02-2ND-1010, E-APP-B02-2ND-1020, E-APP-B02-2ND-1030, P-MDEL-1110",CON-B02-2ND-1060,0,0%,No,No
0,CON-B02-2ND-1060,"Pouring for Slabs, Beams & Stairs (B02) (2nd)",Approved Baseline.CON.P02.B02.SUP.2ndF,Approved Baseline,3,3,12-Sep-26,14-Sep-26,12-Sep-26,14-Sep-26,0,11,0,0,0,0,"CON-B02-2ND-1050, P-MDEL-1030","CON-B02-2ND-1070, CON-B02-2ND-1080, AB-SUB-B02-2ND-1010, AB-SUB-B02-2ND-1020, AB-SUB-B02-2ND-1030",0,0%,No,No
0,CON-B02-2ND-1070,"Curing for Slabs, Beams & Stairs (B02) (2nd)",Approved Baseline.CON.P02.B02.SUP.2ndF,Approved Baseline,5,5,15-Sep-26,19-Sep-26,15-Sep-26,19-Sep-26,0,13,0,0,0,0,CON-B02-2ND-1060,CON-B02-3RD-1000,0,0%,No,No
0,CON-B02-2ND-1080,Dismantling Formwork (B02) (2nd),Approved Baseline.CON.P02.B02.SUP.2ndF,Approved Baseline,1,1,27-Sep-26,27-Sep-26,27-Sep-26,27-Sep-26,23,35,0,0,0,0,CON-B02-2ND-1060,CON-B02-3RD-1040,0,0%,No,No
0,,,,,61,61,28-Sep-26,27-Nov-26,28-Sep-26,27-Nov-26,0,35,0,0,0,1,,,1,,,
0,CON-B02-3RD-1000,"Scaffolding works for Walls, Col. & Cores (B02) (3rd)",Approved Baseline.CON.P02.B02.SUP.3rdF,Approved Baseline,5,5,28-Sep-26,3-Oct-26,28-Sep-26,3-Oct-26,0,10,0,0,0,0,CON-B02-2ND-1070,"CON-B02-3RD-1010, CON-B02-3RD-1010",0,0%,No,No
0,CON-B02-3RD-1010,"RFT for Walls, Col. & Cores (B02) (3rd)",Approved Baseline.CON.P02.B02.SUP.3rdF,Approved Baseline,12,12,30-Sep-26,14-Oct-26,30-Sep-26,14-Oct-26,0,10,0,0,0,1,"CON-B02-3RD-1000, CON-B02-3RD-1000, E-APP-B02-3RD-1000, P-MDEL-1100","CON-B02-3RD-1020, CON-B02-3RD-1020",1,0%,No,No
0,CON-B02-3RD-1020,"Shuttering for Walls, Col. & Cores (B02) (3rd)",Approved Baseline.CON.P02.B02.SUP.3rdF,Approved Baseline,12,12,4-Oct-26,18-Oct-26,4-Oct-26,18-Oct-26,0,10,0,0,0,0,"CON-B02-3RD-1010, CON-B02-3RD-1010, E-APP-B02-3RD-1000",CON-B02-3RD-1030,0,0%,No,No
0,CON-B02-3RD-1030,"Pouring for Walls, Col. & Cores (B02) (3rd)",Approved Baseline.CON.P02.B02.SUP.3rdF,Approved Baseline,2,2,19-Oct-26,20-Oct-26,19-Oct-26,20-Oct-26,0,10,0,0,0,0,"CON-B02-3RD-1020, P-MDEL-1030","CON-B02-3RD-1040, AB-SUB-B02-3RD-1000",0,0%,No,No
0,CON-B02-3RD-1040,"Shuttering for Slabs, Beams & Stairs(B02) (3rd)",Approved Baseline.CON.P02.B02.SUP.3rdF,Approved Baseline,15,15,21-Oct-26,7-Nov-26,21-Oct-26,7-Nov-26,0,10,0,0,0,0,"E-APP-B02-3RD-1030, E-APP-B02-3RD-1020, E-APP-B02-3RD-1010, CON-B02-3RD-1030, CON-B02-2ND-1080","CON-B02-3RD-1050, CON-B02-3RD-1050",0,0%,No,No
0,CON-B02-3RD-1050,"RFT for Slabs, Beams & Stairs (B02) (3rd)",Approved Baseline.CON.P02.B02.SUP.3rdF,Approved Baseline,15,15,26-Oct-26,11-Nov-26,26-Oct-26,11-Nov-26,0,10,0,0,0,0,"CON-B02-3RD-1040, CON-B02-3RD-1040, E-APP-B02-3RD-1010, E-APP-B02-3RD-1020, E-APP-B02-3RD-1030, P-MDEL-1100",CON-B02-3RD-1060,0,0%,No,No
0,CON-B02-3RD-1060,"Pouring for Slabs, Beams & Stairs (B02) (3rd)",Approved Baseline.CON.P02.B02.SUP.3rdF,Approved Baseline,3,3,12-Nov-26,15-Nov-26,12-Nov-26,15-Nov-26,0,10,0,0,0,0,"CON-B02-3RD-1050, P-MDEL-1030","CON-B02-3RD-1070, CON-B02-3RD-1080, AB-SUB-B02-3RD-1010, AB-SUB-B02-3RD-1020, AB-SUB-B02-3RD-1030",0,0%,No,No
0,CON-B02-3RD-1070,"Curing for Slabs, Beams & Stairs (B02) (3rd)",Approved Baseline.CON.P02.B02.SUP.3rdF,Approved Baseline,5,5,16-Nov-26,20-Nov-26,16-Nov-26,20-Nov-26,0,11,0,0,0,0,CON-B02-3RD-1060,CON-B02-4TH-1000,0,0%,No,No
0,CON-B02-3RD-1080,Dismantling Formwork (B02) (3rd),Approved Baseline.CON.P02.B02.SUP.3rdF,Approved Baseline,1,1,27-Nov-26,27-Nov-26,27-Nov-26,27-Nov-26,23,35,0,0,0,0,CON-B02-3RD-1060,CON-B02-4TH-1040,0,0%,No,No
0,,,,,61,61,29-Nov-26,28-Jan-27,29-Nov-26,28-Jan-27,0,33,0,0,0,1,,,1,,,
0,CON-B02-4TH-1000,"Scaffolding works for Walls, Col. & Cores (B02) (4th)",Approved Baseline.CON.P02.B02.SUP.4thF,Approved Baseline,5,5,29-Nov-26,3-Dec-26,29-Nov-26,3-Dec-26,0,10,0,0,0,0,CON-B02-3RD-1070,"CON-B02-4TH-1010, CON-B02-4TH-1010",0,0%,No,No
0,CON-B02-4TH-1010,"RFT for Walls, Col. & Cores (B02) (4th)",Approved Baseline.CON.P02.B02.SUP.4thF,Approved Baseline,12,12,1-Dec-26,14-Dec-26,1-Dec-26,14-Dec-26,0,10,0,0,0,1,"CON-B02-4TH-1000, CON-B02-4TH-1000, E-APP-B02-4TH-1000, P-MDEL-1090","CON-B02-4TH-1020, CON-B02-4TH-1020",1,0%,No,No
0,CON-B02-4TH-1020,"Shuttering for Walls, Col. & Cores (B02) (4th)",Approved Baseline.CON.P02.B02.SUP.4thF,Approved Baseline,12,12,5-Dec-26,17-Dec-26,5-Dec-26,17-Dec-26,0,10,0,0,0,0,"CON-B02-4TH-1010, CON-B02-4TH-1010, E-APP-B02-4TH-1000",CON-B02-4TH-1030,0,0%,No,No
0,CON-B02-4TH-1030,"Pouring for Walls, Col. & Cores (B02) (4th)",Approved Baseline.CON.P02.B02.SUP.4thF,Approved Baseline,2,2,19-Dec-26,20-Dec-26,19-Dec-26,20-Dec-26,0,10,0,0,0,0,"CON-B02-4TH-1020, P-MDEL-1030","CON-B02-4TH-1040, AB-SUB-B02-4TH-1000",0,0%,No,No
0,CON-B02-4TH-1040,"Shuttering for Slabs, Beams & Stairs (B02) (4th)",Approved Baseline.CON.P02.B02.SUP.4thF,Approved Baseline,15,15,21-Dec-26,6-Jan-27,21-Dec-26,6-Jan-27,0,10,0,0,0,0,"E-APP-B02-4TH-1030, E-APP-B02-4TH-1020, E-APP-B02-4TH-1010, CON-B02-4TH-1030, CON-B02-3RD-1080","CON-B02-4TH-1050, CON-B02-4TH-1050",0,0%,No,No
0,CON-B02-4TH-1050,"RFT for Slabs, Beams & Stairs (B02) (4th)",Approved Baseline.CON.P02.B02.SUP.4thF,Approved Baseline,15,15,24-Dec-26,11-Jan-27,24-Dec-26,11-Jan-27,0,10,0,0,0,0,"CON-B02-4TH-1040, CON-B02-4TH-1040, E-APP-B02-4TH-1010, E-APP-B02-4TH-1020, E-APP-B02-4TH-1030, P-MDEL-1090",CON-B02-4TH-1060,0,0%,No,No
0,CON-B02-4TH-1060,"Pouring for Slabs, Beams & Stairs (B02) (4th)",Approved Baseline.CON.P02.B02.SUP.4thF,Approved Baseline,3,3,12-Jan-27,14-Jan-27,12-Jan-27,14-Jan-27,0,10,0,0,0,0,"CON-B02-4TH-1050, P-MDEL-1030","CON-B02-4TH-1070, CON-B02-4TH-1080, AB-SUB-B02-4TH-1010, AB-SUB-B02-4TH-1020, AB-SUB-B02-4TH-1030",0,0%,No,No
0,CON-B02-4TH-1070,"Curing for Slabs, Beams & Stairs (B02) (4th)",Approved Baseline.CON.P02.B02.SUP.4thF,Approved Baseline,5,5,15-Jan-27,19-Jan-27,15-Jan-27,19-Jan-27,0,13,0,0,0,0,CON-B02-4TH-1060,CON-B02-RF-1000,0,0%,No,No
0,CON-B02-4TH-1080,Dismantling Formwork (B02) (4th),Approved Baseline.CON.P02.B02.SUP.4thF,Approved Baseline,1,1,28-Jan-27,28-Jan-27,28-Jan-27,28-Jan-27,20,33,0,0,0,0,CON-B02-4TH-1060,CON-B02-RF-1060,0,0%,No,No
0,,,,,36,36,28-Jan-27,4-Mar-27,28-Jan-27,4-Mar-27,0,23,0,0,0,0,,,0,,,
0,CON-B02-RF-1000,"Scaffolding works for Walls, Col. & Cores (B02) (RF)",Approved Baseline.CON.P02.B02.SUP.RF,Approved Baseline,2,2,28-Jan-27,30-Jan-27,28-Jan-27,30-Jan-27,0,11,0,0,0,0,CON-B02-4TH-1070,CON-B02-RF-1010,0,0%,No,No
0,CON-B02-RF-1010,"RFT for Walls, Col. & Cores (B02) (RF)",Approved Baseline.CON.P02.B02.SUP.RF,Approved Baseline,3,3,31-Jan-27,2-Feb-27,31-Jan-27,2-Feb-27,0,11,0,0,0,0,"CON-B02-RF-1000, E-APP-B02-RF-1000, P-MDEL-1200",CON-B02-RF-1020,0,0%,No,No
0,CON-B02-RF-1020,"Shuttering for Walls, Col. & Cores (B02) (RF)",Approved Baseline.CON.P02.B02.SUP.RF,Approved Baseline,3,3,3-Feb-27,6-Feb-27,3-Feb-27,6-Feb-27,0,11,0,0,0,0,"CON-B02-RF-1010, E-APP-B02-RF-1000",CON-B02-RF-1030,0,0%,No,No
0,CON-B02-RF-1030,"Pouring for Walls, Col. & Cores (B02) (RF)",Approved Baseline.CON.P02.B02.SUP.RF,Approved Baseline,2,2,7-Feb-27,8-Feb-27,7-Feb-27,8-Feb-27,0,11,0,0,0,0,"CON-B02-RF-1020, P-MDEL-1030","CON-B02-RF-1040, AB-SUB-B02-RF-1000",0,0%,No,No
0,CON-B02-RF-1040,"Shuttering for Slabs, Beams  (B02) (RF)",Approved Baseline.CON.P02.B02.SUP.RF,Approved Baseline,4,4,9-Feb-27,13-Feb-27,9-Feb-27,13-Feb-27,0,11,0,0,0,0,"E-APP-B02-RF-1020, E-APP-B02-RF-1010, CON-B02-RF-1030",CON-B02-RF-1050,0,0%,No,No
0,CON-B02-RF-1050,"RFT for Slabs, Beams  (B02) (RF)",Approved Baseline.CON.P02.B02.SUP.RF,Approved Baseline,4,4,14-Feb-27,17-Feb-27,14-Feb-27,17-Feb-27,0,11,0,0,0,0,"CON-B02-RF-1040, E-APP-B02-RF-1010, E-APP-B02-RF-1020, P-MDEL-1200",CON-B02-RF-1060,0,0%,No,No
0,CON-B02-RF-1060,"Pouring for Slabs, Beams  (B02) (RF)",Approved Baseline.CON.P02.B02.SUP.RF,Approved Baseline,2,2,18-Feb-27,20-Feb-27,18-Feb-27,20-Feb-27,0,11,0,0,0,0,"CON-B02-RF-1050, P-MDEL-1030, CON-B02-4TH-1080","CON-B02-RF-1070, CON-B02-RF-1080, AB-SUB-B02-RF-1010, AB-SUB-B02-RF-1020",0,0%,No,No
0,CON-B02-RF-1070,"Curing for Slabs, Beams  (B02) (RF)",Approved Baseline.CON.P02.B02.SUP.RF,Approved Baseline,5,5,21-Feb-27,25-Feb-27,21-Feb-27,25-Feb-27,6,29,0,0,0,0,CON-B02-RF-1060,CON-B02-RF-1080,0,0%,No,No
0,CON-B02-RF-1080,Dismantling Formwork (B02) (RF),Approved Baseline.CON.P02.B02.SUP.RF,Approved Baseline,1,1,4-Mar-27,4-Mar-27,4-Mar-27,4-Mar-27,1,23,0,0,0,0,"CON-B02-RF-1060, CON-B02-RF-1070",HO-1020,0,0%,No,No
0,,,,,505,505,25-Oct-25,13-Mar-27,25-Oct-25,13-Mar-27,0,14,0,0,0,287,,,287,,,
0,,,,,505,505,25-Oct-25,13-Mar-27,25-Oct-25,13-Mar-27,0,14,0,0,0,218,,,218,,,
0,,,,,194,194,25-Oct-25,6-May-26,25-Oct-25,6-May-26,0,325,0,0,0,205,,,205,,,
0,,,,,33,33,6-Jan-26,7-Feb-26,6-Jan-26,7-Feb-26,0,350,0,0,0,43,,,43,,,
0,CON-B04-FOOT-1000,Shuttering for PC Raft (B04) (footing),Approved Baseline.CON.P01.B04.SUB.1,Approved Baseline,1,1,6-Jan-26,6-Jan-26,6-Jan-26,6-Jan-26,0,0,0,0,0,0,"E-APP-B04-FOOT-1010, CON-EW-B04-1010, P-MDEL-1020","CON-B04-FOOT-1010, AB-SUB-B04-FOOT-1000",0,0%,Yes,Yes
0,CON-B04-FOOT-1010,Pouring for PC Raft (B04) (footing),Approved Baseline.CON.P01.B04.SUB.1,Approved Baseline,1,1,8-Jan-26,8-Jan-26,8-Jan-26,8-Jan-26,0,0,0,0,0,0,"CON-B04-FOOT-1000, P-MDEL-1030","CON-B04-FOOT-1020, AB-SUB-B04-FOOT-1000",0,0%,Yes,Yes
0,CON-B04-FOOT-1020,Curing for PC Raft (B04) (footing),Approved Baseline.CON.P01.B04.SUB.1,Approved Baseline,3,3,9-Jan-26,11-Jan-26,9-Jan-26,11-Jan-26,0,0,0,0,0,0,CON-B04-FOOT-1010,"CON-B04-FOOT-1030, CON-B04-FOOT-1030",0,0%,Yes,Yes
0,CON-B04-FOOT-1030,Waterproofing & Ins. Protection works (B04) (footing),Approved Baseline.CON.P01.B04.SUB.1,Approved Baseline,2,2,12-Jan-26,13-Jan-26,12-Jan-26,13-Jan-26,0,0,0,0,0,0,"CON-B04-FOOT-1020, P-MDEL-1040, E-APP-B04-FOOT-1000, CON-B04-FOOT-1020","CON-B04-FOOT-1040, AB-SUB-B04-FOOT-1030",0,0%,Yes,Yes
0,CON-B04-FOOT-1040,Shuttering for RC Raft & Footings (B04) (footing),Approved Baseline.CON.P01.B04.SUB.1,Approved Baseline,8,8,14-Jan-26,22-Jan-26,14-Jan-26,22-Jan-26,0,0,0,0,0,0,"CON-B04-FOOT-1030, E-APP-B04-FOOT-1020","CON-B04-FOOT-1050, AB-SUB-B04-FOOT-1010, CON-B04-FOOT-1050, CON-B04-FOOT-1060",0,0%,Yes,Yes
0,CON-B04-FOOT-1050,RFT for RC Raft & Footings (B04) (footing),Approved Baseline.CON.P01.B04.SUB.1,Approved Baseline,8,8,15-Jan-26,24-Jan-26,15-Jan-26,24-Jan-26,0,1,0,0,0,1,"CON-B04-FOOT-1040, E-APP-B04-FOOT-1030, CON-B04-FOOT-1040, P-MDEL-1000","CON-B04-FOOT-1080, AB-SUB-B04-FOOT-1020",1,0%,No,No
0,CON-B04-FOOT-1060,Shuttering for Columns & Walls Below SOG (B01) (footing),Approved Baseline.CON.P01.B04.SUB.1,Approved Baseline,5,5,20-Jan-26,26-Jan-26,20-Jan-26,26-Jan-26,0,0,0,0,0,0,"CON-B04-FOOT-1040, E-APP-B04-FOOT-1020","CON-B04-FOOT-1070, CON-B04-FOOT-1070",0,0%,Yes,Yes
0,CON-B04-FOOT-1070,RFT for Columns & Walls Below SOG (B04) (footing),Approved Baseline.CON.P01.B04.SUB.1,Approved Baseline,5,5,21-Jan-26,27-Jan-26,21-Jan-26,27-Jan-26,0,0,0,0,0,0,"CON-B04-FOOT-1060, CON-B04-FOOT-1060, E-APP-B04-FOOT-1030, P-MDEL-1000",CON-B04-FOOT-1090,0,0%,Yes,Yes
0,CON-B04-FOOT-1080,Pouring for RC Raft & Footings (B04) (footing),Approved Baseline.CON.P01.B04.SUB.1,Approved Baseline,2,2,26-Jan-26,27-Jan-26,26-Jan-26,27-Jan-26,0,1,0,0,0,0,"CON-B04-FOOT-1050, P-MDEL-1030","CON-B04-FOOT-1100, AB-SUB-B04-FOOT-1020",0,0%,No,No
0,CON-B04-FOOT-1090,Pouring Columns & Walls Below SOG (B01) (footing),Approved Baseline.CON.P01.B04.SUB.1,Approved Baseline,1,1,28-Jan-26,28-Jan-26,28-Jan-26,28-Jan-26,0,0,0,0,0,0,CON-B04-FOOT-1070,CON-B04-FOOT-1100,0,0%,Yes,Yes
0,CON-B04-FOOT-1100,Curing & Deshuttering for RC Raft & Footings (B04) (footing),Approved Baseline.CON.P01.B04.SUB.1,Approved Baseline,3,3,29-Jan-26,31-Jan-26,29-Jan-26,31-Jan-26,0,0,0,0,0,0,"CON-B04-FOOT-1080, CON-B04-FOOT-1090","CON-B04-FOOT-1110, CON-B04-BAS02-1000",0,0%,Yes,Yes
0,CON-B04-FOOT-1110,Bitumen Ins. for RC Raft & Footings (B04) (footing),Approved Baseline.CON.P01.B04.SUB.1,Approved Baseline,3,3,1-Feb-26,3-Feb-26,1-Feb-26,3-Feb-26,0,286,0,0,0,0,"CON-B04-FOOT-1100, P-MDEL-1050, E-APP-B04-FOOT-1000","CON-B04-FOOT-1120, AB-SUB-B04-FOOT-1030",0,0%,No,No
0,CON-B04-FOOT-1120,Soil Backfilling (B04) (footing),Approved Baseline.CON.P01.B04.SUB.1,Approved Baseline,3,3,4-Feb-26,7-Feb-26,4-Feb-26,7-Feb-26,37,286,0,0,0,42,CON-B04-FOOT-1110,CON-B04-SOG-1000,42,0%,No,No
0,,,,,194,194,25-Oct-25,6-May-26,25-Oct-25,6-May-26,0,325,0,0,0,150,,,150,,,
0,CON-B04-BAS02-1000,"Scaffolding works for Walls, Col. & Cores (B04) (Bas 02)",Approved Baseline.CON.P01.B04.SUB.3,Approved Baseline,7,7,1-Feb-26,8-Feb-26,1-Feb-26,8-Feb-26,0,0,0,0,0,0,CON-B04-FOOT-1100,"CON-B04-BAS02-1010, CON-B04-BAS02-1010",0,0%,Yes,Yes
0,CON-B04-BAS02-1010,"RFT for Walls, Col. & Cores (B04) (Bas 02)",Approved Baseline.CON.P01.B04.SUB.3,Approved Baseline,10,10,1-Feb-26,11-Feb-26,1-Feb-26,11-Feb-26,0,0,0,0,0,1,"CON-B04-BAS02-1000, CON-B04-BAS02-1000, E-APP-B04-BAS02-1000, P-MDEL-1170","CON-B04-BAS02-1020, AB-SUB-B04-BAS2-1000, CON-B04-BAS02-1020",1,0%,Yes,Yes
0,CON-B04-BAS02-1020,"Shuttering for Walls, Col. & Cores (B04) (Bas 02)",Approved Baseline.CON.P01.B04.SUB.3,Approved Baseline,10,10,8-Feb-26,18-Feb-26,8-Feb-26,18-Feb-26,0,0,0,0,0,0,"CON-B04-BAS02-1010, CON-B04-BAS02-1010, E-APP-B04-BAS02-1000",CON-B04-BAS02-1030,0,0%,Yes,Yes
0,CON-B04-BAS02-1030,"Pouring for Walls, Col. & Cores (B04) (Bas 02)",Approved Baseline.CON.P01.B04.SUB.3,Approved Baseline,2,2,19-Feb-26,21-Feb-26,19-Feb-26,21-Feb-26,0,0,0,0,0,0,"CON-B04-BAS02-1020, P-MDEL-1030","CON-B04-BAS02-1040, CON-B04-BAS02-1070, CON-B04-BAS02-1050",0,0%,Yes,Yes
0,CON-B04-BAS02-1040,Shuttering for Slabs & Beams (B04) (Bas 02),Approved Baseline.CON.P01.B04.SUB.3,Approved Baseline,8,8,22-Feb-26,2-Mar-26,22-Feb-26,2-Mar-26,0,0,0,0,0,0,"E-APP-B04-BAS02-1040, E-APP-B04-BAS02-1030, CON-B04-BAS02-1030","CON-B04-BAS02-1060, CON-B04-BAS02-1060",0,0%,Yes,Yes
0,CON-B04-BAS02-1050,Shuttering for Stairs  (B04) (Bas 02),Approved Baseline.CON.P01.B04.SUB.3,Approved Baseline,6,6,23-Feb-26,1-Mar-26,23-Feb-26,1-Mar-26,0,13,0,0,0,0,"E-APP-B04-BAS02-1010, E-APP-B04-BAS02-1020, CON-B04-BAS02-1030","CON-B04-BAS02-1080, CON-B04-BAS02-1080",0,0%,No,No
0,CON-B04-BAS02-1060,RFT for Slabs & Beams (B04) (Bas 02),Approved Baseline.CON.P01.B04.SUB.3,Approved Baseline,10,10,24-Feb-26,7-Mar-26,24-Feb-26,7-Mar-26,0,0,0,0,0,0,"CON-B04-BAS02-1040, CON-B04-BAS02-1040, E-APP-B04-BAS02-1030, E-APP-B04-BAS02-1040, P-MDEL-1170",CON-B04-BAS02-1130,0,0%,Yes,Yes
0,CON-B04-BAS02-1070,Shuttering for  Ramps (B04) (Bas 02),Approved Baseline.CON.P01.B04.SUB.3,Approved Baseline,6,6,24-Feb-26,2-Mar-26,24-Feb-26,2-Mar-26,0,12,0,0,0,0,CON-B04-BAS02-1030,"CON-B04-BAS02-1090, CON-B04-BAS02-1090",0,0%,No,No
0,CON-B04-BAS02-1080,RFT for Stairs  (B04) (Bas 02),Approved Baseline.CON.P01.B04.SUB.3,Approved Baseline,5,5,25-Feb-26,2-Mar-26,25-Feb-26,2-Mar-26,0,13,0,0,0,0,"CON-B04-BAS02-1050, CON-B04-BAS02-1050, E-APP-B04-BAS02-1010, P-MDEL-1170",CON-B04-BAS02-1100,0,0%,No,No
0,CON-B04-BAS02-1090,RFT for Ramps (B04) (Bas 02),Approved Baseline.CON.P01.B04.SUB.3,Approved Baseline,5,5,26-Feb-26,3-Mar-26,26-Feb-26,3-Mar-26,0,12,0,0,0,0,"CON-B04-BAS02-1070, CON-B04-BAS02-1070, E-APP-B04-BAS02-1020, P-MDEL-1170",CON-B04-BAS02-1110,0,0%,No,No
0,CON-B04-BAS02-1100,Pouring for Stairs  (B04) (Bas 02),Approved Baseline.CON.P01.B04.SUB.3,Approved Baseline,2,2,3-Mar-26,4-Mar-26,3-Mar-26,4-Mar-26,0,13,0,0,0,0,"CON-B04-BAS02-1080, P-MDEL-1030","CON-B04-BAS02-1120, AB-SUB-B04-BAS2-1010, CON-B04-BAS02-1150",0,0%,No,No
0,CON-B04-BAS02-1110,Pouring for Ramps (B04) (Bas 02),Approved Baseline.CON.P01.B04.SUB.3,Approved Baseline,2,2,4-Mar-26,5-Mar-26,4-Mar-26,5-Mar-26,0,12,0,0,0,0,"CON-B04-BAS02-1090, P-MDEL-1030","CON-B04-BAS02-1120, AB-SUB-B04-BAS2-1020, CON-B04-BAS02-1150",0,0%,No,No
0,CON-B04-BAS02-1150,Curing for  Ramps & Stairs (B04) (Bas 02),Approved Baseline.CON.P01.B04.SUB.3,Approved Baseline,3,3,6-Mar-26,8-Mar-26,6-Mar-26,8-Mar-26,17,19,0,0,0,0,"CON-B04-BAS02-1100, CON-B04-BAS02-1110",CON-B04-BAS02-1140,0,0%,No,No
0,CON-B04-BAS02-1130,Pouring for Slabs & Beams (B04) (Bas 02),Approved Baseline.CON.P01.B04.SUB.3,Approved Baseline,2,2,8-Mar-26,9-Mar-26,8-Mar-26,9-Mar-26,0,0,0,0,0,0,"CON-B04-BAS02-1060, P-MDEL-1030, CON-B04-WT-1210","CON-B04-BAS02-1140, AB-SUB-B04-BAS2-1030, AB-SUB-B04-BAS2-1040, CON-B04-BAS01-1000, CON-B04-BAS02-1120",0,0%,Yes,Yes
0,CON-B04-BAS02-1120,"Curing for Slabs, Beams (B04) (Bas 02)",Approved Baseline.CON.P01.B04.SUB.3,Approved Baseline,3,3,10-Mar-26,12-Mar-26,10-Mar-26,12-Mar-26,13,15,0,0,0,0,"CON-B04-BAS02-1100, CON-B04-BAS02-1110, CON-B04-BAS02-1130",CON-B04-BAS02-1140,0,0%,No,No
0,CON-B04-BAS02-1140,Dismantling Formwork (B04) (Bas 02),Approved Baseline.CON.P01.B04.SUB.3,Approved Baseline,1,1,26-Mar-26,26-Mar-26,26-Mar-26,26-Mar-26,1,2,0,0,0,0,"CON-B04-BAS02-1130, CON-B04-BAS02-1120, CON-B04-BAS02-1150","CON-B04-SOG-1000, CON-B04-BAS01-1040",0,0%,No,No
0,,,,,115,115,25-Oct-25,16-Feb-26,25-Oct-25,16-Feb-26,0,19,0,0,0,98,,,98,,,
0,CON-B04-WT-1000,Excavation for Water Tank (+198.15) (B04) (Water Tank),Approved Baseline.CON.P01.B04.SUB.3.2,Approved Baseline,10,10,25-Oct-25,4-Nov-25,25-Oct-25,4-Nov-25,0,5,0,0,0,40,"KD-MOB-1000, KD-MOB-1010, KD-MOB-1020",CON-B04-WT-1010,40,0%,No,No
0,CON-B04-WT-1010,Compaction of Soil (B04) (Water Tank),Approved Baseline.CON.P01.B04.SUB.3.2,Approved Baseline,3,3,5-Nov-25,8-Nov-25,5-Nov-25,8-Nov-25,0,5,0,0,0,3,CON-B04-WT-1000,CON-B04-WT-1020,3,0%,No,No
0,CON-B04-WT-1020,Shuttering for PC Raft (B04) (Water Tank),Approved Baseline.CON.P01.B04.SUB.3.2,Approved Baseline,2,2,9-Nov-25,10-Nov-25,9-Nov-25,10-Nov-25,2,5,0,0,0,0,"CON-B04-WT-1010, E-APP-B04-WT-1000, P-MDEL-1020","CON-B04-WT-1030, AB-SUB-B04-WT-1000",0,0%,No,No
0,CON-B04-WT-1030,Pouring for PC Raft (B04) (Water Tank),Approved Baseline.CON.P01.B04.SUB.3.2,Approved Baseline,1,1,13-Nov-25,13-Nov-25,13-Nov-25,13-Nov-25,0,3,0,0,0,0,"CON-B04-WT-1020, P-MDEL-1030","CON-B04-WT-1040, AB-SUB-B04-WT-1000",0,0%,No,No
0,CON-B04-WT-1040,Curing for PC Raft (B04) (Water Tank),Approved Baseline.CON.P01.B04.SUB.3.2,Approved Baseline,3,3,14-Nov-25,16-Nov-25,14-Nov-25,16-Nov-25,4,4,0,0,0,0,CON-B04-WT-1030,CON-B04-WT-1050,0,0%,No,No
0,CON-B04-WT-1050,Waterproofing & Ins. Protection works (B04) (Water Tank),Approved Baseline.CON.P01.B04.SUB.3.2,Approved Baseline,2,2,26-Nov-25,27-Nov-25,26-Nov-25,27-Nov-25,0,0,0,0,0,0,"P-MDEL-1040, E-APP-B04-FOOT-1000, CON-B04-WT-1040",CON-B04-WT-1060,0,0%,Yes,Yes
0,CON-B04-WT-1060,Shuttering for RC Raft (B04) (Water Tank),Approved Baseline.CON.P01.B04.SUB.3.2,Approved Baseline,4,4,29-Nov-25,2-Dec-25,29-Nov-25,2-Dec-25,0,0,0,0,0,0,"CON-B04-WT-1050, E-APP-B04-WT-1010","CON-B04-WT-1070, AB-SUB-B04-WT-1010, CON-B04-WT-1070",0,0%,Yes,Yes
0,CON-B04-WT-1070,RFT for RC Raft (B04) (Water Tank),Approved Baseline.CON.P01.B04.SUB.3.2,Approved Baseline,5,5,3-Dec-25,8-Dec-25,3-Dec-25,8-Dec-25,0,0,0,0,0,0,"CON-B04-WT-1060, E-APP-B04-WT-1020, CON-B04-WT-1060, P-MDEL-1000","CON-B04-WT-1080, AB-SUB-B04-WT-1020",0,0%,Yes,Yes
0,CON-B04-WT-1080,Pouring for RC Raft (B04) (Water Tank),Approved Baseline.CON.P01.B04.SUB.3.2,Approved Baseline,2,2,9-Dec-25,10-Dec-25,9-Dec-25,10-Dec-25,0,0,0,0,0,0,"CON-B04-WT-1070, P-MDEL-1030",CON-B04-WT-1090,0,0%,Yes,Yes
0,CON-B04-WT-1090,Curing & Deshuttering for RC Raft (B04) (Water Tank),Approved Baseline.CON.P01.B04.SUB.3.2,Approved Baseline,3,3,11-Dec-25,13-Dec-25,11-Dec-25,13-Dec-25,0,0,0,0,0,0,CON-B04-WT-1080,CON-B04-WT-1100,0,0%,Yes,Yes
0,CON-B04-WT-1100,Shuttering for Walls (B04) (Water Tank),Approved Baseline.CON.P01.B04.SUB.3.2,Approved Baseline,8,8,13-Dec-25,21-Dec-25,13-Dec-25,21-Dec-25,0,0,0,0,0,0,"CON-B04-WT-1090, E-APP-B04-WT-1030","CON-B04-WT-1110, AB-SUB-B04-WT-1030, CON-B04-WT-1110",0,0%,Yes,Yes
0,CON-B04-WT-1110,RFT for Walls (B04) (Water Tank),Approved Baseline.CON.P01.B04.SUB.3.2,Approved Baseline,8,8,13-Dec-25,21-Dec-25,13-Dec-25,21-Dec-25,0,0,0,0,0,0,"CON-B04-WT-1100, CON-B04-WT-1100, E-APP-B04-WT-1030, P-MDEL-1000","CON-B04-WT-1120, CON-B04-WT-1130, AB-SUB-B04-WT-1030",0,0%,Yes,Yes
0,CON-B04-WT-1120,Installation for Waterstop Insulation (B04) (Water Tank),Approved Baseline.CON.P01.B04.SUB.3.2,Approved Baseline,4,4,17-Dec-25,21-Dec-25,17-Dec-25,21-Dec-25,0,0,0,0,0,0,"CON-B04-WT-1110, P-MDEL-1050",CON-B04-WT-1130,0,0%,Yes,Yes
0,CON-B04-WT-1130,Pouring for Walls (B04) (Water Tank),Approved Baseline.CON.P01.B04.SUB.3.2,Approved Baseline,2,2,22-Dec-25,23-Dec-25,22-Dec-25,23-Dec-25,0,0,0,0,0,0,"CON-B04-WT-1110, P-MDEL-1030, CON-B04-WT-1120","CON-B04-WT-1140, AB-SUB-B04-WT-1030, CON-B04-WT-1140",0,0%,Yes,Yes
0,CON-B04-WT-1140,Curing & Deshuttering for Walls (B04) (Water Tank),Approved Baseline.CON.P01.B04.SUB.3.2,Approved Baseline,5,5,22-Dec-25,26-Dec-25,22-Dec-25,26-Dec-25,0,0,0,0,0,0,"CON-B04-WT-1130, CON-B04-WT-1130","CON-B04-WT-1150, CON-B04-WT-1200, CON-EW-B04-1000",0,0%,Yes,Yes
0,CON-B04-WT-1150,Formwork for Top Slab (B04) (Water Tank),Approved Baseline.CON.P01.B04.SUB.3.2,Approved Baseline,6,6,25-Dec-25,31-Dec-25,25-Dec-25,31-Dec-25,0,38,0,0,0,48,"CON-B04-WT-1140, E-APP-B04-WT-1040","CON-B04-WT-1160, AB-SUB-B04-WT-1040, CON-B04-WT-1160",48,0%,No,No
0,CON-B04-WT-1160,RFT for Top Slab (B04) (Water Tank),Approved Baseline.CON.P01.B04.SUB.3.2,Approved Baseline,6,6,27-Dec-25,1-Jan-26,27-Dec-25,1-Jan-26,0,38,0,0,0,0,"CON-B04-WT-1150, CON-B04-WT-1150, E-APP-B04-WT-1040, P-MDEL-1000","CON-B04-WT-1170, AB-SUB-B04-WT-1040",0,0%,No,No
0,CON-B04-WT-1170,Pouring for Top Slab (B04) (Water Tank),Approved Baseline.CON.P01.B04.SUB.3.2,Approved Baseline,1,1,3-Jan-26,3-Jan-26,3-Jan-26,3-Jan-26,0,38,0,0,0,0,"CON-B04-WT-1160, P-MDEL-1030","CON-B04-WT-1180, AB-SUB-B04-WT-1040",0,0%,No,No
0,CON-B04-WT-1180,Curing & Desmantling Formwork for Top Slab (B04) (Water Tank),Approved Baseline.CON.P01.B04.SUB.3.2,Approved Baseline,5,5,4-Jan-26,8-Jan-26,4-Jan-26,8-Jan-26,0,46,0,0,0,0,CON-B04-WT-1170,CON-B04-WT-1190,0,0%,No,No
0,CON-B04-WT-1190,Clearing Surface & Insulation for Inner Side (B04) (Water Tank),Approved Baseline.CON.P01.B04.SUB.3.2,Approved Baseline,5,5,11-Jan-26,15-Jan-26,11-Jan-26,15-Jan-26,23,39,0,0,0,0,CON-B04-WT-1180,CON-B04-WT-1200,0,0%,No,No
0,CON-B04-WT-1200,Insulation for Outer Side (B04) (Water Tank),Approved Baseline.CON.P01.B04.SUB.3.2,Approved Baseline,5,5,8-Feb-26,12-Feb-26,8-Feb-26,12-Feb-26,0,16,0,0,0,0,"CON-B04-WT-1140, CON-B04-WT-1190, P-MDEL-1060, E-APP-B04-FOOT-1000",CON-B04-WT-1210,0,0%,No,No
0,CON-B04-WT-1210,Backfilling works (B04) (Water Tank),Approved Baseline.CON.P01.B04.SUB.3.2,Approved Baseline,3,3,14-Feb-26,16-Feb-26,14-Feb-26,16-Feb-26,16,16,0,0,0,7,CON-B04-WT-1200,CON-B04-BAS02-1130,7,0%,No,No
0,,,,,40,40,28-Mar-26,6-May-26,28-Mar-26,6-May-26,0,325,0,0,0,51,,,51,,,
0,CON-B04-SOG-1000,Soil Backfilling & Compaction (B04) (Sog),Approved Baseline.CON.P01.B04.SUB.3.1,Approved Baseline,7,7,28-Mar-26,4-Apr-26,28-Mar-26,4-Apr-26,0,249,0,0,0,49,"CON-B03-SOG-1000, CON-B04-BAS02-1140, CON-B04-FOOT-1120",CON-B04-SOG-1010,49,0%,No,No
0,CON-B04-SOG-1010,Soil Compaction Test (B04) (Sog),Approved Baseline.CON.P01.B04.SUB.3.1,Approved Baseline,2,2,5-Apr-26,6-Apr-26,5-Apr-26,6-Apr-26,0,249,0,0,0,2,"CON-B04-SOG-1000, CON-B03-SOG-1010",CON-B04-SOG-1020,2,0%,No,No
0,CON-B04-SOG-1020,DPM Layer works (B04) (Sog),Approved Baseline.CON.P01.B04.SUB.3.1,Approved Baseline,10,10,7-Apr-26,19-Apr-26,7-Apr-26,19-Apr-26,0,249,0,0,0,0,"CON-B04-SOG-1010, P-MDEL-1040, E-APP-B04-FOOT-1000","CON-B04-SOG-1030, CON-B04-SOG-1030",0,0%,No,No
0,CON-B04-SOG-1030,Blinding Concrete works (B04) (Sog),Approved Baseline.CON.P01.B04.SUB.3.1,Approved Baseline,12,12,14-Apr-26,27-Apr-26,14-Apr-26,27-Apr-26,0,249,0,0,0,0,"CON-B04-SOG-1020, CON-B04-SOG-1020, CON-B03-SOG-1030","CON-B04-SOG-1040, CON-B04-SOG-1040",0,0%,No,No
0,CON-B04-SOG-1040,Shuttering & RFT for S.O.G (B04) (Sog),Approved Baseline.CON.P01.B04.SUB.3.1,Approved Baseline,15,15,20-Apr-26,6-May-26,20-Apr-26,6-May-26,0,249,0,0,0,0,"CON-B04-SOG-1030, CON-B04-SOG-1030, CON-B03-SOG-1040, E-APP-B04-SOG-1010, E-APP-B04-SOG-1000, P-MDEL-1150","CON-B04-SOG-1050, CON-B04-SOG-1050, AB-SUB-B04-SOG-1000, AB-SUB-B04-SOG-1010",0,0%,No,No
0,CON-B04-SOG-1050,Pouring for S.O.G (B04) (Sog),Approved Baseline.CON.P01.B04.SUB.3.1,Approved Baseline,10,10,26-Apr-26,6-May-26,26-Apr-26,6-May-26,0,249,0,0,0,0,"CON-B04-SOG-1040, CON-B04-SOG-1040, CON-B03-SOG-1050, P-MDEL-1030","CON-B04-SOG-1060, CON-B04-SOG-1060, AB-SUB-B04-SOG-1010",0,0%,No,No
0,CON-B04-SOG-1060,Curing & Smoothing Surface for S.O.G (B04) (Sog),Approved Baseline.CON.P01.B04.SUB.3.1,Approved Baseline,10,10,27-Apr-26,6-May-26,27-Apr-26,6-May-26,325,325,0,0,0,0,"CON-B04-SOG-1050, CON-B04-SOG-1050",HO-1040,0,0%,No,No
0,,,,,51,51,10-Mar-26,29-Apr-26,10-Mar-26,29-Apr-26,0,0,0,0,0,12,,,12,,,
0,CON-B04-BAS01-1000,"Scaffolding works for Walls, Col. & Cores (B04) (Bas 01)",Approved Baseline.CON.P01.B04.SUB.2,Approved Baseline,7,7,10-Mar-26,22-Mar-26,10-Mar-26,22-Mar-26,0,0,0,0,0,0,CON-B04-BAS02-1130,"CON-B04-BAS01-1010, CON-B04-BAS01-1010",0,0%,Yes,Yes
0,CON-B04-BAS01-1010,"RFT for Walls, Col. & Cores (B04) (Bas 01)",Approved Baseline.CON.P01.B04.SUB.2,Approved Baseline,8,8,10-Mar-26,23-Mar-26,10-Mar-26,23-Mar-26,0,0,0,0,0,12,"CON-B04-BAS01-1000, CON-B04-BAS01-1000, E-APP-B04-BAS01-1000, P-MDEL-1160","CON-B04-BAS01-1020, CON-B04-BAS01-1020",12,0%,Yes,Yes
0,CON-B04-BAS01-1020,"Shuttering for Walls, Col. & Cores (B04) (Bas 01)",Approved Baseline.CON.P01.B04.SUB.2,Approved Baseline,6,6,15-Mar-26,25-Mar-26,15-Mar-26,25-Mar-26,0,0,0,0,0,0,"CON-B04-BAS01-1010, CON-B04-BAS01-1010, E-APP-B04-BAS01-1000",CON-B04-BAS01-1030,0,0%,Yes,Yes
0,CON-B04-BAS01-1030,"Pouring for Walls, Col. & Cores (B04) (Bas 01)",Approved Baseline.CON.P01.B04.SUB.2,Approved Baseline,2,2,26-Mar-26,28-Mar-26,26-Mar-26,28-Mar-26,0,0,0,0,0,0,"CON-B04-BAS01-1020, P-MDEL-1030","CON-B04-BAS01-1040, CON-B04-BAS01-1050, AB-SUB-B04-BAS1-1000",0,0%,Yes,Yes
0,CON-B04-BAS01-1040,Shuttering for Slabs & Beams (B04) (Bas 01),Approved Baseline.CON.P01.B04.SUB.2,Approved Baseline,8,8,29-Mar-26,6-Apr-26,29-Mar-26,6-Apr-26,0,0,0,0,0,0,"E-APP-B04-BAS01-1040, E-APP-B04-BAS01-1030, CON-B04-BAS01-1030, CON-B04-BAS02-1140","CON-B04-BAS01-1060, CON-B04-BAS01-1070, CON-B04-BAS01-1070",0,0%,Yes,Yes
0,CON-B04-BAS01-1050,Shuttering for Ramps (B04) (Bas 01),Approved Baseline.CON.P01.B04.SUB.2,Approved Baseline,7,7,29-Mar-26,5-Apr-26,29-Mar-26,5-Apr-26,0,0,0,0,0,0,"CON-B04-BAS01-1030, E-APP-B04-BAS01-1020","CON-B04-BAS01-1080, CON-B04-BAS01-1080",0,0%,Yes,Yes
0,CON-B04-BAS01-1060,Shuttering for Stairs  (B04) (Bas 01),Approved Baseline.CON.P01.B04.SUB.2,Approved Baseline,6,6,31-Mar-26,6-Apr-26,31-Mar-26,6-Apr-26,0,0,0,0,0,0,"CON-B04-BAS01-1040, E-APP-B04-BAS01-1010","CON-B04-BAS01-1090, CON-B04-BAS01-1090",0,0%,Yes,Yes
0,CON-B04-BAS01-1070,RFT for Slabs & Beams (B04) (Bas 01),Approved Baseline.CON.P01.B04.SUB.2,Approved Baseline,8,8,2-Apr-26,11-Apr-26,2-Apr-26,11-Apr-26,0,0,0,0,0,0,"CON-B04-BAS01-1040, CON-B04-BAS01-1040, E-APP-B04-BAS01-1030, E-APP-B04-BAS01-1040, P-MDEL-1160",CON-B04-BAS01-1120,0,0%,Yes,Yes
0,CON-B04-BAS01-1080,RFT for  Ramps (B04) (Bas 01),Approved Baseline.CON.P01.B04.SUB.2,Approved Baseline,7,7,4-Apr-26,11-Apr-26,4-Apr-26,11-Apr-26,0,0,0,0,0,0,"CON-B04-BAS01-1050, CON-B04-BAS01-1050, E-APP-B04-BAS01-1020, P-MDEL-1160",CON-B04-BAS01-1110,0,0%,Yes,Yes
0,CON-B04-BAS01-1090,RFT for Stairs  (B04) (Bas 01),Approved Baseline.CON.P01.B04.SUB.2,Approved Baseline,5,5,6-Apr-26,11-Apr-26,6-Apr-26,11-Apr-26,0,0,0,0,0,0,"CON-B04-BAS01-1060, CON-B04-BAS01-1060, E-APP-B04-BAS01-1010, P-MDEL-1160",CON-B04-BAS01-1100,0,0%,Yes,Yes
0,CON-B04-BAS01-1120,Pouring for Slabs & Beams (B04) (Bas 01),Approved Baseline.CON.P01.B04.SUB.2,Approved Baseline,2,2,12-Apr-26,14-Apr-26,12-Apr-26,14-Apr-26,0,0,0,0,0,0,"CON-B04-BAS01-1070, P-MDEL-1030","CON-B04-BAS01-1140, AB-SUB-B04-BAS1-1030, AB-SUB-B04-BAS1-1040, CON-B04-GR-1000, CON-B04-BAS01-1130",0,0%,Yes,Yes
0,CON-B04-BAS01-1100,Pouring for Stairs  (B04) (Bas 01),Approved Baseline.CON.P01.B04.SUB.2,Approved Baseline,2,2,12-Apr-26,14-Apr-26,12-Apr-26,14-Apr-26,0,0,0,0,0,0,"CON-B04-BAS01-1090, P-MDEL-1030","CON-B04-BAS01-1130, CON-B04-BAS01-1150",0,0%,Yes,Yes
0,CON-B04-BAS01-1110,Pouring for  Ramps (B04) (Bas 01),Approved Baseline.CON.P01.B04.SUB.2,Approved Baseline,2,2,12-Apr-26,14-Apr-26,12-Apr-26,14-Apr-26,0,0,0,0,0,0,"CON-B04-BAS01-1080, P-MDEL-1030","AB-SUB-B04-BAS1-1010, AB-SUB-B04-BAS1-1020, CON-B04-BAS01-1150",0,0%,Yes,Yes
0,CON-B04-BAS01-1130,"Curing for Slabs, Beams (B04) (Bas 01)",Approved Baseline.CON.P01.B04.SUB.2,Approved Baseline,3,3,15-Apr-26,17-Apr-26,15-Apr-26,17-Apr-26,11,11,0,0,0,0,"CON-B04-BAS01-1100, CON-B04-BAS01-1120",CON-B04-BAS01-1140,0,0%,No,No
0,CON-B04-BAS01-1150,Curing for  Ramps & Stairs (B04) (Bas 01),Approved Baseline.CON.P01.B04.SUB.2,Approved Baseline,4,4,15-Apr-26,18-Apr-26,15-Apr-26,18-Apr-26,0,0,0,0,0,0,"CON-B04-BAS01-1100, CON-B04-BAS01-1110",CON-B04-BAS01-1140,0,0%,Yes,Yes
0,CON-B04-BAS01-1140,Dismantling Formwork (B04) (Bas 01),Approved Baseline.CON.P01.B04.SUB.2,Approved Baseline,1,1,29-Apr-26,29-Apr-26,29-Apr-26,29-Apr-26,0,0,0,0,0,0,"CON-B04-BAS01-1120, CON-B04-BAS01-1130, CON-B04-BAS01-1150",CON-B04-GR-1040,0,0%,Yes,Yes
0,,,,,333,333,15-Apr-26,13-Mar-27,15-Apr-26,13-Mar-27,0,0,0,0,0,13,,,13,,,
0,,,,,40,40,15-Apr-26,24-May-26,15-Apr-26,24-May-26,0,10,0,0,0,1,,,1,,,
0,CON-B04-GR-1000,"Scaffolding works for Walls, Col. & Cores (B04) (GR)",Approved Baseline.CON.P01.B04.SUP.GF,Approved Baseline,7,7,15-Apr-26,22-Apr-26,15-Apr-26,22-Apr-26,0,0,0,0,0,0,CON-B04-BAS01-1120,"CON-B04-GR-1010, CON-B04-GR-1010",0,0%,Yes,Yes
0,CON-B04-GR-1010,"RFT for Walls, Col. & Cores (B04) (GR)",Approved Baseline.CON.P01.B04.SUP.GF,Approved Baseline,9,9,18-Apr-26,27-Apr-26,18-Apr-26,27-Apr-26,0,0,0,0,0,1,"CON-B04-GR-1000, CON-B04-GR-1000, E-APP-B04-GR-1000, P-MDEL-1130","CON-B04-GR-1020, CON-B04-GR-1020",1,0%,Yes,Yes
0,CON-B04-GR-1020,"Shuttering for Walls, Col. & Cores (B04) (GR)",Approved Baseline.CON.P01.B04.SUP.GF,Approved Baseline,7,7,20-Apr-26,27-Apr-26,20-Apr-26,27-Apr-26,0,0,0,0,0,0,"CON-B04-GR-1010, CON-B04-GR-1010, E-APP-B04-GR-1000",CON-B04-GR-1030,0,0%,Yes,Yes
0,CON-B04-GR-1030,"Pouring for Walls, Col. & Cores (B04) (GR)",Approved Baseline.CON.P01.B04.SUP.GF,Approved Baseline,2,2,28-Apr-26,29-Apr-26,28-Apr-26,29-Apr-26,0,0,0,0,0,0,"CON-B04-GR-1020, P-MDEL-1030","CON-B04-GR-1040, AB-SUB-B04-GR-1000",0,0%,Yes,Yes
0,CON-B04-GR-1040,Shuttering for Slabs & Beams (B04) (GR),Approved Baseline.CON.P01.B04.SUP.GF,Approved Baseline,6,6,30-Apr-26,6-May-26,30-Apr-26,6-May-26,0,0,0,0,0,0,"E-APP-B04-GR-1030, E-APP-B04-GR-1020, CON-B04-GR-1030, CON-B04-BAS01-1140","CON-B04-GR-1050, CON-B04-GR-1060, CON-B04-GR-1060",0,0%,Yes,Yes
0,CON-B04-GR-1050,Shuttering for Stairs (B04) (GR),Approved Baseline.CON.P01.B04.SUP.GF,Approved Baseline,6,6,3-May-26,9-May-26,3-May-26,9-May-26,0,1,0,0,0,0,"CON-B04-GR-1040, E-APP-B04-GR-1010","CON-B04-GR-1070, CON-B04-GR-1070",0,0%,No,Yes
0,CON-B04-GR-1060,RFT for Slabs & Beams (B04) (GR),Approved Baseline.CON.P01.B04.SUP.GF,Approved Baseline,5,5,4-May-26,9-May-26,4-May-26,9-May-26,0,0,0,0,0,0,"CON-B04-GR-1040, CON-B04-GR-1040, E-APP-B04-GR-1020, E-APP-B04-GR-1030, P-MDEL-1130",CON-B04-GR-1080,0,0%,Yes,Yes
0,CON-B04-GR-1070,RFT for Stairs  (B04) (GR),Approved Baseline.CON.P01.B04.SUP.GF,Approved Baseline,4,4,5-May-26,9-May-26,5-May-26,9-May-26,0,1,0,0,0,0,"CON-B04-GR-1050, CON-B04-GR-1050, E-APP-B04-GR-1010, P-MDEL-1130",CON-B04-GR-1090,0,0%,No,Yes
0,CON-B04-GR-1080,Pouring for Slabs & Beams (B04) (GR),Approved Baseline.CON.P01.B04.SUP.GF,Approved Baseline,2,2,10-May-26,11-May-26,10-May-26,11-May-26,0,0,0,0,0,0,"CON-B04-GR-1060, P-MDEL-1030","CON-B04-GR-1110, KD-MS-1040, AB-SUB-B04-GR-1010, AB-SUB-B04-GR-1020, CON-B04-GR-1100",0,0%,Yes,Yes
0,CON-B04-GR-1090,Pouring for Stairs (B04) (GR),Approved Baseline.CON.P01.B04.SUP.GF,Approved Baseline,2,2,10-May-26,11-May-26,10-May-26,11-May-26,0,1,0,0,0,0,"CON-B04-GR-1070, P-MDEL-1030","CON-B04-GR-1100, AB-SUB-B04-GR-1030",0,0%,No,Yes
0,CON-B04-GR-1100,"Curing for Slabs, Beams & Stairs (B04) (GR)",Approved Baseline.CON.P01.B04.SUP.GF,Approved Baseline,3,3,12-May-26,14-May-26,12-May-26,14-May-26,1,1,0,0,0,0,"CON-B04-GR-1090, CON-B04-GR-1080",CON-B04-1ST-1000,0,0%,No,Yes
0,CON-B04-GR-1110,Dismantling Formwork (B04) (GR),Approved Baseline.CON.P01.B04.SUP.GF,Approved Baseline,1,1,24-May-26,24-May-26,24-May-26,24-May-26,10,10,0,0,0,0,CON-B04-GR-1080,CON-B04-1ST-1040,0,0%,No,No
0,,,,,53,53,16-May-26,7-Jul-26,16-May-26,7-Jul-26,0,7,0,0,0,1,,,1,,,
0,CON-B04-1ST-1000,"Scaffolding works for Walls, Col. & Cores (B04) (1st)",Approved Baseline.CON.P01.B04.SUP.1stF,Approved Baseline,5,5,16-May-26,20-May-26,16-May-26,20-May-26,0,0,0,0,0,0,"CON-B04-GR-1100, KD-MS-1040","CON-B04-1ST-1010, CON-B04-1ST-1010",0,0%,Yes,Yes
0,CON-B04-1ST-1010,"RFT for Walls, Col. & Cores (B04) (1st)",Approved Baseline.CON.P01.B04.SUP.1stF,Approved Baseline,7,7,19-May-26,26-May-26,19-May-26,26-May-26,0,0,0,0,0,1,"CON-B04-1ST-1000, CON-B04-1ST-1000, E-APP-B04-1ST-1000, P-MDEL-1120","CON-B04-1ST-1020, CON-B04-1ST-1020",1,0%,Yes,Yes
0,CON-B04-1ST-1020,"Shuttering for Walls, Col. & Cores (B04) (1st)",Approved Baseline.CON.P01.B04.SUP.1stF,Approved Baseline,6,6,21-May-26,1-Jun-26,21-May-26,1-Jun-26,0,0,0,0,0,0,"CON-B04-1ST-1010, CON-B04-1ST-1010, E-APP-B04-1ST-1000",CON-B04-1ST-1030,0,0%,Yes,Yes
0,CON-B04-1ST-1030,"Pouring for Walls, Col. & Cores (B04) (1st)",Approved Baseline.CON.P01.B04.SUP.1stF,Approved Baseline,2,2,2-Jun-26,3-Jun-26,2-Jun-26,3-Jun-26,0,0,0,0,0,0,"CON-B04-1ST-1020, P-MDEL-1030","CON-B04-1ST-1040, AB-SUB-B04-1ST-1000",0,0%,Yes,Yes
0,CON-B04-1ST-1040,"Shuttering for Slabs, Beams & Stairs (B04) (1st)",Approved Baseline.CON.P01.B04.SUP.1stF,Approved Baseline,10,10,4-Jun-26,15-Jun-26,4-Jun-26,15-Jun-26,0,0,0,0,0,0,"E-APP-B04-1ST-1030, E-APP-B04-1ST-1020, E-APP-B04-1ST-1010, CON-B04-1ST-1030, CON-B04-GR-1110","CON-B04-1ST-1050, CON-B04-1ST-1050",0,0%,Yes,Yes
0,CON-B04-1ST-1050,"RFT for Slabs, Beams & Stairs (B04) (1st)",Approved Baseline.CON.P01.B04.SUP.1stF,Approved Baseline,10,10,9-Jun-26,20-Jun-26,9-Jun-26,20-Jun-26,0,0,0,0,0,0,"CON-B04-1ST-1040, CON-B04-1ST-1040, E-APP-B04-1ST-1010, E-APP-B04-1ST-1020, E-APP-B04-1ST-1030, P-MDEL-1120",CON-B04-1ST-1060,0,0%,Yes,Yes
0,CON-B04-1ST-1060,"Pouring for Slabs, Beams & Stairs (B04) (1st)",Approved Baseline.CON.P01.B04.SUP.1stF,Approved Baseline,3,3,21-Jun-26,23-Jun-26,21-Jun-26,23-Jun-26,0,0,0,0,0,0,"CON-B04-1ST-1050, P-MDEL-1030","CON-B04-1ST-1070, CON-B04-1ST-1080, AB-SUB-B04-1ST-1010, AB-SUB-B04-1ST-1020, AB-SUB-B04-1ST-1030",0,0%,Yes,Yes
0,CON-B04-1ST-1070,"Curing for Slabs, Beams & Stairs (B04) (1st)",Approved Baseline.CON.P01.B04.SUP.1stF,Approved Baseline,3,3,24-Jun-26,26-Jun-26,24-Jun-26,26-Jun-26,0,0,0,0,0,0,CON-B04-1ST-1060,CON-B04-2ND-1000,0,0%,Yes,Yes
0,CON-B04-1ST-1080,Dismantling Formwork (B04) (1st),Approved Baseline.CON.P01.B04.SUP.1stF,Approved Baseline,1,1,7-Jul-26,7-Jul-26,7-Jul-26,7-Jul-26,7,7,0,0,0,0,CON-B04-1ST-1060,CON-B04-2ND-1040,0,0%,No,No
0,,,,,52,52,27-Jun-26,17-Aug-26,27-Jun-26,17-Aug-26,0,7,0,0,0,1,,,1,,,
0,CON-B04-2ND-1000,"Scaffolding works for Walls, Col. & Cores (B04) (2nd)",Approved Baseline.CON.P01.B04.SUP.2ndF,Approved Baseline,5,5,27-Jun-26,2-Jul-26,27-Jun-26,2-Jul-26,0,0,0,0,0,0,CON-B04-1ST-1070,"CON-B04-2ND-1010, CON-B04-2ND-1010",0,0%,Yes,Yes
0,CON-B04-2ND-1010,"RFT for Walls, Col. & Cores (B04) (2nd)",Approved Baseline.CON.P01.B04.SUP.2ndF,Approved Baseline,8,8,1-Jul-26,9-Jul-26,1-Jul-26,9-Jul-26,0,0,0,0,0,1,"CON-B04-2ND-1000, CON-B04-2ND-1000, E-APP-B04-2ND-1000, P-MDEL-1110","CON-B04-2ND-1020, CON-B04-2ND-1020",1,0%,Yes,Yes
0,CON-B04-2ND-1020,"Shuttering for Walls, Col. & Cores (B04) (2nd)",Approved Baseline.CON.P01.B04.SUP.2ndF,Approved Baseline,8,8,5-Jul-26,13-Jul-26,5-Jul-26,13-Jul-26,0,0,0,0,0,0,"CON-B04-2ND-1010, CON-B04-2ND-1010, E-APP-B04-2ND-1000",CON-B04-2ND-1030,0,0%,Yes,Yes
0,CON-B04-2ND-1030,"Pouring for Walls, Col. & Cores (B04) (2nd)",Approved Baseline.CON.P01.B04.SUP.2ndF,Approved Baseline,1,1,14-Jul-26,14-Jul-26,14-Jul-26,14-Jul-26,0,0,0,0,0,0,"CON-B04-2ND-1020, P-MDEL-1030","CON-B04-2ND-1040, AB-SUB-B04-2ND-1000",0,0%,Yes,Yes
0,CON-B04-2ND-1040,"Shuttering for Slabs, Beams & Stairs (B04) (2nd)",Approved Baseline.CON.P01.B04.SUP.2ndF,Approved Baseline,10,10,15-Jul-26,27-Jul-26,15-Jul-26,27-Jul-26,0,0,0,0,0,0,"E-APP-B04-2ND-1030, E-APP-B04-2ND-1020, E-APP-B04-2ND-1010, CON-B04-2ND-1030, CON-B04-1ST-1080","CON-B04-2ND-1050, CON-B04-2ND-1050",0,0%,Yes,Yes
0,CON-B04-2ND-1050,"RFT for Slabs, Beams & Stairs (B04) (2nd)",Approved Baseline.CON.P01.B04.SUP.2ndF,Approved Baseline,10,10,20-Jul-26,1-Aug-26,20-Jul-26,1-Aug-26,0,0,0,0,0,0,"CON-B04-2ND-1040, CON-B04-2ND-1040, E-APP-B04-2ND-1010, E-APP-B04-2ND-1020, E-APP-B04-2ND-1030, P-MDEL-1110",CON-B04-2ND-1060,0,0%,Yes,Yes
0,CON-B04-2ND-1060,"Pouring for Slabs, Beams & Stairs (B04) (2nd)",Approved Baseline.CON.P01.B04.SUP.2ndF,Approved Baseline,3,3,2-Aug-26,4-Aug-26,2-Aug-26,4-Aug-26,0,0,0,0,0,0,"CON-B04-2ND-1050, P-MDEL-1030","CON-B04-2ND-1070, CON-B04-2ND-1080, AB-SUB-B04-2ND-1010, AB-SUB-B04-2ND-1020, AB-SUB-B04-2ND-1030",0,0%,Yes,Yes
0,CON-B04-2ND-1070,"Curing for Slabs, Beams & Stairs (B04) (2nd)",Approved Baseline.CON.P01.B04.SUP.2ndF,Approved Baseline,3,3,5-Aug-26,7-Aug-26,5-Aug-26,7-Aug-26,0,0,0,0,0,0,CON-B04-2ND-1060,CON-B04-3RD-1000,0,0%,Yes,Yes
0,CON-B04-2ND-1080,Dismantling Formwork (B04) (2nd),Approved Baseline.CON.P01.B04.SUP.2ndF,Approved Baseline,1,1,17-Aug-26,17-Aug-26,17-Aug-26,17-Aug-26,7,7,0,0,0,0,CON-B04-2ND-1060,CON-B04-3RD-1040,0,0%,No,No
0,,,,,51,51,8-Aug-26,27-Sep-26,8-Aug-26,27-Sep-26,0,5,0,0,0,1,,,1,,,
0,CON-B04-3RD-1000,"Scaffolding works for Walls, Col. & Cores (B04) (3rd)",Approved Baseline.CON.P01.B04.SUP.3rdF,Approved Baseline,5,5,8-Aug-26,12-Aug-26,8-Aug-26,12-Aug-26,0,0,0,0,0,0,CON-B04-2ND-1070,"CON-B04-3RD-1010, CON-B04-3RD-1010",0,0%,Yes,Yes
0,CON-B04-3RD-1010,"RFT for Walls, Col. & Cores (B04) (3rd)",Approved Baseline.CON.P01.B04.SUP.3rdF,Approved Baseline,8,8,11-Aug-26,19-Aug-26,11-Aug-26,19-Aug-26,0,0,0,0,0,1,"CON-B04-3RD-1000, CON-B04-3RD-1000, E-APP-B04-2RD-1000, P-MDEL-1100","CON-B04-3RD-1020, CON-B04-3RD-1020",1,0%,Yes,Yes
0,CON-B04-3RD-1020,"Shuttering for Walls, Col. & Cores (B04) (3rd)",Approved Baseline.CON.P01.B04.SUP.3rdF,Approved Baseline,8,8,15-Aug-26,23-Aug-26,15-Aug-26,23-Aug-26,0,0,0,0,0,0,"CON-B04-3RD-1010, CON-B04-3RD-1010, E-APP-B04-2RD-1000",CON-B04-3RD-1030,0,0%,Yes,Yes
0,CON-B04-3RD-1030,"Pouring for Walls, Col. & Cores (B04) (3rd)",Approved Baseline.CON.P01.B04.SUP.3rdF,Approved Baseline,1,1,24-Aug-26,24-Aug-26,24-Aug-26,24-Aug-26,0,0,0,0,0,0,"CON-B04-3RD-1020, P-MDEL-1030","CON-B04-3RD-1040, AB-SUB-B04-3RD-1000",0,0%,Yes,Yes
0,CON-B04-3RD-1040,"Shuttering for Slabs, Beams & Stairs (B04) (3rd)",Approved Baseline.CON.P01.B04.SUP.3rdF,Approved Baseline,10,10,25-Aug-26,6-Sep-26,25-Aug-26,6-Sep-26,0,0,0,0,0,0,"E-APP-B04-2RD-1030, E-APP-B04-2RD-1020, E-APP-B04-2RD-1010, CON-B04-3RD-1030, CON-B04-2ND-1080","CON-B04-3RD-1050, CON-B04-3RD-1050",0,0%,Yes,Yes
0,CON-B04-3RD-1050,"RFT for Slabs, Beams & Stairs (B04) (3rd)",Approved Baseline.CON.P01.B04.SUP.3rdF,Approved Baseline,10,10,31-Aug-26,10-Sep-26,31-Aug-26,10-Sep-26,0,0,0,0,0,0,"CON-B04-3RD-1040, CON-B04-3RD-1040, E-APP-B04-2RD-1010, E-APP-B04-2RD-1020, E-APP-B04-2RD-1030, P-MDEL-1100",CON-B04-3RD-1060,0,0%,Yes,Yes
0,CON-B04-3RD-1060,"Pouring for Slabs, Beams & Stairs (B04) (3rd)",Approved Baseline.CON.P01.B04.SUP.3rdF,Approved Baseline,3,3,12-Sep-26,14-Sep-26,12-Sep-26,14-Sep-26,0,0,0,0,0,0,"CON-B04-3RD-1050, P-MDEL-1030","CON-B04-3RD-1070, CON-B04-3RD-1080, AB-SUB-B04-3RD-1010, AB-SUB-B04-3RD-1020, AB-SUB-B04-3RD-1030, CON-B04-4TH-1000",0,0%,Yes,Yes
0,CON-B04-3RD-1070,"Curing for Slabs, Beams & Stairs (B04) (3rd)",Approved Baseline.CON.P01.B04.SUP.3rdF,Approved Baseline,3,3,15-Sep-26,17-Sep-26,15-Sep-26,17-Sep-26,9,14,0,0,0,0,CON-B04-3RD-1060,CON-B04-3RD-1080,0,0%,No,No
0,CON-B04-3RD-1080,Dismantling Formwork (B04) (3rd),Approved Baseline.CON.P01.B04.SUP.3rdF,Approved Baseline,1,1,27-Sep-26,27-Sep-26,27-Sep-26,27-Sep-26,5,5,0,0,0,0,"CON-B04-3RD-1060, CON-B04-3RD-1070",CON-B04-4TH-1040,0,0%,No,No
0,,,,,50,50,15-Sep-26,3-Nov-26,15-Sep-26,3-Nov-26,0,6,0,0,0,4,,,4,,,
0,CON-B04-4TH-1000,"Scaffolding works for Walls, Col. & Cores (B04) (4th)",Approved Baseline.CON.P01.B04.SUP.4thF,Approved Baseline,5,5,15-Sep-26,20-Sep-26,15-Sep-26,20-Sep-26,0,0,0,0,0,0,CON-B04-3RD-1060,"CON-B04-4TH-1010, CON-B04-4TH-1010",0,0%,Yes,Yes
0,CON-B04-4TH-1010,"RFT for Walls, Col. & Cores (B04) (4th)",Approved Baseline.CON.P01.B04.SUP.4thF,Approved Baseline,8,8,19-Sep-26,27-Sep-26,19-Sep-26,27-Sep-26,0,0,0,0,0,1,"CON-B04-4TH-1000, CON-B04-4TH-1000, E-APP-B04-4TH-1000, P-MDEL-1090","CON-B04-4TH-1020, CON-B04-4TH-1020",1,0%,Yes,Yes
0,CON-B04-4TH-1020,"Shuttering for Walls, Col. & Cores (B04) (4th)",Approved Baseline.CON.P01.B04.SUP.4thF,Approved Baseline,8,8,22-Sep-26,30-Sep-26,22-Sep-26,30-Sep-26,0,0,0,0,0,0,"CON-B04-4TH-1010, CON-B04-4TH-1010, E-APP-B04-4TH-1000",CON-B04-4TH-1030,0,0%,Yes,Yes
0,CON-B04-4TH-1030,"Pouring for Walls, Col. & Cores (B04) (4th)",Approved Baseline.CON.P01.B04.SUP.4thF,Approved Baseline,1,1,1-Oct-26,1-Oct-26,1-Oct-26,1-Oct-26,0,0,0,0,0,0,"CON-B04-4TH-1020, P-MDEL-1030","CON-B04-4TH-1040, AB-SUB-B04-4TH-1000",0,0%,Yes,Yes
0,CON-B04-4TH-1040,"Shuttering for Slabs, Beams & Stairs (B04) (4th)",Approved Baseline.CON.P01.B04.SUP.4thF,Approved Baseline,10,10,3-Oct-26,14-Oct-26,3-Oct-26,14-Oct-26,0,0,0,0,0,0,"E-APP-B04-4TH-1030, E-APP-B04-4TH-1020, E-APP-B04-4TH-1010, CON-B04-4TH-1030, CON-B04-3RD-1080","CON-B04-4TH-1050, CON-B04-4TH-1050",0,0%,Yes,Yes
0,CON-B04-4TH-1050,"RFT for Slabs, Beams & Stairs (B04) (4th)",Approved Baseline.CON.P01.B04.SUP.4thF,Approved Baseline,10,10,8-Oct-26,19-Oct-26,8-Oct-26,19-Oct-26,0,0,0,0,0,0,"CON-B04-4TH-1040, CON-B04-4TH-1040, E-APP-B04-4TH-1010, E-APP-B04-4TH-1020, E-APP-B04-4TH-1030, P-MDEL-1090",CON-B04-4TH-1060,0,0%,Yes,Yes
0,CON-B04-4TH-1060,"Pouring for Slabs, Beams & Stairs (B04) (4th)",Approved Baseline.CON.P01.B04.SUP.4thF,Approved Baseline,2,2,20-Oct-26,21-Oct-26,20-Oct-26,21-Oct-26,0,0,0,0,0,0,"CON-B04-4TH-1050, P-MDEL-1030","CON-B04-4TH-1070, CON-B04-4TH-1080, AB-SUB-B04-4TH-1010, AB-SUB-B04-4TH-1020, AB-SUB-B04-4TH-1030",0,0%,Yes,Yes
0,CON-B04-4TH-1070,"Curing for Slabs, Beams & Stairs (B04) (4th)",Approved Baseline.CON.P01.B04.SUP.4thF,Approved Baseline,3,3,22-Oct-26,24-Oct-26,22-Oct-26,24-Oct-26,0,0,0,0,0,3,CON-B04-4TH-1060,CON-B04-5TH-1000,3,0%,Yes,Yes
0,CON-B04-4TH-1080,Dismantling Formwork (B04) (4th),Approved Baseline.CON.P01.B04.SUP.4thF,Approved Baseline,1,1,3-Nov-26,3-Nov-26,3-Nov-26,3-Nov-26,6,6,0,0,0,0,CON-B04-4TH-1060,CON-B04-5TH-1040,0,0%,No,No
0,,,,,45,45,25-Oct-26,8-Dec-26,25-Oct-26,8-Dec-26,0,3,0,0,0,1,,,1,,,
0,CON-B04-5TH-1000,"Scaffolding works for Walls, Col. & Cores (B04) (5th)",Approved Baseline.CON.P01.B04.SUP.5thF,Approved Baseline,5,5,25-Oct-26,29-Oct-26,25-Oct-26,29-Oct-26,0,0,0,0,0,0,CON-B04-4TH-1070,"CON-B04-5TH-1010, CON-B04-5TH-1010",0,0%,Yes,Yes
0,CON-B04-5TH-1010,"RFT for Walls, Col. & Cores (B04) (5th)",Approved Baseline.CON.P01.B04.SUP.5thF,Approved Baseline,8,8,28-Oct-26,5-Nov-26,28-Oct-26,5-Nov-26,0,0,0,0,0,1,"CON-B04-5TH-1000, CON-B04-5TH-1000, E-APP-B04-5TH-1000, P-MDEL-1080","CON-B04-5TH-1020, CON-B04-5TH-1020",1,0%,Yes,Yes
0,CON-B04-5TH-1020,"Shuttering for Walls, Col. & Cores (B04) (5th)",Approved Baseline.CON.P01.B04.SUP.5thF,Approved Baseline,8,8,31-Oct-26,8-Nov-26,31-Oct-26,8-Nov-26,0,0,0,0,0,0,"CON-B04-5TH-1010, CON-B04-5TH-1010, E-APP-B04-5TH-1000",CON-B04-5TH-1030,0,0%,Yes,Yes
0,CON-B04-5TH-1030,"Pouring for Walls, Col. & Cores (B04) (5th)",Approved Baseline.CON.P01.B04.SUP.5thF,Approved Baseline,1,1,9-Nov-26,9-Nov-26,9-Nov-26,9-Nov-26,0,0,0,0,0,0,"CON-B04-5TH-1020, P-MDEL-1030","CON-B04-5TH-1040, AB-SUB-B04-5TH-1000",0,0%,Yes,Yes
0,CON-B04-5TH-1040,"Shuttering for Slabs, Beams & Stairs (B04) (5th)",Approved Baseline.CON.P01.B04.SUP.5thF,Approved Baseline,10,10,10-Nov-26,21-Nov-26,10-Nov-26,21-Nov-26,0,0,0,0,0,0,"E-APP-B04-5TH-1030, E-APP-B04-5TH-1020, E-APP-B04-5TH-1010, CON-B04-5TH-1030, CON-B04-4TH-1080","CON-B04-5TH-1050, CON-B04-5TH-1050",0,0%,Yes,Yes
0,CON-B04-5TH-1050,"RFT for Slabs, Beams & Stairs (B04) (5th)",Approved Baseline.CON.P01.B04.SUP.5thF,Approved Baseline,10,10,14-Nov-26,24-Nov-26,14-Nov-26,24-Nov-26,0,0,0,0,0,0,"CON-B04-5TH-1040, CON-B04-5TH-1040, E-APP-B04-5TH-1010, E-APP-B04-5TH-1020, E-APP-B04-5TH-1030, P-MDEL-1080",CON-B04-5TH-1060,0,0%,Yes,Yes
0,CON-B04-5TH-1060,"Pouring for Slabs, Beams & Stairs (B04) (5th)",Approved Baseline.CON.P01.B04.SUP.5thF,Approved Baseline,1,1,25-Nov-26,25-Nov-26,25-Nov-26,25-Nov-26,0,0,0,0,0,0,"CON-B04-5TH-1050, P-MDEL-1030","CON-B04-5TH-1070, CON-B04-5TH-1080, AB-SUB-B04-5TH-1010, AB-SUB-B04-5TH-1020, AB-SUB-B04-5TH-1030",0,0%,Yes,Yes
0,CON-B04-5TH-1070,"Curing for Slabs, Beams & Stairs (B04) (5th)",Approved Baseline.CON.P01.B04.SUP.5thF,Approved Baseline,3,3,26-Nov-26,28-Nov-26,26-Nov-26,28-Nov-26,0,0,0,0,0,0,CON-B04-5TH-1060,CON-B04-6TH-1000,0,0%,Yes,Yes
0,CON-B04-5TH-1080,Dismantling Formwork (B04) (5th),Approved Baseline.CON.P01.B04.SUP.5thF,Approved Baseline,1,1,8-Dec-26,8-Dec-26,8-Dec-26,8-Dec-26,3,3,0,0,0,0,CON-B04-5TH-1060,CON-B04-6TH-1040,0,0%,No,No
0,,,,,39,39,29-Nov-26,6-Jan-27,29-Nov-26,6-Jan-27,0,4,0,0,0,1,,,1,,,
0,CON-B04-6TH-1000,"Scaffolding works for Walls, Col. & Cores (B04) (6th)",Approved Baseline.CON.P01.B04.SUP.6thF,Approved Baseline,3,3,29-Nov-26,1-Dec-26,29-Nov-26,1-Dec-26,0,0,0,0,0,0,CON-B04-5TH-1070,"CON-B04-6TH-1010, CON-B04-6TH-1010",0,0%,Yes,Yes
0,CON-B04-6TH-1010,"RFT for Walls, Col. & Cores (B04) (6th)",Approved Baseline.CON.P01.B04.SUP.6thF,Approved Baseline,5,5,2-Dec-26,7-Dec-26,2-Dec-26,7-Dec-26,0,0,0,0,0,1,"CON-B04-6TH-1000, CON-B04-6TH-1000, E-APP-B04-6TH-1000, P-MDEL-1070","CON-B04-6TH-1020, CON-B04-6TH-1020",1,0%,Yes,Yes
0,CON-B04-6TH-1020,"Shuttering for Walls, Col. & Cores (B04) (6th)",Approved Baseline.CON.P01.B04.SUP.6thF,Approved Baseline,5,5,5-Dec-26,9-Dec-26,5-Dec-26,9-Dec-26,0,0,0,0,0,0,"CON-B04-6TH-1010, CON-B04-6TH-1010, E-APP-B04-6TH-1000",CON-B04-6TH-1030,0,0%,Yes,Yes
0,CON-B04-6TH-1030,"Pouring for Walls, Col. & Cores (B04) (6th)",Approved Baseline.CON.P01.B04.SUP.6thF,Approved Baseline,1,1,10-Dec-26,10-Dec-26,10-Dec-26,10-Dec-26,0,0,0,0,0,0,"CON-B04-6TH-1020, P-MDEL-1030","CON-B04-6TH-1040, AB-SUB-B04-6TH-1000",0,0%,Yes,Yes
0,CON-B04-6TH-1040,"Shuttering for Slabs, Beams & Stairs (B04) (6th)",Approved Baseline.CON.P01.B04.SUP.6thF,Approved Baseline,8,8,12-Dec-26,20-Dec-26,12-Dec-26,20-Dec-26,0,0,0,0,0,0,"E-APP-B04-6TH-1030, E-APP-B04-6TH-1020, E-APP-B04-6TH-1010, CON-B04-6TH-1030, CON-B04-5TH-1080","CON-B04-6TH-1050, CON-B04-6TH-1050",0,0%,Yes,Yes
0,CON-B04-6TH-1050,"RFT for Slabs, Beams & Stairs (B04) (6th)",Approved Baseline.CON.P01.B04.SUP.6thF,Approved Baseline,8,8,15-Dec-26,23-Dec-26,15-Dec-26,23-Dec-26,0,0,0,0,0,0,"CON-B04-6TH-1040, CON-B04-6TH-1040, E-APP-B04-6TH-1010, E-APP-B04-6TH-1020, E-APP-B04-6TH-1030, P-MDEL-1070",CON-B04-6TH-1060,0,0%,Yes,Yes
0,CON-B04-6TH-1060,"Pouring for Slabs, Beams & Stairs (B04) (6th)",Approved Baseline.CON.P01.B04.SUP.6thF,Approved Baseline,1,1,24-Dec-26,24-Dec-26,24-Dec-26,24-Dec-26,0,0,0,0,0,0,"CON-B04-6TH-1050, P-MDEL-1030","CON-B04-6TH-1070, CON-B04-6TH-1080, AB-SUB-B04-6TH-1010, AB-SUB-B04-6TH-1020, AB-SUB-B04-6TH-1030",0,0%,Yes,Yes
0,CON-B04-6TH-1070,"Curing for Slabs, Beams & Stairs (B04) (6th)",Approved Baseline.CON.P01.B04.SUP.6thF,Approved Baseline,3,3,25-Dec-26,27-Dec-26,25-Dec-26,27-Dec-26,0,0,0,0,0,0,CON-B04-6TH-1060,CON-B04-7TH-1000,0,0%,Yes,Yes
0,CON-B04-6TH-1080,Dismantling Formwork (B04) (6th),Approved Baseline.CON.P01.B04.SUP.6thF,Approved Baseline,1,1,6-Jan-27,6-Jan-27,6-Jan-27,6-Jan-27,4,4,0,0,0,0,CON-B04-6TH-1060,CON-B04-7TH-1040,0,0%,No,No
0,,,,,40,40,28-Dec-26,5-Feb-27,28-Dec-26,5-Feb-27,0,3,0,0,0,1,,,1,,,
0,CON-B04-7TH-1000,"Scaffolding works for Walls, Col. & Cores (B04) (7th)",Approved Baseline.CON.P01.B04.SUP.7thF,Approved Baseline,4,4,28-Dec-26,31-Dec-26,28-Dec-26,31-Dec-26,0,0,0,0,0,0,CON-B04-6TH-1070,"CON-B04-7TH-1010, CON-B04-7TH-1010",0,0%,Yes,Yes
0,CON-B04-7TH-1010,"RFT for Walls, Col. & Cores (B04) (7th)",Approved Baseline.CON.P01.B04.SUP.7thF,Approved Baseline,5,5,31-Dec-26,5-Jan-27,31-Dec-26,5-Jan-27,0,0,0,0,0,1,"CON-B04-7TH-1000, CON-B04-7TH-1000, E-APP-B04-7TH-1000, P-MDEL-1190","CON-B04-7TH-1020, CON-B04-7TH-1020",1,0%,Yes,Yes
0,CON-B04-7TH-1020,"Shuttering for Walls, Col. & Cores (B04) (7th)",Approved Baseline.CON.P01.B04.SUP.7thF,Approved Baseline,5,5,3-Jan-27,9-Jan-27,3-Jan-27,9-Jan-27,0,0,0,0,0,0,"CON-B04-7TH-1010, CON-B04-7TH-1010, E-APP-B04-7TH-1000",CON-B04-7TH-1030,0,0%,Yes,Yes
0,CON-B04-7TH-1030,"Pouring for Walls, Col. & Cores (B04) (7th)",Approved Baseline.CON.P01.B04.SUP.7thF,Approved Baseline,1,1,10-Jan-27,10-Jan-27,10-Jan-27,10-Jan-27,0,0,0,0,0,0,"CON-B04-7TH-1020, P-MDEL-1030","CON-B04-7TH-1040, AB-SUB-B04-7TH-1000",0,0%,Yes,Yes
0,CON-B04-7TH-1040,"Shuttering for Slabs, Beams & Stairs (B04) (7th)",Approved Baseline.CON.P01.B04.SUP.7thF,Approved Baseline,8,8,11-Jan-27,19-Jan-27,11-Jan-27,19-Jan-27,0,0,0,0,0,0,"E-APP-B04-7TH-1030, E-APP-B04-7TH-1020, E-APP-B04-7TH-1010, CON-B04-7TH-1030, CON-B04-6TH-1080","CON-B04-7TH-1050, CON-B04-7TH-1050",0,0%,Yes,Yes
0,CON-B04-7TH-1050,"RFT for Slabs, Beams & Stairs (B04) (7th)",Approved Baseline.CON.P01.B04.SUP.7thF,Approved Baseline,8,8,13-Jan-27,21-Jan-27,13-Jan-27,21-Jan-27,0,0,0,0,0,0,"CON-B04-7TH-1040, CON-B04-7TH-1040, E-APP-B04-7TH-1010, E-APP-B04-7TH-1020, E-APP-B04-7TH-1030, P-MDEL-1190",CON-B04-7TH-1060,0,0%,Yes,Yes
0,CON-B04-7TH-1060,"Pouring for Slabs, Beams & Stairs (B04) (7th)",Approved Baseline.CON.P01.B04.SUP.7thF,Approved Baseline,1,1,23-Jan-27,23-Jan-27,23-Jan-27,23-Jan-27,0,0,0,0,0,0,"CON-B04-7TH-1050, P-MDEL-1030","CON-B04-7TH-1070, CON-B04-7TH-1080, AB-SUB-B04-7TH-1010, AB-SUB-B04-7TH-1020, AB-SUB-B04-7TH-1030",0,0%,Yes,Yes
0,CON-B04-7TH-1070,"Curing for Slabs, Beams & Stairs (B04) (7th)",Approved Baseline.CON.P01.B04.SUP.7thF,Approved Baseline,3,3,24-Jan-27,26-Jan-27,24-Jan-27,26-Jan-27,0,0,0,0,0,0,CON-B04-7TH-1060,CON-B04-8TH-1000,0,0%,Yes,Yes
0,CON-B04-7TH-1080,Dismantling Formwork (B04) (7th),Approved Baseline.CON.P01.B04.SUP.7thF,Approved Baseline,1,1,5-Feb-27,5-Feb-27,5-Feb-27,5-Feb-27,3,3,0,0,0,0,CON-B04-7TH-1060,CON-B04-8TH-1040,0,0%,No,No
0,,,,,36,36,27-Jan-27,3-Mar-27,27-Jan-27,3-Mar-27,0,0,0,0,0,1,,,1,,,
0,CON-B04-8TH-1000,"Scaffolding works for Walls, Col. & Cores (B04) (8th)",Approved Baseline.CON.P01.B04.SUP.8thF,Approved Baseline,4,4,27-Jan-27,31-Jan-27,27-Jan-27,31-Jan-27,0,0,0,0,0,0,CON-B04-7TH-1070,"CON-B04-8TH-1010, CON-B04-8TH-1010",0,0%,Yes,Yes
0,CON-B04-8TH-1010,"RFT for Walls, Col. & Cores (B04) (8th)",Approved Baseline.CON.P01.B04.SUP.8thF,Approved Baseline,6,6,30-Jan-27,4-Feb-27,30-Jan-27,4-Feb-27,0,0,0,0,0,1,"CON-B04-8TH-1000, CON-B04-8TH-1000, E-APP-B04-8TH-1000, P-MDEL-1180","CON-B04-8TH-1020, CON-B04-8TH-1020",1,0%,Yes,Yes
0,CON-B04-8TH-1020,"Shuttering for Walls, Col. & Cores (B04) (8th)",Approved Baseline.CON.P01.B04.SUP.8thF,Approved Baseline,6,6,1-Feb-27,7-Feb-27,1-Feb-27,7-Feb-27,0,0,0,0,0,0,"CON-B04-8TH-1010, CON-B04-8TH-1010, E-APP-B04-8TH-1000",CON-B04-8TH-1030,0,0%,Yes,Yes
0,CON-B04-8TH-1030,"Pouring for Walls, Col. & Cores (B04) (8th)",Approved Baseline.CON.P01.B04.SUP.8thF,Approved Baseline,1,1,8-Feb-27,8-Feb-27,8-Feb-27,8-Feb-27,0,0,0,0,0,0,"CON-B04-8TH-1020, P-MDEL-1030","CON-B04-8TH-1040, AB-SUB-B04-8TH-1000",0,0%,Yes,Yes
0,CON-B04-8TH-1040,"Shuttering for Slabs, Beams & Stairs (B04) (8th)",Approved Baseline.CON.P01.B04.SUP.8thF,Approved Baseline,4,4,9-Feb-27,13-Feb-27,9-Feb-27,13-Feb-27,0,0,0,0,0,0,"E-APP-B04-8TH-1030, E-APP-B04-8TH-1020, E-APP-B04-8TH-1010, CON-B04-8TH-1030, CON-B04-7TH-1080","CON-B04-8TH-1050, CON-B04-8TH-1050",0,0%,Yes,Yes
0,CON-B04-8TH-1050,"RFT for Slabs, Beams & Stairs (B04) (8th)",Approved Baseline.CON.P01.B04.SUP.8thF,Approved Baseline,6,6,11-Feb-27,17-Feb-27,11-Feb-27,17-Feb-27,0,0,0,0,0,0,"CON-B04-8TH-1040, CON-B04-8TH-1040, E-APP-B04-8TH-1010, E-APP-B04-8TH-1020, E-APP-B04-8TH-1030, P-MDEL-1180",CON-B04-8TH-1060,0,0%,Yes,Yes
0,CON-B04-8TH-1060,"Pouring for Slabs, Beams & Stairs (B04) (8th)",Approved Baseline.CON.P01.B04.SUP.8thF,Approved Baseline,1,1,18-Feb-27,18-Feb-27,18-Feb-27,18-Feb-27,0,0,0,0,0,0,"CON-B04-8TH-1050, P-MDEL-1030","CON-B04-8TH-1070, CON-B04-8TH-1080, AB-SUB-B04-8TH-1010, AB-SUB-B04-8TH-1020, AB-SUB-B04-8TH-1030",0,0%,Yes,Yes
0,CON-B04-8TH-1070,"Curing for Slabs, Beams & Stairs (B04) (8th)",Approved Baseline.CON.P01.B04.SUP.8thF,Approved Baseline,3,3,19-Feb-27,21-Feb-27,19-Feb-27,21-Feb-27,0,1,0,0,0,0,CON-B04-8TH-1060,CON-B04-RF-1000,0,0%,No,No
0,CON-B04-8TH-1080,Dismantling Formwork (B04) (8th),Approved Baseline.CON.P01.B04.SUP.8thF,Approved Baseline,1,1,3-Mar-27,3-Mar-27,3-Mar-27,3-Mar-27,0,0,0,0,0,0,CON-B04-8TH-1060,CON-B04-RF-1060,0,0%,Yes,Yes
0,,,,,20,20,22-Feb-27,13-Mar-27,22-Feb-27,13-Mar-27,0,0,0,0,0,1,,,1,,,
0,CON-B04-RF-1000,"Scaffolding works for Walls, Col. & Cores (B04) (RF)",Approved Baseline.CON.P01.B04.SUP.RF,Approved Baseline,1,1,22-Feb-27,22-Feb-27,22-Feb-27,22-Feb-27,0,1,0,0,0,0,CON-B04-8TH-1070,CON-B04-RF-1010,0,0%,No,No
0,CON-B04-RF-1010,"RFT for Walls, Col. & Cores (B04) (RF)",Approved Baseline.CON.P01.B04.SUP.RF,Approved Baseline,1,1,23-Feb-27,23-Feb-27,23-Feb-27,23-Feb-27,0,1,0,0,0,1,"CON-B04-RF-1000, E-APP-B04-RF-1000, P-MDEL-1200",CON-B04-RF-1020,1,0%,No,No
0,CON-B04-RF-1020,"Shuttering for Walls, Col. & Cores (B04) (RF)",Approved Baseline.CON.P01.B04.SUP.RF,Approved Baseline,1,1,24-Feb-27,24-Feb-27,24-Feb-27,24-Feb-27,0,1,0,0,0,0,"CON-B04-RF-1010, E-APP-B04-RF-1000",CON-B04-RF-1030,0,0%,No,No
0,CON-B04-RF-1030,"Pouring for Walls, Col. & Cores (B04) (RF)",Approved Baseline.CON.P01.B04.SUP.RF,Approved Baseline,1,1,25-Feb-27,25-Feb-27,25-Feb-27,25-Feb-27,0,1,0,0,0,0,"CON-B04-RF-1020, P-MDEL-1030","CON-B04-RF-1040, AB-SUB-B04-RF-1000",0,0%,No,No
0,CON-B04-RF-1040,"Shuttering for Slabs, Beams (B04) (RF)",Approved Baseline.CON.P01.B04.SUP.RF,Approved Baseline,2,2,27-Feb-27,28-Feb-27,27-Feb-27,28-Feb-27,0,1,0,0,0,0,"E-APP-B04-RF-1020, E-APP-B04-RF-1010, CON-B04-RF-1030",CON-B04-RF-1050,0,0%,No,No
0,CON-B04-RF-1050,"RFT for Slabs, Beams  (B04) (RF)",Approved Baseline.CON.P01.B04.SUP.RF,Approved Baseline,2,2,1-Mar-27,2-Mar-27,1-Mar-27,2-Mar-27,1,1,0,0,0,0,"CON-B04-RF-1040, E-APP-B04-RF-1010, E-APP-B04-RF-1020, P-MDEL-1200",CON-B04-RF-1060,0,0%,No,No
0,CON-B04-RF-1060,"Pouring for Slabs, Beams  (B04) (RF)",Approved Baseline.CON.P01.B04.SUP.RF,Approved Baseline,1,1,4-Mar-27,4-Mar-27,4-Mar-27,4-Mar-27,0,0,0,0,0,0,"CON-B04-RF-1050, P-MDEL-1030, CON-B04-8TH-1080","CON-B04-RF-1070, AB-SUB-B04-RF-1010, AB-SUB-B04-RF-1020",0,0%,Yes,Yes
0,CON-B04-RF-1070,"Curing for Slabs, Beams  (B04) (RF)",Approved Baseline.CON.P01.B04.SUP.RF,Approved Baseline,3,3,5-Mar-27,7-Mar-27,5-Mar-27,7-Mar-27,0,0,0,0,0,0,CON-B04-RF-1060,CON-B04-RF-1080,0,0%,Yes,Yes
0,CON-B04-RF-1080,Dismantling Formwork (B04) (RF),Approved Baseline.CON.P01.B04.SUP.RF,Approved Baseline,1,1,13-Mar-27,13-Mar-27,13-Mar-27,13-Mar-27,0,0,0,0,0,0,CON-B04-RF-1070,HO-1040,0,0%,Yes,Yes
0,,,,,444,444,25-Dec-25,13-Mar-27,25-Dec-25,13-Mar-27,0,14,0,0,0,69,,,69,,,
0,,,,,120,120,25-Dec-25,23-Apr-26,25-Dec-25,23-Apr-26,0,338,0,0,0,63,,,63,,,
0,,,,,38,38,25-Dec-25,31-Jan-26,25-Dec-25,31-Jan-26,0,345,0,0,0,23,,,23,,,
0,CON-B03-FOOT-1000,Shuttering for PC Raft (B03) (footing),Approved Baseline.CON.P01.B03.SUB.F,Approved Baseline,1,1,25-Dec-25,25-Dec-25,25-Dec-25,25-Dec-25,0,0,0,0,0,0,"E-APP-B03-FOOT-1010, CON-EW-B03-1010, P-MDEL-1020","CON-B03-FOOT-1010, AB-SUB-B03-FOOT-1000",0,0%,Yes,Yes
0,CON-B03-FOOT-1010,Pouring for PC Raft (B03) (footing),Approved Baseline.CON.P01.B03.SUB.F,Approved Baseline,1,1,27-Dec-25,27-Dec-25,27-Dec-25,27-Dec-25,0,0,0,0,0,0,"CON-B03-FOOT-1000, P-MDEL-1030","CON-B03-FOOT-1020, AB-SUB-B03-FOOT-1000",0,0%,Yes,Yes
0,CON-B03-FOOT-1020,Curing for PC Raft (B03) (footing),Approved Baseline.CON.P01.B03.SUB.F,Approved Baseline,3,3,28-Dec-25,30-Dec-25,28-Dec-25,30-Dec-25,0,0,0,0,0,0,CON-B03-FOOT-1010,CON-B03-FOOT-1030,0,0%,Yes,Yes
0,CON-B03-FOOT-1030,Waterproofing & Ins. Protection works (B03) (footing),Approved Baseline.CON.P01.B03.SUB.F,Approved Baseline,2,2,31-Dec-25,1-Jan-26,31-Dec-25,1-Jan-26,0,0,0,0,0,0,"P-MDEL-1040, E-APP-B03-FOOT-1000, CON-B03-FOOT-1020","CON-B03-FOOT-1040, CON-B03-FOOT-1040",0,0%,Yes,Yes
0,CON-B03-FOOT-1040,Shuttering for RC Raft & Footings (B03) (footing),Approved Baseline.CON.P01.B03.SUB.F,Approved Baseline,10,10,4-Jan-26,15-Jan-26,4-Jan-26,15-Jan-26,0,0,0,0,0,0,"CON-B03-FOOT-1030, E-APP-B03-FOOT-1020, CON-B03-FOOT-1030","CON-B03-FOOT-1050, AB-SUB-B03-FOOT-1010, CON-B03-FOOT-1050, CON-B03-FOOT-1060",0,0%,Yes,Yes
0,CON-B03-FOOT-1050,RFT for RC Raft & Footings (B03) (footing),Approved Baseline.CON.P01.B03.SUB.F,Approved Baseline,10,10,5-Jan-26,17-Jan-26,5-Jan-26,17-Jan-26,0,0,0,0,0,1,"CON-B03-FOOT-1040, E-APP-B03-FOOT-1030, CON-B03-FOOT-1040, P-MDEL-1000","CON-B03-FOOT-1080, AB-SUB-B03-FOOT-1020",1,0%,Yes,Yes
0,CON-B03-FOOT-1060,Shuttering for Columns & Walls Below SOG (B01) (footing),Approved Baseline.CON.P01.B03.SUB.F,Approved Baseline,5,5,10-Jan-26,14-Jan-26,10-Jan-26,14-Jan-26,0,0,0,0,0,0,"CON-B03-FOOT-1040, E-APP-B03-FOOT-1020","CON-B03-FOOT-1070, CON-B03-FOOT-1070",0,0%,Yes,Yes
0,CON-B03-FOOT-1070,RFT for Columns & Walls Below SOG (B03) (footing),Approved Baseline.CON.P01.B03.SUB.F,Approved Baseline,5,5,12-Jan-26,17-Jan-26,12-Jan-26,17-Jan-26,0,0,0,0,0,0,"CON-B03-FOOT-1060, CON-B03-FOOT-1060, E-APP-B03-FOOT-1030, P-MDEL-1000",CON-B03-FOOT-1090,0,0%,Yes,Yes
0,CON-B03-FOOT-1080,Pouring for RC Raft & Footings (B03) (footing),Approved Baseline.CON.P01.B03.SUB.F,Approved Baseline,1,1,18-Jan-26,18-Jan-26,18-Jan-26,18-Jan-26,0,0,0,0,0,0,"CON-B03-FOOT-1050, P-MDEL-1030","CON-B03-FOOT-1100, AB-SUB-B03-FOOT-1020",0,0%,Yes,Yes
0,CON-B03-FOOT-1090,Pouring Columns & Walls Below SOG (B01) (footing),Approved Baseline.CON.P01.B03.SUB.F,Approved Baseline,1,1,18-Jan-26,18-Jan-26,18-Jan-26,18-Jan-26,0,0,0,0,0,0,CON-B03-FOOT-1070,CON-B03-FOOT-1100,0,0%,Yes,Yes
0,CON-B03-FOOT-1100,Curing & Deshuttering for RC Raft & Footings (B03) (footing),Approved Baseline.CON.P01.B03.SUB.F,Approved Baseline,3,3,19-Jan-26,21-Jan-26,19-Jan-26,21-Jan-26,0,0,0,0,0,0,"CON-B03-FOOT-1080, CON-B03-FOOT-1090","CON-B03-FOOT-1110, CON-B03-BAS02-1000",0,0%,Yes,Yes
0,CON-B03-FOOT-1110,Bitumen Ins. for RC Raft & Footings (B03) (footing),Approved Baseline.CON.P01.B03.SUB.F,Approved Baseline,3,3,22-Jan-26,26-Jan-26,22-Jan-26,26-Jan-26,0,282,0,0,0,0,"CON-B03-FOOT-1100, P-MDEL-1050, E-APP-B03-FOOT-1000","CON-B03-FOOT-1120, AB-SUB-B03-FOOT-1030",0,0%,No,No
0,CON-B03-FOOT-1120,Soil Backfilling (B03) (footing),Approved Baseline.CON.P01.B03.SUB.F,Approved Baseline,4,4,27-Jan-26,31-Jan-26,27-Jan-26,31-Jan-26,33,282,0,0,0,22,CON-B03-FOOT-1110,CON-B03-SOG-1000,22,0%,No,No
0,,,,,92,92,22-Jan-26,23-Apr-26,22-Jan-26,23-Apr-26,0,338,0,0,0,40,,,40,,,
0,CON-B03-BAS02-1000,"Scaffolding works for Walls, Col. & Cores (B03) (Bas 02)",Approved Baseline.CON.P01.B03.SUB.2ndB,Approved Baseline,6,6,22-Jan-26,29-Jan-26,22-Jan-26,29-Jan-26,0,0,0,0,0,0,"CON-B02-BAS02-1000, CON-B03-FOOT-1100","CON-B03-BAS02-1010, CON-B03-BAS02-1010",0,0%,Yes,Yes
0,CON-B03-BAS02-1010,"RFT for Walls, Col. & Cores (B03) (Bas 02)",Approved Baseline.CON.P01.B03.SUB.2ndB,Approved Baseline,12,12,22-Jan-26,5-Feb-26,22-Jan-26,5-Feb-26,0,0,0,0,0,1,"CON-B03-BAS02-1000, CON-B03-BAS02-1000, CON-B02-BAS02-1010, E-APP-B03-BAS02-1000, P-MDEL-1170","CON-B03-BAS02-1020, CON-B03-BAS02-1020",1,0%,Yes,Yes
0,CON-B03-BAS02-1020,"Shuttering for Walls, Col. & Cores (B03) (Bas 02)",Approved Baseline.CON.P01.B03.SUB.2ndB,Approved Baseline,12,12,27-Jan-26,9-Feb-26,27-Jan-26,9-Feb-26,0,0,0,0,0,0,"CON-B03-BAS02-1010, CON-B02-BAS02-1020, CON-B03-BAS02-1010, E-APP-B03-BAS02-1000",CON-B03-BAS02-1030,0,0%,Yes,Yes
0,CON-B03-BAS02-1030,"Pouring for Walls, Col. & Cores (B03) (Bas 02)",Approved Baseline.CON.P01.B03.SUB.2ndB,Approved Baseline,2,2,10-Feb-26,11-Feb-26,10-Feb-26,11-Feb-26,0,0,0,0,0,0,"CON-B02-BAS02-1030, CON-B03-BAS02-1020, P-MDEL-1030","CON-B03-BAS02-1040, AB-SUB-B03-BAS2-1000",0,0%,Yes,Yes
0,CON-B03-BAS02-1040,Shuttering for Slabs & Beams (B03) (Bas 02),Approved Baseline.CON.P01.B03.SUB.2ndB,Approved Baseline,8,8,12-Feb-26,21-Feb-26,12-Feb-26,21-Feb-26,0,0,0,0,0,0,"CON-B02-BAS02-1040, E-APP-B03-BAS02-1030, E-APP-B03-BAS02-1020, CON-B03-BAS02-1030","CON-B03-BAS02-1050, CON-B03-BAS02-1060, CON-B03-BAS02-1060",0,0%,Yes,Yes
0,CON-B03-BAS02-1050,Shuttering for Stairs (B03) (Bas 02),Approved Baseline.CON.P01.B03.SUB.2ndB,Approved Baseline,6,6,15-Feb-26,21-Feb-26,15-Feb-26,21-Feb-26,0,8,0,0,0,0,"CON-B03-BAS02-1040, CON-B02-BAS02-1050, E-APP-B03-BAS02-1010","CON-B03-BAS02-1070, CON-B03-BAS02-1070",0,0%,No,No
0,CON-B03-BAS02-1060,RFT for Slabs & Beams (B03) (Bas 02),Approved Baseline.CON.P01.B03.SUB.2ndB,Approved Baseline,10,10,15-Feb-26,25-Feb-26,15-Feb-26,25-Feb-26,0,0,0,0,0,0,"CON-B03-BAS02-1040, CON-B02-BAS02-1060, CON-B03-BAS02-1040, E-APP-B03-BAS02-1020, E-APP-B03-BAS02-1030, P-MDEL-1170",CON-B03-BAS02-1100,0,0%,Yes,Yes
0,CON-B03-BAS02-1070,RFT for Stairs  (B03) (Bas 02),Approved Baseline.CON.P01.B03.SUB.2ndB,Approved Baseline,6,6,17-Feb-26,23-Feb-26,17-Feb-26,23-Feb-26,0,8,0,0,0,0,"CON-B03-BAS02-1050, CON-B02-BAS02-1070, CON-B03-BAS02-1050, E-APP-B03-BAS02-1010, P-MDEL-1170",CON-B03-BAS02-1080,0,0%,No,No
0,CON-B03-BAS02-1080,Pouring for Stairs  (B03) (Bas 02),Approved Baseline.CON.P01.B03.SUB.2ndB,Approved Baseline,2,2,24-Feb-26,25-Feb-26,24-Feb-26,25-Feb-26,0,8,0,0,0,0,"CON-B02-BAS02-1080, CON-B03-BAS02-1070, P-MDEL-1030","CON-B03-BAS02-1090, CON-B03-BAS02-1110, AB-SUB-B03-BAS2-1010",0,0%,No,No
0,CON-B03-BAS02-1100,Pouring for Slabs & Beams B03) (Bas 02),Approved Baseline.CON.P01.B03.SUB.2ndB,Approved Baseline,2,2,26-Feb-26,28-Feb-26,26-Feb-26,28-Feb-26,0,0,0,0,0,0,"CON-B02-BAS02-1100, CON-B03-BAS02-1060, P-MDEL-1030","CON-B03-BAS01-1000, AB-SUB-B03-BAS2-1020, AB-SUB-B03-BAS2-1030",0,0%,Yes,Yes
0,CON-B03-BAS02-1090,"Curing for Slabs, Beams & Stairs (B03) (Bas 02)",Approved Baseline.CON.P01.B03.SUB.2ndB,Approved Baseline,5,5,26-Feb-26,2-Mar-26,26-Feb-26,2-Mar-26,7,21,0,0,0,0,"CON-B03-BAS02-1080, CON-B02-BAS02-1090",CON-B03-BAS02-1110,0,0%,No,No
0,CON-B03-BAS02-1110,Dismantling Formwork (B03) (Bas 02),Approved Baseline.CON.P01.B03.SUB.2ndB,Approved Baseline,1,1,10-Mar-26,10-Mar-26,10-Mar-26,10-Mar-26,0,14,0,0,0,0,"CON-B02-BAS02-1110, CON-B03-BAS02-1080, CON-B03-BAS02-1090","CON-B03-SOG-1000, CON-B03-BAS01-1040",0,0%,No,No
0,,,,,44,44,11-Mar-26,23-Apr-26,11-Mar-26,23-Apr-26,0,338,0,0,0,39,,,39,,,
0,CON-B03-SOG-1000,Soil Backfilling & Compaction (B03) (sog),Approved Baseline.CON.P01.B03.SUB.2ndB.SOG,Approved Baseline,7,7,11-Mar-26,23-Mar-26,11-Mar-26,23-Mar-26,0,249,0,0,0,37,"CON-B03-BAS02-1110, CON-B03-FOOT-1120","CON-B03-SOG-1010, CON-B04-SOG-1000",37,0%,No,No
0,CON-B03-SOG-1010,Soil Compaction Test (B03) (sog),Approved Baseline.CON.P01.B03.SUB.2ndB.SOG,Approved Baseline,2,2,24-Mar-26,25-Mar-26,24-Mar-26,25-Mar-26,0,257,0,0,0,2,CON-B03-SOG-1000,"CON-B03-SOG-1020, CON-B04-SOG-1010",2,0%,No,No
0,CON-B03-SOG-1020,DPM Layer works (B03) (sog),Approved Baseline.CON.P01.B03.SUB.2ndB.SOG,Approved Baseline,10,10,26-Mar-26,6-Apr-26,26-Mar-26,6-Apr-26,0,257,0,0,0,0,"CON-B03-SOG-1010, P-MDEL-1040, E-APP-B03-FOOT-1000","CON-B03-SOG-1030, CON-B03-SOG-1030",0,0%,No,No
0,CON-B03-SOG-1030,Blinding Concrete works (B03) (sog),Approved Baseline.CON.P01.B03.SUB.2ndB.SOG,Approved Baseline,12,12,1-Apr-26,15-Apr-26,1-Apr-26,15-Apr-26,0,257,0,0,0,0,"CON-B03-SOG-1020, CON-B03-SOG-1020","CON-B03-SOG-1040, CON-B03-SOG-1040, CON-B04-SOG-1030",0,0%,No,No
0,CON-B03-SOG-1040,Shuttering & RFT for S.O.G (B03) (sog),Approved Baseline.CON.P01.B03.SUB.2ndB.SOG,Approved Baseline,10,10,7-Apr-26,19-Apr-26,7-Apr-26,19-Apr-26,0,257,0,0,0,0,"CON-B03-SOG-1030, CON-B03-SOG-1030, E-APP-B03-SOG-1010, E-APP-B03-SOG-1000, P-MDEL-1150","CON-B03-SOG-1050, CON-B03-SOG-1050, CON-B04-SOG-1040, AB-SUB-B03-SOG-1000",0,0%,No,No
0,CON-B03-SOG-1050,Pouring for S.O.G (B03) (sog),Approved Baseline.CON.P01.B03.SUB.2ndB.SOG,Approved Baseline,7,7,16-Apr-26,23-Apr-26,16-Apr-26,23-Apr-26,0,257,0,0,0,0,"CON-B03-SOG-1040, CON-B03-SOG-1040, P-MDEL-1030","CON-B03-SOG-1060, CON-B03-SOG-1060, CON-B04-SOG-1050, AB-SUB-B03-SOG-1010",0,0%,No,No
0,CON-B03-SOG-1060,Curing & Smoothing Surface for S.O.G (B03) (sog),Approved Baseline.CON.P01.B03.SUB.2ndB.SOG,Approved Baseline,7,7,17-Apr-26,23-Apr-26,17-Apr-26,23-Apr-26,324,338,0,0,0,0,"CON-B03-SOG-1050, CON-B03-SOG-1050",HO-1030,0,0%,No,No
0,,,,,53,53,1-Mar-26,22-Apr-26,1-Mar-26,22-Apr-26,0,5,0,0,0,0,,,0,,,
0,CON-B03-BAS01-1000,"Scaffolding works for Walls, Col. & Cores (B03) (Bas 01)",Approved Baseline.CON.P01.B03.SUB.1stB,Approved Baseline,6,6,1-Mar-26,7-Mar-26,1-Mar-26,7-Mar-26,0,0,0,0,0,0,"CON-B02-BAS01-1000, CON-B03-BAS02-1100","CON-B03-BAS01-1010, CON-B03-BAS01-1010",0,0%,Yes,Yes
0,CON-B03-BAS01-1010,"RFT for Walls, Col. & Cores (B03) (Bas 01)",Approved Baseline.CON.P01.B03.SUB.1stB,Approved Baseline,12,12,1-Mar-26,14-Mar-26,1-Mar-26,14-Mar-26,0,0,0,0,0,0,"CON-B03-BAS01-1000, CON-B02-BAS01-1010, CON-B03-BAS01-1000, E-APP-B03-BAS01-1000, P-MDEL-1160","CON-B03-BAS01-1020, CON-B03-BAS01-1020",0,0%,Yes,Yes
0,CON-B03-BAS01-1020,"Shuttering for Walls, Col. & Cores (B03) (Bas 01)",Approved Baseline.CON.P01.B03.SUB.1stB,Approved Baseline,12,12,4-Mar-26,22-Mar-26,4-Mar-26,22-Mar-26,0,0,0,0,0,0,"CON-B03-BAS01-1010, CON-B02-BAS01-1020, CON-B03-BAS01-1010, E-APP-B03-BAS01-1000",CON-B03-BAS01-1030,0,0%,Yes,Yes
0,CON-B03-BAS01-1030,"Pouring for Walls, Col. & Cores (B03) (Bas 01)",Approved Baseline.CON.P01.B03.SUB.1stB,Approved Baseline,2,2,23-Mar-26,24-Mar-26,23-Mar-26,24-Mar-26,0,0,0,0,0,0,"CON-B03-BAS01-1020, CON-B02-BAS01-1030, P-MDEL-1030","CON-B03-BAS01-1040, AB-SUB-B03-BAS1-1000",0,0%,Yes,Yes
0,CON-B03-BAS01-1040,Shuttering for Slabs & Beams (B03) (Bas 01),Approved Baseline.CON.P01.B03.SUB.1stB,Approved Baseline,8,8,25-Mar-26,2-Apr-26,25-Mar-26,2-Apr-26,0,0,0,0,0,0,"CON-B02-BAS01-1040, E-APP-B03-BAS01-1030, E-APP-B03-BAS01-1020, CON-B03-BAS01-1030, CON-B03-BAS02-1110","CON-B03-BAS01-1060, CON-B03-BAS01-1050, CON-B03-BAS01-1050",0,0%,Yes,Yes
0,CON-B03-BAS01-1050,RFT for Slabs & Beams (B03) (Bas 01),Approved Baseline.CON.P01.B03.SUB.1stB,Approved Baseline,10,10,28-Mar-26,7-Apr-26,28-Mar-26,7-Apr-26,0,13,0,0,0,0,"CON-B03-BAS01-1040, CON-B02-BAS01-1060, CON-B03-BAS01-1040, E-APP-B03-BAS01-1020, E-APP-B03-BAS01-1030, P-MDEL-1160",CON-B03-BAS01-1090,0,0%,No,No
0,CON-B03-BAS01-1060,Shuttering for Stairs (B03) (Bas 01),Approved Baseline.CON.P01.B03.SUB.1stB,Approved Baseline,8,8,29-Mar-26,6-Apr-26,29-Mar-26,6-Apr-26,0,0,0,0,0,0,"CON-B03-BAS01-1040, CON-B02-BAS01-1050, E-APP-B03-BAS01-1010","CON-B03-BAS01-1070, CON-B03-BAS01-1070",0,0%,Yes,Yes
0,CON-B03-BAS01-1070,RFT for Stairs (B03) (Bas 01),Approved Baseline.CON.P01.B03.SUB.1stB,Approved Baseline,6,6,31-Mar-26,6-Apr-26,31-Mar-26,6-Apr-26,0,0,0,0,0,0,"CON-B03-BAS01-1060, CON-B02-BAS01-1070, CON-B03-BAS01-1060, E-APP-B03-BAS01-1010, P-MDEL-1160",CON-B03-BAS01-1080,0,0%,Yes,Yes
0,CON-B03-BAS01-1080,Pouring for Stairs (B03) (Bas 01),Approved Baseline.CON.P01.B03.SUB.1stB,Approved Baseline,2,2,7-Apr-26,8-Apr-26,7-Apr-26,8-Apr-26,0,0,0,0,0,0,"CON-B02-BAS01-1080, CON-B03-BAS01-1070, P-MDEL-1030","CON-B03-BAS01-1100, CON-B03-BAS01-1110, AB-SUB-B03-BAS1-1010",0,0%,Yes,Yes
0,CON-B03-BAS01-1090,Pouring for Slabs & Beams (B03) (Bas 01),Approved Baseline.CON.P01.B03.SUB.1stB,Approved Baseline,2,2,8-Apr-26,9-Apr-26,8-Apr-26,9-Apr-26,0,13,0,0,0,0,"CON-B03-BAS01-1050, P-MDEL-1030","CON-B03-BAS01-1110, AB-SUB-B03-BAS1-1020, AB-SUB-B03-BAS1-1030",0,0%,No,No
0,CON-B03-BAS01-1100,"Curing for Slabs, Beams & Stairs (B03) (Bas 01)",Approved Baseline.CON.P01.B03.SUB.1stB,Approved Baseline,5,5,9-Apr-26,13-Apr-26,9-Apr-26,13-Apr-26,0,0,0,0,0,0,"CON-B03-BAS01-1080, CON-B02-BAS01-1100",CON-B03-GR-1000,0,0%,Yes,Yes
0,CON-B03-BAS01-1110,Dismantling Formwork (B03) (Bas 01),Approved Baseline.CON.P01.B03.SUB.1stB,Approved Baseline,1,1,22-Apr-26,22-Apr-26,22-Apr-26,22-Apr-26,5,5,0,0,0,0,"CON-B03-BAS01-1080, CON-B03-BAS01-1090",CON-B03-GR-1040,0,0%,No,No
0,,,,,334,334,14-Apr-26,13-Mar-27,14-Apr-26,13-Mar-27,0,14,0,0,0,6,,,6,,,
0,,,,,43,43,14-Apr-26,26-May-26,14-Apr-26,26-May-26,0,31,0,0,0,1,,,1,,,
0,CON-B03-GR-1000,"Scaffolding works for Walls, Col. & Cores (B03) (GR)",Approved Baseline.CON.P01.B03.SUP.GF,Approved Baseline,7,7,14-Apr-26,21-Apr-26,14-Apr-26,21-Apr-26,0,0,0,0,0,0,CON-B03-BAS01-1100,"CON-B03-GR-1010, CON-B03-GR-1010",0,0%,Yes,Yes
0,CON-B03-GR-1010,"RFT for Walls, Col. & Cores (B03) (GR)",Approved Baseline.CON.P01.B03.SUP.GF,Approved Baseline,8,8,14-Apr-26,22-Apr-26,14-Apr-26,22-Apr-26,0,0,0,0,0,1,"CON-B03-GR-1000, CON-B03-GR-1000, E-APP-B03-GR-1000, P-MDEL-1130","CON-B03-GR-1020, CON-B03-GR-1020",1,0%,Yes,Yes
0,CON-B03-GR-1020,"Shuttering for Walls, Col. & Cores (B03) (GR)",Approved Baseline.CON.P01.B03.SUP.GF,Approved Baseline,8,8,16-Apr-26,25-Apr-26,16-Apr-26,25-Apr-26,0,0,0,0,0,0,"CON-B03-GR-1010, CON-B03-GR-1010, E-APP-B03-GR-1000",CON-B03-GR-1030,0,0%,Yes,Yes
0,CON-B03-GR-1030,"Pouring for Walls, Col. & Cores (B03) (GR)",Approved Baseline.CON.P01.B03.SUP.GF,Approved Baseline,2,2,26-Apr-26,27-Apr-26,26-Apr-26,27-Apr-26,0,0,0,0,0,0,"CON-B03-GR-1020, P-MDEL-1030","AB-SUB-B03-GR-1000, CON-B03-GR-1040",0,0%,Yes,Yes
0,CON-B03-GR-1040,Shuttering for Slabs & Beams (B03) (GR),Approved Baseline.CON.P01.B03.SUP.GF,Approved Baseline,7,7,28-Apr-26,5-May-26,28-Apr-26,5-May-26,0,0,0,0,0,0,"E-APP-B03-GR-1030, E-APP-B03-GR-1020, CON-B03-GR-1030, CON-B03-BAS01-1110","CON-B03-GR-1050, CON-B03-GR-1060, CON-B03-GR-1070",0,0%,Yes,Yes
0,CON-B03-GR-1050,Shuttering for Stairs  (B03) (GR),Approved Baseline.CON.P01.B03.SUP.GF,Approved Baseline,5,5,30-Apr-26,5-May-26,30-Apr-26,5-May-26,0,0,0,0,0,0,"CON-B03-GR-1040, E-APP-B03-GR-1010","CON-B03-GR-1070, CON-B03-GR-1060",0,0%,Yes,Yes
0,CON-B03-GR-1060,RFT for Slabs & Beams (B03) (GR),Approved Baseline.CON.P01.B03.SUP.GF,Approved Baseline,5,5,2-May-26,6-May-26,2-May-26,6-May-26,0,0,0,0,0,0,"CON-B03-GR-1040, CON-B03-GR-1050, E-APP-B03-GR-1020, E-APP-B03-GR-1030, P-MDEL-1130","CON-B03-GR-1070, CON-B03-GR-1080",0,0%,Yes,Yes
0,CON-B03-GR-1070,RFT for Stairs  (B03) (GR),Approved Baseline.CON.P01.B03.SUP.GF,Approved Baseline,4,4,3-May-26,6-May-26,3-May-26,6-May-26,0,0,0,0,0,0,"CON-B03-GR-1050, CON-B03-GR-1040, CON-B03-GR-1060, E-APP-B03-GR-1010, P-MDEL-1130",CON-B03-GR-1090,0,0%,Yes,Yes
0,CON-B03-GR-1080,Pouring for Slabs & Beams (B03) (GR),Approved Baseline.CON.P01.B03.SUP.GF,Approved Baseline,2,2,7-May-26,9-May-26,7-May-26,9-May-26,0,0,0,0,0,0,"P-MDEL-1030, CON-B03-GR-1060","AB-SUB-B03-GR-1010, AB-SUB-B03-GR-1020, CON-B03-GR-1110, CON-B03-GR-1100, KD-MS-1040",0,0%,Yes,Yes
0,CON-B03-GR-1090,Pouring for Stairs  (B03) (GR),Approved Baseline.CON.P01.B03.SUP.GF,Approved Baseline,2,2,7-May-26,9-May-26,7-May-26,9-May-26,0,0,0,0,0,0,"P-MDEL-1030, CON-B03-GR-1070","CON-B03-GR-1100, AB-SUB-B03-GR-1030",0,0%,Yes,Yes
0,CON-B03-GR-1100,"Curing for Slabs, Beams & Stairs (B03) (GR)",Approved Baseline.CON.P01.B03.SUP.GF,Approved Baseline,3,3,10-May-26,12-May-26,10-May-26,12-May-26,0,0,0,0,0,0,"CON-B03-GR-1090, CON-B03-GR-1080",CON-B03-1ST-1000,0,0%,Yes,Yes
0,CON-B03-GR-1110,Dismantling Formwork (B03) (GR),Approved Baseline.CON.P01.B03.SUP.GF,Approved Baseline,1,1,26-May-26,26-May-26,26-May-26,26-May-26,31,31,0,0,0,0,CON-B03-GR-1080,CON-B03-1ST-1040,0,0%,No,No
0,,,,,65,65,2-Jun-26,5-Aug-26,2-Jun-26,5-Aug-26,0,27,0,0,0,1,,,1,,,
0,CON-B03-1ST-1000,"Scaffolding works for Walls, Col. & Cores (B03) (1st)",Approved Baseline.CON.P01.B03.SUP.1stF,Approved Baseline,5,5,2-Jun-26,7-Jun-26,2-Jun-26,7-Jun-26,0,0,0,0,0,0,CON-B03-GR-1100,"CON-B03-1ST-1010, CON-B03-1ST-1010",0,0%,Yes,Yes
0,CON-B03-1ST-1010,"RFT for Walls, Col. & Cores (B03) (1st)",Approved Baseline.CON.P01.B03.SUP.1stF,Approved Baseline,12,12,6-Jun-26,18-Jun-26,6-Jun-26,18-Jun-26,0,0,0,0,0,1,"CON-B03-1ST-1000, CON-B03-1ST-1000, E-APP-B03-1ST-1000, P-MDEL-1120","CON-B03-1ST-1020, CON-B03-1ST-1020",1,0%,Yes,Yes
0,CON-B03-1ST-1020,"Shuttering for Walls, Col. & Cores (B03) (1st)",Approved Baseline.CON.P01.B03.SUP.1stF,Approved Baseline,12,12,10-Jun-26,23-Jun-26,10-Jun-26,23-Jun-26,0,0,0,0,0,0,"CON-B03-1ST-1010, CON-B03-1ST-1010, E-APP-B03-1ST-1000",CON-B03-1ST-1030,0,0%,Yes,Yes
0,CON-B03-1ST-1030,"Pouring for Walls, Col. & Cores (B03) (1st)",Approved Baseline.CON.P01.B03.SUP.1stF,Approved Baseline,2,2,24-Jun-26,25-Jun-26,24-Jun-26,25-Jun-26,0,0,0,0,0,0,"CON-B03-1ST-1020, P-MDEL-1030","CON-B03-1ST-1040, AB-SUB-B03-1ST-1000",0,0%,Yes,Yes
0,CON-B03-1ST-1040,"Shuttering for Slabs, Beams & Stairs (B03) (1st)",Approved Baseline.CON.P01.B03.SUP.1stF,Approved Baseline,15,15,27-Jun-26,14-Jul-26,27-Jun-26,14-Jul-26,0,0,0,0,0,0,"E-APP-B03-1ST-1030, E-APP-B03-1ST-1020, E-APP-B03-1ST-1010, CON-B03-1ST-1030, CON-B03-GR-1110","CON-B03-1ST-1050, CON-B03-1ST-1050",0,0%,Yes,Yes
0,CON-B03-1ST-1050,"RFT for Slabs, Beams & Stairs (B03) (1st)",Approved Baseline.CON.P01.B03.SUP.1stF,Approved Baseline,15,15,2-Jul-26,19-Jul-26,2-Jul-26,19-Jul-26,0,0,0,0,0,0,"CON-B03-1ST-1040, CON-B03-1ST-1040, E-APP-B03-1ST-1010, E-APP-B03-1ST-1020, E-APP-B03-1ST-1030, P-MDEL-1120",CON-B03-1ST-1060,0,0%,Yes,Yes
0,CON-B03-1ST-1060,"Pouring for Slabs, Beams & Stairs (B03) (1st)",Approved Baseline.CON.P01.B03.SUP.1stF,Approved Baseline,3,3,20-Jul-26,22-Jul-26,20-Jul-26,22-Jul-26,0,0,0,0,0,0,"CON-B03-1ST-1050, P-MDEL-1030","CON-B03-1ST-1070, CON-B03-1ST-1080, AB-SUB-B03-1ST-1010, AB-SUB-B03-1ST-1020, AB-SUB-B03-1ST-1030",0,0%,Yes,Yes
0,CON-B03-1ST-1070,"Curing for Slabs, Beams & Stairs (B03) (1st)",Approved Baseline.CON.P01.B03.SUP.1stF,Approved Baseline,5,5,23-Jul-26,27-Jul-26,23-Jul-26,27-Jul-26,1,1,0,0,0,0,CON-B03-1ST-1060,CON-B03-2ND-1000,0,0%,No,Yes
0,CON-B03-1ST-1080,Dismantling Formwork (B03) (1st),Approved Baseline.CON.P01.B03.SUP.1stF,Approved Baseline,1,1,5-Aug-26,5-Aug-26,5-Aug-26,5-Aug-26,27,27,0,0,0,0,CON-B03-1ST-1060,CON-B03-2ND-1040,0,0%,No,No
0,,,,,65,65,8-Aug-26,11-Oct-26,8-Aug-26,11-Oct-26,0,23,0,0,0,1,,,1,,,
0,CON-B03-2ND-1000,"Scaffolding works for Walls, Col. & Cores (B03) (2nd)",Approved Baseline.CON.P01.B03.SUP.2ndF,Approved Baseline,5,5,8-Aug-26,12-Aug-26,8-Aug-26,12-Aug-26,0,0,0,0,0,0,CON-B03-1ST-1070,"CON-B03-2ND-1010, CON-B03-2ND-1010",0,0%,Yes,Yes
0,CON-B03-2ND-1010,"RFT for Walls, Col. & Cores (B03) (2nd)",Approved Baseline.CON.P01.B03.SUP.2ndF,Approved Baseline,12,12,11-Aug-26,24-Aug-26,11-Aug-26,24-Aug-26,0,0,0,0,0,1,"CON-B03-2ND-1000, CON-B03-2ND-1000, E-APP-B03-2ND-1000, P-MDEL-1110","CON-B03-2ND-1020, CON-B03-2ND-1020",1,0%,Yes,Yes
0,CON-B03-2ND-1020,"Shuttering for Walls, Col. & Cores (B03) (2nd)",Approved Baseline.CON.P01.B03.SUP.2ndF,Approved Baseline,12,12,16-Aug-26,30-Aug-26,16-Aug-26,30-Aug-26,0,0,0,0,0,0,"CON-B03-2ND-1010, CON-B03-2ND-1010, E-APP-B03-2ND-1000",CON-B03-2ND-1030,0,0%,Yes,Yes
0,CON-B03-2ND-1030,"Pouring for Walls, Col. & Cores (B03) (2nd)",Approved Baseline.CON.P01.B03.SUP.2ndF,Approved Baseline,2,2,31-Aug-26,1-Sep-26,31-Aug-26,1-Sep-26,0,0,0,0,0,0,"CON-B03-2ND-1020, P-MDEL-1030","CON-B03-2ND-1040, AB-SUB-B03-2ND-1000",0,0%,Yes,Yes
0,CON-B03-2ND-1040,"Shuttering for Slabs, Beams & Stairs (B03) (2nd)",Approved Baseline.CON.P01.B03.SUP.2ndF,Approved Baseline,15,15,2-Sep-26,19-Sep-26,2-Sep-26,19-Sep-26,0,0,0,0,0,0,"E-APP-B03-2ND-1030, E-APP-B03-2ND-1020, E-APP-B03-2ND-1010, CON-B03-2ND-1030, CON-B03-1ST-1080","CON-B03-2ND-1050, CON-B03-2ND-1050",0,0%,Yes,Yes
0,CON-B03-2ND-1050,"RFT for Slabs, Beams & Stairs(B03) (2nd)",Approved Baseline.CON.P01.B03.SUP.2ndF,Approved Baseline,15,15,7-Sep-26,23-Sep-26,7-Sep-26,23-Sep-26,0,0,0,0,0,0,"CON-B03-2ND-1040, CON-B03-2ND-1040, E-APP-B03-2ND-1010, E-APP-B03-2ND-1020, E-APP-B03-2ND-1030, P-MDEL-1110",CON-B03-2ND-1060,0,0%,Yes,Yes
0,CON-B03-2ND-1060,"Pouring for Slabs, Beams & Stairs (B03) (2nd)",Approved Baseline.CON.P01.B03.SUP.2ndF,Approved Baseline,3,3,24-Sep-26,27-Sep-26,24-Sep-26,27-Sep-26,0,0,0,0,0,0,"CON-B03-2ND-1050, P-MDEL-1030","CON-B03-2ND-1070, CON-B03-2ND-1080, AB-SUB-B03-2ND-1010, AB-SUB-B03-2ND-1020, AB-SUB-B03-2ND-1030",0,0%,Yes,Yes
0,CON-B03-2ND-1070,"Curing for Slabs, Beams & Stairs (B03) (2nd)",Approved Baseline.CON.P01.B03.SUP.2ndF,Approved Baseline,3,3,28-Sep-26,30-Sep-26,28-Sep-26,30-Sep-26,0,0,0,0,0,0,CON-B03-2ND-1060,CON-B03-3RD-1000,0,0%,Yes,Yes
0,CON-B03-2ND-1080,Dismantling Formwork (B03) (2nd),Approved Baseline.CON.P01.B03.SUP.2ndF,Approved Baseline,1,1,11-Oct-26,11-Oct-26,11-Oct-26,11-Oct-26,23,23,0,0,0,0,CON-B03-2ND-1060,CON-B03-3RD-1040,0,0%,No,No
0,,,,,62,62,11-Oct-26,11-Dec-26,11-Oct-26,11-Dec-26,0,25,0,0,0,1,,,1,,,
0,CON-B03-3RD-1000,"Scaffolding works for Walls, Col. & Cores (B03) (3rd)",Approved Baseline.CON.P01.B03.SUP.3rdF,Approved Baseline,5,5,11-Oct-26,15-Oct-26,11-Oct-26,15-Oct-26,0,0,0,0,0,0,CON-B03-2ND-1070,"CON-B03-3RD-1010, CON-B03-3RD-1010",0,0%,Yes,Yes
0,CON-B03-3RD-1010,"RFT for Walls, Col. & Cores (B03) (3rd)",Approved Baseline.CON.P01.B03.SUP.3rdF,Approved Baseline,12,12,14-Oct-26,27-Oct-26,14-Oct-26,27-Oct-26,0,0,0,0,0,1,"CON-B03-3RD-1000, CON-B03-3RD-1000, E-APP-B03-3RD-1000, P-MDEL-1100","CON-B03-3RD-1020, CON-B03-3RD-1020",1,0%,Yes,Yes
0,CON-B03-3RD-1020,"Shuttering for Walls, Col. & Cores (B03) (3rd)",Approved Baseline.CON.P01.B03.SUP.3rdF,Approved Baseline,12,12,19-Oct-26,1-Nov-26,19-Oct-26,1-Nov-26,0,0,0,0,0,0,"CON-B03-3RD-1010, CON-B03-3RD-1010, E-APP-B03-3RD-1000",CON-B03-3RD-1030,0,0%,Yes,Yes
0,CON-B03-3RD-1030,"Pouring for Walls, Col. & Cores (B03) (3rd)",Approved Baseline.CON.P01.B03.SUP.3rdF,Approved Baseline,2,2,2-Nov-26,3-Nov-26,2-Nov-26,3-Nov-26,0,0,0,0,0,0,"CON-B03-3RD-1020, P-MDEL-1030","CON-B03-3RD-1040, AB-SUB-B03-3RD-1000",0,0%,Yes,Yes
0,CON-B03-3RD-1040,"Shuttering for Slabs, Beams & Stairs (B03) (3rd)",Approved Baseline.CON.P01.B03.SUP.3rdF,Approved Baseline,15,15,4-Nov-26,21-Nov-26,4-Nov-26,21-Nov-26,0,0,0,0,0,0,"E-APP-B03-3RD-1030, E-APP-B03-3RD-1020, E-APP-B03-3RD-1010, CON-B03-3RD-1030, CON-B03-2ND-1080","CON-B03-3RD-1050, CON-B03-3RD-1050",0,0%,Yes,Yes
0,CON-B03-3RD-1050,"RFT for Slabs, Beams & Stairs (B03) (3rd)",Approved Baseline.CON.P01.B03.SUP.3rdF,Approved Baseline,15,15,9-Nov-26,25-Nov-26,9-Nov-26,25-Nov-26,0,0,0,0,0,0,"CON-B03-3RD-1040, CON-B03-3RD-1040, E-APP-B03-3RD-1010, E-APP-B03-3RD-1020, E-APP-B03-3RD-1030, P-MDEL-1100",CON-B03-3RD-1060,0,0%,Yes,Yes
0,CON-B03-3RD-1060,"Pouring for Slabs, Beams & Stairs (B03) (3rd)",Approved Baseline.CON.P01.B03.SUP.3rdF,Approved Baseline,3,3,26-Nov-26,29-Nov-26,26-Nov-26,29-Nov-26,0,0,0,0,0,0,"CON-B03-3RD-1050, P-MDEL-1030","CON-B03-3RD-1070, CON-B03-3RD-1080, AB-SUB-B03-3RD-1010, AB-SUB-B03-3RD-1020, AB-SUB-B03-3RD-1030",0,0%,Yes,Yes
0,CON-B03-3RD-1070,"Curing for Slabs, Beams & Stairs (B03) (3rd)",Approved Baseline.CON.P01.B03.SUP.3rdF,Approved Baseline,3,3,30-Nov-26,2-Dec-26,30-Nov-26,2-Dec-26,0,0,0,0,0,0,CON-B03-3RD-1060,CON-B03-4TH-1000,0,0%,Yes,Yes
0,CON-B03-3RD-1080,Dismantling Formwork (B03) (3rd),Approved Baseline.CON.P01.B03.SUP.3rdF,Approved Baseline,1,1,11-Dec-26,11-Dec-26,11-Dec-26,11-Dec-26,25,25,0,0,0,0,CON-B03-3RD-1060,CON-B03-4TH-1040,0,0%,No,No
0,,,,,61,61,13-Dec-26,11-Feb-27,13-Dec-26,11-Feb-27,0,17,0,0,0,1,,,1,,,
0,CON-B03-4TH-1000,"Scaffolding works for Walls, Col. & Cores (B03) (4th)",Approved Baseline.CON.P01.B03.SUP.4thF,Approved Baseline,5,5,13-Dec-26,17-Dec-26,13-Dec-26,17-Dec-26,0,0,0,0,0,0,CON-B03-3RD-1070,"CON-B03-4TH-1010, CON-B03-4TH-1010",0,0%,Yes,Yes
0,CON-B03-4TH-1010,"RFT for Walls, Col. & Cores (B03) (4th)",Approved Baseline.CON.P01.B03.SUP.4thF,Approved Baseline,12,12,16-Dec-26,29-Dec-26,16-Dec-26,29-Dec-26,0,0,0,0,0,1,"CON-B03-4TH-1000, CON-B03-4TH-1000, E-APP-B03-4TH-1000, P-MDEL-1090","CON-B03-4TH-1020, CON-B03-4TH-1020",1,0%,Yes,Yes
0,CON-B03-4TH-1020,"Shuttering for Walls, Col. & Cores (B03) (4th)",Approved Baseline.CON.P01.B03.SUP.4thF,Approved Baseline,12,12,21-Dec-26,3-Jan-27,21-Dec-26,3-Jan-27,0,0,0,0,0,0,"CON-B03-4TH-1010, CON-B03-4TH-1010, E-APP-B03-4TH-1000",CON-B03-4TH-1030,0,0%,Yes,Yes
0,CON-B03-4TH-1030,"Pouring for Walls, Col. & Cores (B03) (4th)",Approved Baseline.CON.P01.B03.SUP.4thF,Approved Baseline,2,2,4-Jan-27,5-Jan-27,4-Jan-27,5-Jan-27,0,0,0,0,0,0,"CON-B03-4TH-1020, P-MDEL-1030","CON-B03-4TH-1040, AB-SUB-B03-4TH-1000",0,0%,Yes,Yes
0,CON-B03-4TH-1040,"Shuttering for Slabs, Beams & Stairs (B03) (4th)",Approved Baseline.CON.P01.B03.SUP.4thF,Approved Baseline,12,12,6-Jan-27,20-Jan-27,6-Jan-27,20-Jan-27,0,0,0,0,0,0,"E-APP-B03-4TH-1030, E-APP-B03-4TH-1020, E-APP-B03-4TH-1010, CON-B03-4TH-1030, CON-B03-3RD-1080","CON-B03-4TH-1050, CON-B03-4TH-1050",0,0%,Yes,Yes
0,CON-B03-4TH-1050,"RFT for Slabs, Beams & Stairs (B03) (4th)",Approved Baseline.CON.P01.B03.SUP.4thF,Approved Baseline,12,12,12-Jan-27,26-Jan-27,12-Jan-27,26-Jan-27,0,0,0,0,0,0,"CON-B03-4TH-1040, CON-B03-4TH-1040, E-APP-B03-4TH-1010, E-APP-B03-4TH-1020, E-APP-B03-4TH-1030, P-MDEL-1090",CON-B03-4TH-1060,0,0%,Yes,Yes
0,CON-B03-4TH-1060,"Pouring for Slabs, Beams & Stairs (B03) (4th)",Approved Baseline.CON.P01.B03.SUP.4thF,Approved Baseline,3,3,27-Jan-27,30-Jan-27,27-Jan-27,30-Jan-27,0,0,0,0,0,0,"CON-B03-4TH-1050, P-MDEL-1030","CON-B03-4TH-1070, CON-B03-4TH-1080, AB-SUB-B03-4TH-1010, AB-SUB-B03-4TH-1020, AB-SUB-B03-4TH-1030",0,0%,Yes,Yes
0,CON-B03-4TH-1070,"Curing for Slabs, Beams & Stairs (B03) (4th)",Approved Baseline.CON.P01.B03.SUP.4thF,Approved Baseline,3,3,31-Jan-27,2-Feb-27,31-Jan-27,2-Feb-27,0,0,0,0,0,0,CON-B03-4TH-1060,CON-B03-RF-1000,0,0%,Yes,Yes
0,CON-B03-4TH-1080,Dismantling Formwork (B03) (4th),Approved Baseline.CON.P01.B03.SUP.4thF,Approved Baseline,1,1,11-Feb-27,11-Feb-27,11-Feb-27,11-Feb-27,17,17,0,0,0,0,CON-B03-4TH-1060,CON-B03-RF-1060,0,0%,No,No
0,,,,,29,29,13-Feb-27,13-Mar-27,13-Feb-27,13-Mar-27,0,14,0,0,0,1,,,1,,,
0,CON-B03-RF-1000,"Scaffolding works for Walls, Col. & Cores (B03) (RF)",Approved Baseline.CON.P01.B03.SUP.RF,Approved Baseline,2,2,13-Feb-27,14-Feb-27,13-Feb-27,14-Feb-27,0,0,0,0,0,0,CON-B03-4TH-1070,CON-B03-RF-1010,0,0%,Yes,Yes
0,CON-B03-RF-1010,"RFT for Walls, Col. & Cores (B03) (RF)",Approved Baseline.CON.P01.B03.SUP.RF,Approved Baseline,2,2,15-Feb-27,16-Feb-27,15-Feb-27,16-Feb-27,0,0,0,0,0,1,"CON-B03-RF-1000, E-APP-B03-RF-1000, P-MDEL-1200",CON-B03-RF-1020,1,0%,Yes,Yes
0,CON-B03-RF-1020,"Shuttering for Walls, Col. & Cores (B03) (RF)",Approved Baseline.CON.P01.B03.SUP.RF,Approved Baseline,2,2,17-Feb-27,18-Feb-27,17-Feb-27,18-Feb-27,0,0,0,0,0,0,"CON-B03-RF-1010, E-APP-B03-RF-1000",CON-B03-RF-1030,0,0%,Yes,Yes
0,CON-B03-RF-1030,"Pouring for Walls, Col. & Cores (B03) (RF)",Approved Baseline.CON.P01.B03.SUP.RF,Approved Baseline,2,2,20-Feb-27,21-Feb-27,20-Feb-27,21-Feb-27,0,0,0,0,0,0,"CON-B03-RF-1020, P-MDEL-1030","CON-B03-RF-1040, AB-SUB-B03-RF-1000",0,0%,Yes,Yes
0,CON-B03-RF-1040,"Shuttering for Slabs, Beams  (B03) (RF)",Approved Baseline.CON.P01.B03.SUP.RF,Approved Baseline,3,3,22-Feb-27,24-Feb-27,22-Feb-27,24-Feb-27,0,0,0,0,0,0,"E-APP-B03-RF-1020, E-APP-B03-RF-1010, CON-B03-RF-1030",CON-B03-RF-1050,0,0%,Yes,Yes
0,CON-B03-RF-1050,"RFT for Slabs, Beams  (B03) (RF)",Approved Baseline.CON.P01.B03.SUP.RF,Approved Baseline,3,3,25-Feb-27,28-Feb-27,25-Feb-27,28-Feb-27,0,0,0,0,0,0,"CON-B03-RF-1040, E-APP-B03-RF-1010, E-APP-B03-RF-1020, P-MDEL-1200",CON-B03-RF-1060,0,0%,Yes,Yes
0,CON-B03-RF-1060,"Pouring for Slabs, Beams  (B03) (RF)",Approved Baseline.CON.P01.B03.SUP.RF,Approved Baseline,2,2,1-Mar-27,2-Mar-27,1-Mar-27,2-Mar-27,0,0,0,0,0,0,"CON-B03-RF-1050, P-MDEL-1030, CON-B03-4TH-1080","CON-B03-RF-1070, AB-SUB-B03-RF-1010, AB-SUB-B03-RF-1020",0,0%,Yes,Yes
0,CON-B03-RF-1070,"Curing for Slabs, Beams  (B03) (RF)",Approved Baseline.CON.P01.B03.SUP.RF,Approved Baseline,5,5,3-Mar-27,7-Mar-27,3-Mar-27,7-Mar-27,0,14,0,0,0,0,CON-B03-RF-1060,CON-B03-RF-1080,0,0%,No,No
0,CON-B03-RF-1080,Dismantling Formwork (B03) (RF),Approved Baseline.CON.P01.B03.SUP.RF,Approved Baseline,1,1,13-Mar-27,13-Mar-27,13-Mar-27,13-Mar-27,0,14,0,0,0,0,CON-B03-RF-1070,HO-1030,0,0%,No,No
0,,,,,512,512,15-Nov-25,10-Apr-27,15-Nov-25,10-Apr-27,0,0,0,0,0,0,,,0,,,
0,,,,,415,415,15-Nov-25,5-Apr-27,15-Nov-25,5-Apr-27,0,0,0,0,0,0,,,0,,,
0,,,,,409,409,15-Nov-25,29-Mar-27,15-Nov-25,29-Mar-27,0,4,0,0,0,0,,,0,,,
0,,,,,401,401,24-Nov-25,29-Mar-27,24-Nov-25,29-Mar-27,0,0,0,0,0,0,,,0,,,
0,,,,,401,401,24-Nov-25,29-Mar-27,24-Nov-25,29-Mar-27,0,0,0,0,0,0,,,0,,,
0,,,,,171,171,24-Nov-25,23-Jun-26,24-Nov-25,23-Jun-26,0,230,0,0,0,0,,,0,,,
0,,,,,18,18,24-Nov-25,14-Dec-25,24-Nov-25,14-Dec-25,0,383,0,0,0,0,,,0,,,
0,AB-SUB-B01-REP-1000,Submittal for General Replacement Plan & Typical Sections for Replacement / Backfilling DWGs As-Built Drawing (B01),Approved Baseline.HO.1.S.P02.B01.SUB.1,Approved Baseline,18,18,24-Nov-25,14-Dec-25,24-Nov-25,14-Dec-25,0,383,0,0,0,0,"CON-EW-B01-1000, CON-EW-B01-1010","AB-APP-B01-REP-1000, AB-APP-B01-REP-1000",0,0%,No,No
0,,,,,38,38,29-Nov-25,12-Jan-26,29-Nov-25,12-Jan-26,0,359,0,0,0,0,,,0,,,
0,AB-SUB-B01-FOOT-1000,Submittal for PC Raft Conc. Dim. DWGs As-Built Drawing (B01) (footing),Approved Baseline.HO.1.S.P02.B01.SUB.F,Approved Baseline,18,18,29-Nov-25,18-Dec-25,29-Nov-25,18-Dec-25,0,379,0,0,0,0,CON-B01-FOOT-1010,"AB-APP-B01-FOOT-1000, AB-APP-B01-FOOT-1000",0,0%,No,No
0,AB-SUB-B01-FOOT-1010,Submittal for  Waterproofing Layout Plan DWGs As-Built Drawing (B01),Approved Baseline.HO.1.S.P02.B01.SUB.F,Approved Baseline,18,18,3-Dec-25,23-Dec-25,3-Dec-25,23-Dec-25,0,375,0,0,0,0,CON-B01-FOOT-1030,"AB-APP-B01-FOOT-1010, AB-APP-B01-FOOT-1010",0,0%,No,No
0,AB-SUB-B01-FOOT-1020,Submittal for RC Raft & Footings Conc. Dim. DWGs As-Built Drawing (B01) (footing),Approved Baseline.HO.1.S.P02.B01.SUB.F,Approved Baseline,18,18,22-Dec-25,12-Jan-26,22-Dec-25,12-Jan-26,0,359,0,0,0,0,CON-B01-FOOT-1090,"AB-APP-B01-FOOT-1020, AB-APP-B01-FOOT-1020",0,0%,No,No
0,AB-SUB-B01-FOOT-1030,Submittal for RC Raft & Footings RFT DWGs As-Built Drawing (B01) (footing),Approved Baseline.HO.1.S.P02.B01.SUB.F,Approved Baseline,18,18,22-Dec-25,12-Jan-26,22-Dec-25,12-Jan-26,0,359,0,0,0,0,CON-B01-FOOT-1090,"AB-APP-B01-FOOT-1030, AB-APP-B01-FOOT-1030",0,0%,No,No
0,,,,,124,124,19-Jan-26,23-Jun-26,19-Jan-26,23-Jun-26,0,230,0,0,0,0,,,0,,,
0,AB-SUB-B01-BAS2-1000,Submittal for Col. & Walls Conc. Dim.  & RFT DWGs As-Built Drawing (B01) (Bas 02),Approved Baseline.HO.1.S.P02.B01.SUB.2ndB,Approved Baseline,18,18,19-Jan-26,9-Feb-26,19-Jan-26,9-Feb-26,0,336,0,0,0,0,CON-B01-BAS02-1030,"AB-APP-B01-BAS2-1000, AB-APP-B01-BAS2-1000",0,0%,No,No
0,AB-SUB-B01-BAS2-1010,Submittal for Stairs Conc. Dim.  & RFT DWGs As-Built Drawing (B01) (Bas 02),Approved Baseline.HO.1.S.P02.B01.SUB.2ndB,Approved Baseline,18,18,3-Feb-26,23-Feb-26,3-Feb-26,23-Feb-26,0,324,0,0,0,0,CON-B01-BAS02-1100,"AB-APP-B01-BAS2-1010, AB-APP-B01-BAS2-1010",0,0%,No,No
0,AB-SUB-B01-BAS2-1020,Submittal for Ramps Conc. Dim.  & RFT DWGs As-Built Drawing (B01) (Bas 02),Approved Baseline.HO.1.S.P02.B01.SUB.2ndB,Approved Baseline,18,18,5-Feb-26,25-Feb-26,5-Feb-26,25-Feb-26,0,322,0,0,0,0,CON-B01-BAS02-1110,"AB-APP-B01-BAS2-1020, AB-APP-B01-BAS2-1020",0,0%,No,No
0,AB-SUB-B01-BAS2-1030,Submittal for Slabs Conc. Dim.  & RFT DWGs As-Built Drawing (B01) (Bas 02),Approved Baseline.HO.1.S.P02.B01.SUB.2ndB,Approved Baseline,18,18,7-Feb-26,26-Feb-26,7-Feb-26,26-Feb-26,0,321,0,0,0,0,CON-B01-BAS02-1130,"AB-APP-B01-BAS2-1030, AB-APP-B01-BAS2-1030",0,0%,No,No
0,AB-SUB-B01-BAS2-1040,Submittal for Beams Conc. Dim.  & RFT DWGs As-Built Drawing (B01) (Bas 02),Approved Baseline.HO.1.S.P02.B01.SUB.2ndB,Approved Baseline,18,18,7-Feb-26,26-Feb-26,7-Feb-26,26-Feb-26,0,321,0,0,0,0,CON-B01-BAS02-1130,"AB-APP-B01-BAS2-1040, AB-APP-B01-BAS2-1040",0,0%,No,No
0,,,,,22,22,25-May-26,23-Jun-26,25-May-26,23-Jun-26,0,230,0,0,0,0,,,0,,,
0,AB-SUB-B01-SOG-1000,Submittal for S.O.G Conc. Dim. DWGs As-Built Drawing (B01) (Sog),Approved Baseline.HO.1.S.P02.B01.SUB.2ndB.SOG,Approved Baseline,18,18,25-May-26,18-Jun-26,25-May-26,18-Jun-26,0,234,0,0,0,0,CON-B01-SOG-1040,"AB-APP-B01-SOG-1000, AB-APP-B01-SOG-1000",0,0%,No,No
0,AB-SUB-B01-SOG-1010,Submittal for S.O.G RFT DWGs As-Built Drawing (B01) (Sog),Approved Baseline.HO.1.S.P02.B01.SUB.2ndB.SOG,Approved Baseline,18,18,3-Jun-26,23-Jun-26,3-Jun-26,23-Jun-26,0,230,0,0,0,0,CON-B01-SOG-1050,"AB-APP-B01-SOG-1010, AB-APP-B01-SOG-1010",0,0%,No,No
0,,,,,33,33,1-Mar-26,12-Apr-26,1-Mar-26,12-Apr-26,0,287,0,0,0,0,,,0,,,
0,AB-SUB-B01-BAS1-1000,Submittal for Col. & Walls Conc. Dim.  & RFT DWGs As-Built Drawing (B01) (Bas 01),Approved Baseline.HO.1.S.P02.B01.SUB.1stB,Approved Baseline,18,18,1-Mar-26,25-Mar-26,1-Mar-26,25-Mar-26,0,302,0,0,0,0,CON-B01-BAS01-1030,"AB-APP-B01-BAS1-1000, AB-APP-B01-BAS1-1000",0,0%,No,No
0,AB-SUB-B01-BAS1-1010,Submittal for Stairs Conc. Dim.  & RFT DWGs As-Built Drawing (B01) (Bas 01),Approved Baseline.HO.1.S.P02.B01.SUB.1stB,Approved Baseline,18,18,21-Mar-26,9-Apr-26,21-Mar-26,9-Apr-26,0,289,0,0,0,0,CON-B01-BAS01-1100,"AB-APP-B01-BAS1-1010, AB-APP-B01-BAS1-1010",0,0%,No,No
0,AB-SUB-B01-BAS1-1020,Submittal for Slabs Conc. Dim.  & RFT DWGs As-Built Drawing (B01) (Bas 01),Approved Baseline.HO.1.S.P02.B01.SUB.1stB,Approved Baseline,18,18,22-Mar-26,11-Apr-26,22-Mar-26,11-Apr-26,0,288,0,0,0,0,CON-B01-BAS01-1110,"AB-APP-B01-BAS1-1020, AB-APP-B01-BAS1-1020",0,0%,No,No
0,AB-SUB-B01-BAS1-1030,Submittal for Beams Conc. Dim.  & RFT DWGs As-Built Drawing (B01) (Bas 01),Approved Baseline.HO.1.S.P02.B01.SUB.1stB,Approved Baseline,18,18,22-Mar-26,11-Apr-26,22-Mar-26,11-Apr-26,0,288,0,0,0,0,CON-B01-BAS01-1110,"AB-APP-B01-BAS1-1030, AB-APP-B01-BAS1-1030",0,0%,No,No
0,AB-SUB-B01-BAS1-1040,Submittal for Ramps Conc. Dim.  & RFT DWGs As-Built Drawing (B01) (Bas 01),Approved Baseline.HO.1.S.P02.B01.SUB.1stB,Approved Baseline,18,18,23-Mar-26,12-Apr-26,23-Mar-26,12-Apr-26,0,287,0,0,0,0,CON-B01-BAS01-1130,"AB-APP-B01-BAS1-1040, AB-APP-B01-BAS1-1040",0,0%,No,No
0,,,,,292,292,7-Apr-26,29-Mar-27,7-Apr-26,29-Mar-27,0,0,0,0,0,0,,,0,,,
0,,,,,36,36,7-Apr-26,19-May-26,7-Apr-26,19-May-26,0,256,0,0,0,0,,,0,,,
0,AB-SUB-B01-GR-1000,Submittal for Col. & Walls Conc. Dim.  & RFT DWGs As-Built Drawing (B01),Approved Baseline.HO.1.S.P02.B01.SUP.GF,Approved Baseline,18,18,7-Apr-26,28-Apr-26,7-Apr-26,28-Apr-26,0,274,0,0,0,0,CON-B01-GR-1030,"AB-APP-B01-GR-1000, AB-APP-B01-GR-1000",0,0%,No,No
0,AB-SUB-B01-GR-1010,Submittal for Stairs Conc. Dim.  & RFT DWGs As-Built Drawing (B01),Approved Baseline.HO.1.S.P02.B01.SUP.GF,Approved Baseline,18,18,25-Apr-26,14-May-26,25-Apr-26,14-May-26,0,260,0,0,0,0,CON-B01-GR-1080,"AB-APP-B01-GR-1010, AB-APP-B01-GR-1010",0,0%,No,No
0,AB-SUB-B01-GR-1020,Submittal for Slabs Conc. Dim.  & RFT DWGs As-Built Drawing (B01),Approved Baseline.HO.1.S.P02.B01.SUP.GF,Approved Baseline,18,18,29-Apr-26,19-May-26,29-Apr-26,19-May-26,0,256,0,0,0,0,CON-B01-GR-1090,"AB-APP-B01-GR-1020, AB-APP-B01-GR-1020",0,0%,No,No
0,AB-SUB-B01-GR-1030,Submittal for Beams Conc. Dim.  & RFT DWGs As-Built Drawing (B01),Approved Baseline.HO.1.S.P02.B01.SUP.GF,Approved Baseline,18,18,29-Apr-26,19-May-26,29-Apr-26,19-May-26,0,256,0,0,0,0,CON-B01-GR-1090,"AB-APP-B01-GR-1030, AB-APP-B01-GR-1030",0,0%,No,No
0,,,,,37,37,17-May-26,4-Jul-26,17-May-26,4-Jul-26,0,222,0,0,0,0,,,0,,,
0,AB-SUB-B01-1ST-1000,Submittal for Col. & Walls Conc. Dim.  & RFT DWGs As-Built Drawing (B01) (1st),Approved Baseline.HO.1.S.P02.B01.SUP.1stF,Approved Baseline,18,18,17-May-26,10-Jun-26,17-May-26,10-Jun-26,0,241,0,0,0,0,CON-B01-1ST-1030,"AB-APP-B01-1ST-1000, AB-APP-B01-1ST-1000",0,0%,No,No
0,AB-SUB-B01-1ST-1010,Submittal for Slabs Conc. Dim.  & RFT DWGs As-Built Drawing (B01) (1st),Approved Baseline.HO.1.S.P02.B01.SUP.1stF,Approved Baseline,18,18,13-Jun-26,4-Jul-26,13-Jun-26,4-Jul-26,0,222,0,0,0,0,CON-B01-1ST-1060,"AB-APP-B01-1ST-1010, AB-APP-B01-1ST-1010",0,0%,No,No
0,AB-SUB-B01-1ST-1020,Submittal for Beams Conc. Dim.  & RFT DWGs As-Built Drawing (B01) (1st),Approved Baseline.HO.1.S.P02.B01.SUP.1stF,Approved Baseline,18,18,13-Jun-26,4-Jul-26,13-Jun-26,4-Jul-26,0,222,0,0,0,0,CON-B01-1ST-1060,"AB-APP-B01-1ST-1020, AB-APP-B01-1ST-1020",0,0%,No,No
0,AB-SUB-B01-1ST-1030,Submittal for Stairs Conc. Dim.  & RFT DWGs As-Built Drawing (B01) (1st),Approved Baseline.HO.1.S.P02.B01.SUP.1stF,Approved Baseline,18,18,13-Jun-26,4-Jul-26,13-Jun-26,4-Jul-26,0,222,0,0,0,0,CON-B01-1ST-1060,"AB-APP-B01-1ST-1030, AB-APP-B01-1ST-1030",0,0%,No,No
0,,,,,33,33,1-Jul-26,9-Aug-26,1-Jul-26,9-Aug-26,0,192,0,0,0,0,,,0,,,
0,AB-SUB-B01-2ND-1000,Submittal for Col. & Walls Conc. Dim.  & RFT DWGs As-Built Drawing (B01) (2nd),Approved Baseline.HO.1.S.P02.B01.SUP.2ndF,Approved Baseline,18,18,1-Jul-26,21-Jul-26,1-Jul-26,21-Jul-26,0,207,0,0,0,0,CON-B01-2ND-1030,"AB-APP-B01-2ND-1000, AB-APP-B01-2ND-1000",0,0%,No,No
0,AB-SUB-B01-2ND-1010,Submittal for Slabs Conc. Dim.  & RFT DWGs As-Built Drawing (B01) (2nd),Approved Baseline.HO.1.S.P02.B01.SUP.2ndF,Approved Baseline,18,18,19-Jul-26,9-Aug-26,19-Jul-26,9-Aug-26,0,192,0,0,0,0,CON-B01-2ND-1060,"AB-APP-B01-2ND-1010, AB-APP-B01-2ND-1010",0,0%,No,No
0,AB-SUB-B01-2ND-1020,Submittal for Beams Conc. Dim.  & RFT DWGs As-Built Drawing (B01) (2nd),Approved Baseline.HO.1.S.P02.B01.SUP.2ndF,Approved Baseline,18,18,19-Jul-26,9-Aug-26,19-Jul-26,9-Aug-26,0,192,0,0,0,0,CON-B01-2ND-1060,"AB-APP-B01-2ND-1020, AB-APP-B01-2ND-1020",0,0%,No,No
0,AB-SUB-B01-2ND-1030,Submittal for Stairs Conc. Dim.  & RFT DWGs As-Built Drawing (B01) (2nd),Approved Baseline.HO.1.S.P02.B01.SUP.2ndF,Approved Baseline,18,18,19-Jul-26,9-Aug-26,19-Jul-26,9-Aug-26,0,192,0,0,0,0,CON-B01-2ND-1060,"AB-APP-B01-2ND-1030, AB-APP-B01-2ND-1030",0,0%,No,No
0,,,,,35,35,8-Aug-26,17-Sep-26,8-Aug-26,17-Sep-26,0,159,0,0,0,0,,,0,,,
0,AB-SUB-B01-3RD-1000,Submittal for Col. & Walls Conc. Dim.  & RFT DWGs As-Built Drawing (B01) (3rd),Approved Baseline.HO.1.S.P02.B01.SUP.3rdF,Approved Baseline,18,18,8-Aug-26,29-Aug-26,8-Aug-26,29-Aug-26,0,176,0,0,0,0,CON-B01-3RD-1030,"AB-APP-B01-3RD-1000, AB-APP-B01-3RD-1000",0,0%,No,No
0,AB-SUB-B01-3RD-1010,Submittal for Slabs Conc. Dim.  & RFT DWGs As-Built Drawing (B01) (3rd),Approved Baseline.HO.1.S.P02.B01.SUP.3rdF,Approved Baseline,18,18,29-Aug-26,17-Sep-26,29-Aug-26,17-Sep-26,0,159,0,0,0,0,CON-B01-3RD-1060,"AB-APP-B01-3RD-1010, AB-APP-B01-3RD-1010",0,0%,No,No
0,AB-SUB-B01-3RD-1020,Submittal for Beams Conc. Dim.  & RFT DWGs As-Built Drawing (B01) (3rd),Approved Baseline.HO.1.S.P02.B01.SUP.3rdF,Approved Baseline,18,18,29-Aug-26,17-Sep-26,29-Aug-26,17-Sep-26,0,159,0,0,0,0,CON-B01-3RD-1060,"AB-APP-B01-3RD-1020, AB-APP-B01-3RD-1020",0,0%,No,No
0,AB-SUB-B01-3RD-1030,Submittal for Stairs Conc. Dim.  & RFT DWGs As-Built Drawing (B01) (3rd),Approved Baseline.HO.1.S.P02.B01.SUP.3rdF,Approved Baseline,18,18,29-Aug-26,17-Sep-26,29-Aug-26,17-Sep-26,0,159,0,0,0,0,CON-B01-3RD-1060,"AB-APP-B01-3RD-1030, AB-APP-B01-3RD-1030",0,0%,No,No
0,,,,,37,37,16-Sep-26,29-Oct-26,16-Sep-26,29-Oct-26,0,124,0,0,0,0,,,0,,,
0,AB-SUB-B01-4TH-1000,Submittal for Col. & Walls Conc. Dim.  & RFT DWGs As-Built Drawing (B01) (4th),Approved Baseline.HO.1.S.P02.B01.SUP.4thF,Approved Baseline,18,18,16-Sep-26,7-Oct-26,16-Sep-26,7-Oct-26,0,143,0,0,0,0,CON-B01-4TH-1030,"AB-APP-B01-4TH-1000, AB-APP-B01-4TH-1000",0,0%,No,No
0,AB-SUB-B01-4TH-1010,Submittal for Slabs Conc. Dim.  & RFT DWGs As-Built Drawing (B01) (4th),Approved Baseline.HO.1.S.P02.B01.SUP.4thF,Approved Baseline,18,18,10-Oct-26,29-Oct-26,10-Oct-26,29-Oct-26,0,124,0,0,0,0,CON-B01-4TH-1060,"AB-APP-B01-4TH-1010, AB-APP-B01-4TH-1010",0,0%,No,No
0,AB-SUB-B01-4TH-1020,Submittal for Beams Conc. Dim.  & RFT DWGs As-Built Drawing (B01) (4th),Approved Baseline.HO.1.S.P02.B01.SUP.4thF,Approved Baseline,18,18,10-Oct-26,29-Oct-26,10-Oct-26,29-Oct-26,0,124,0,0,0,0,CON-B01-4TH-1060,"AB-APP-B01-4TH-1020, AB-APP-B01-4TH-1020",0,0%,No,No
0,AB-SUB-B01-4TH-1030,Submittal for Stairs Conc. Dim.  & RFT DWGs As-Built Drawing (B01) (4th),Approved Baseline.HO.1.S.P02.B01.SUP.4thF,Approved Baseline,18,18,10-Oct-26,29-Oct-26,10-Oct-26,29-Oct-26,0,124,0,0,0,0,CON-B01-4TH-1060,"AB-APP-B01-4TH-1030, AB-APP-B01-4TH-1030",0,0%,No,No
0,,,,,33,33,27-Oct-26,3-Dec-26,27-Oct-26,3-Dec-26,0,94,0,0,0,0,,,0,,,
0,AB-SUB-B01-5TH-1000,Submittal for Col. & Walls Conc. Dim.  & RFT DWGs As-Built Drawing (B01) (5th),Approved Baseline.HO.1.S.P02.B01.SUP.5thF,Approved Baseline,18,18,27-Oct-26,16-Nov-26,27-Oct-26,16-Nov-26,0,109,0,0,0,0,CON-B01-5TH-1030,"AB-APP-B01-5TH-1000, AB-APP-B01-5TH-1000",0,0%,No,No
0,AB-SUB-B01-5TH-1010,Submittal for Slabs Conc. Dim.  & RFT DWGs As-Built Drawing (B01) (5th),Approved Baseline.HO.1.S.P02.B01.SUP.5thF,Approved Baseline,18,18,14-Nov-26,3-Dec-26,14-Nov-26,3-Dec-26,0,94,0,0,0,0,CON-B01-5TH-1060,"AB-APP-B01-5TH-1010, AB-APP-B01-5TH-1010",0,0%,No,No
0,AB-SUB-B01-5TH-1020,Submittal for Beams Conc. Dim.  & RFT DWGs As-Built Drawing (B01) (5th),Approved Baseline.HO.1.S.P02.B01.SUP.5thF,Approved Baseline,18,18,14-Nov-26,3-Dec-26,14-Nov-26,3-Dec-26,0,94,0,0,0,0,CON-B01-5TH-1060,"AB-APP-B01-5TH-1020, AB-APP-B01-5TH-1020",0,0%,No,No
0,AB-SUB-B01-5TH-1030,Submittal for Stairs Conc. Dim.  & RFT DWGs As-Built Drawing (B01) (5th),Approved Baseline.HO.1.S.P02.B01.SUP.5thF,Approved Baseline,18,18,14-Nov-26,3-Dec-26,14-Nov-26,3-Dec-26,0,94,0,0,0,0,CON-B01-5TH-1060,"AB-APP-B01-5TH-1030, AB-APP-B01-5TH-1030",0,0%,No,No
0,,,,,33,33,1-Dec-26,9-Jan-27,1-Dec-26,9-Jan-27,0,64,0,0,0,0,,,0,,,
0,AB-SUB-B01-6TH-1000,Submittal for Col. & Walls Conc. Dim.  & RFT DWGs As-Built Drawing (B01) (6th),Approved Baseline.HO.1.S.P02.B01.SUP.6thF,Approved Baseline,18,18,1-Dec-26,21-Dec-26,1-Dec-26,21-Dec-26,0,79,0,0,0,0,CON-B01-6TH-1030,"AB-APP-B01-6TH-1000, AB-APP-B01-6TH-1000",0,0%,No,No
0,AB-SUB-B01-6TH-1010,Submittal for Slabs Conc. Dim.  & RFT DWGs As-Built Drawing (B01) (6th),Approved Baseline.HO.1.S.P02.B01.SUP.6thF,Approved Baseline,18,18,19-Dec-26,9-Jan-27,19-Dec-26,9-Jan-27,0,64,0,0,0,0,CON-B01-6TH-1060,"AB-APP-B01-6TH-1010, AB-APP-B01-6TH-1010",0,0%,No,No
0,AB-SUB-B01-6TH-1020,Submittal for Beams Conc. Dim.  & RFT DWGs As-Built Drawing (B01) (6th),Approved Baseline.HO.1.S.P02.B01.SUP.6thF,Approved Baseline,18,18,19-Dec-26,9-Jan-27,19-Dec-26,9-Jan-27,0,64,0,0,0,0,CON-B01-6TH-1060,"AB-APP-B01-6TH-1020, AB-APP-B01-6TH-1020",0,0%,No,No
0,AB-SUB-B01-6TH-1030,Submittal for Stairs Conc. Dim.  & RFT DWGs As-Built Drawing (B01) (6th),Approved Baseline.HO.1.S.P02.B01.SUP.6thF,Approved Baseline,18,18,19-Dec-26,9-Jan-27,19-Dec-26,9-Jan-27,0,64,0,0,0,0,CON-B01-6TH-1060,"AB-APP-B01-6TH-1030, AB-APP-B01-6TH-1030",0,0%,No,No
0,,,,,32,32,3-Jan-27,10-Feb-27,3-Jan-27,10-Feb-27,0,37,0,0,0,0,,,0,,,
0,AB-SUB-B01-7TH-1000,Submittal for Col. & Walls Conc. Dim.  & RFT DWGs As-Built Drawing (B01) (7th),Approved Baseline.HO.1.S.P02.B01.SUP.7thF,Approved Baseline,18,18,3-Jan-27,24-Jan-27,3-Jan-27,24-Jan-27,0,51,0,0,0,0,CON-B01-7TH-1030,"AB-APP-B01-7TH-1000, AB-APP-B01-7TH-1000",0,0%,No,No
0,AB-SUB-B01-7TH-1010,Submittal for Slabs Conc. Dim.  & RFT DWGs As-Built Drawing (B01) (7th),Approved Baseline.HO.1.S.P02.B01.SUP.7thF,Approved Baseline,18,18,20-Jan-27,10-Feb-27,20-Jan-27,10-Feb-27,0,37,0,0,0,0,CON-B01-7TH-1060,"AB-APP-B01-7TH-1010, AB-APP-B01-7TH-1010",0,0%,No,No
0,AB-SUB-B01-7TH-1020,Submittal for Beams Conc. Dim.  & RFT DWGs As-Built Drawing (B01) (7th),Approved Baseline.HO.1.S.P02.B01.SUP.7thF,Approved Baseline,18,18,20-Jan-27,10-Feb-27,20-Jan-27,10-Feb-27,0,37,0,0,0,0,CON-B01-7TH-1060,"AB-APP-B01-7TH-1020, AB-APP-B01-7TH-1020",0,0%,No,No
0,AB-SUB-B01-7TH-1030,Submittal for Stairs Conc. Dim.  & RFT DWGs As-Built Drawing (B01) (7th),Approved Baseline.HO.1.S.P02.B01.SUP.7thF,Approved Baseline,18,18,20-Jan-27,10-Feb-27,20-Jan-27,10-Feb-27,0,37,0,0,0,0,CON-B01-7TH-1060,"AB-APP-B01-7TH-1030, AB-APP-B01-7TH-1030",0,0%,No,No
0,,,,,30,30,4-Feb-27,14-Mar-27,4-Feb-27,14-Mar-27,0,13,0,0,0,0,,,0,,,
0,AB-SUB-B01-8TH-1000,Submittal for Col. & Walls Conc. Dim.  & RFT DWGs As-Built Drawing (B01) (8th),Approved Baseline.HO.1.S.P02.B01.SUP.8thF,Approved Baseline,18,18,4-Feb-27,24-Feb-27,4-Feb-27,24-Feb-27,0,25,0,0,0,0,CON-B01-8TH-1030,"AB-APP-B01-8TH-1000, AB-APP-B01-8TH-1000",0,0%,No,No
0,AB-SUB-B01-8TH-1010,Submittal for Slabs Conc. Dim.  & RFT DWGs As-Built Drawing (B01) (8th),Approved Baseline.HO.1.S.P02.B01.SUP.8thF,Approved Baseline,18,18,18-Feb-27,14-Mar-27,18-Feb-27,14-Mar-27,0,13,0,0,0,0,CON-B01-8TH-1060,"AB-APP-B01-8TH-1010, AB-APP-B01-8TH-1010",0,0%,No,No
0,AB-SUB-B01-8TH-1020,Submittal for Beams Conc. Dim.  & RFT DWGs As-Built Drawing (B01) (8th),Approved Baseline.HO.1.S.P02.B01.SUP.8thF,Approved Baseline,18,18,18-Feb-27,14-Mar-27,18-Feb-27,14-Mar-27,0,13,0,0,0,0,CON-B01-8TH-1060,"AB-APP-B01-8TH-1020, AB-APP-B01-8TH-1020",0,0%,No,No
0,AB-SUB-B01-8TH-1030,Submittal for Stairs Conc. Dim.  & RFT DWGs As-Built Drawing (B01) (8th),Approved Baseline.HO.1.S.P02.B01.SUP.8thF,Approved Baseline,18,18,18-Feb-27,14-Mar-27,18-Feb-27,14-Mar-27,0,13,0,0,0,0,CON-B01-8TH-1060,"AB-APP-B01-8TH-1030, AB-APP-B01-8TH-1030",0,0%,No,No
0,,,,,24,24,27-Feb-27,29-Mar-27,27-Feb-27,29-Mar-27,0,0,0,0,0,0,,,0,,,
0,AB-SUB-B01-RF-1000,Submittal for Col. & Walls Conc. Dim.  & RFT DWGs As-Built Drawing (B01) (RF),Approved Baseline.HO.1.S.P02.B01.SUP.RF,Approved Baseline,18,18,27-Feb-27,22-Mar-27,27-Feb-27,22-Mar-27,0,6,0,0,0,0,CON-B01-9TH-1030,"AB-APP-B01-RF-1000, AB-APP-B01-RF-1000",0,0%,No,No
0,AB-SUB-B01-RF-1010,Submittal for Slabs Conc. Dim.  & RFT DWGs As-Built Drawing (B01) (RF),Approved Baseline.HO.1.S.P02.B01.SUP.RF,Approved Baseline,18,18,6-Mar-27,29-Mar-27,6-Mar-27,29-Mar-27,0,0,0,0,0,0,CON-B01-9TH-1060,"AB-APP-B01-RF-1010, AB-APP-B01-RF-1010",0,0%,Yes,Yes
0,AB-SUB-B01-RF-1020,Submittal for Beams Conc. Dim.  & RFT DWGs As-Built Drawing (B01) (RF),Approved Baseline.HO.1.S.P02.B01.SUP.RF,Approved Baseline,18,18,6-Mar-27,29-Mar-27,6-Mar-27,29-Mar-27,0,0,0,0,0,0,CON-B01-9TH-1060,"AB-APP-B01-RF-1020, AB-APP-B01-RF-1020",0,0%,Yes,Yes
0,,,,,377,377,9-Dec-25,16-Mar-27,9-Dec-25,16-Mar-27,0,11,0,0,0,0,,,0,,,
0,,,,,173,173,9-Dec-25,12-Jul-26,9-Dec-25,12-Jul-26,0,215,0,0,0,0,,,0,,,
0,,,,,18,18,9-Dec-25,29-Dec-25,9-Dec-25,29-Dec-25,0,370,0,0,0,0,,,0,,,
0,AB-SUB-B02-REP-1000,Submittal for General Replacement Plan & Typical Sections for Replacement / Backfilling DWGs As-Built Drawing (B02),Approved Baseline.HO.1.S.P02.B02.SUB.1,Approved Baseline,18,18,9-Dec-25,29-Dec-25,9-Dec-25,29-Dec-25,0,370,0,0,0,0,"CON-EW-B02-1000, CON-EW-B02-1010","AB-APP-B02-REP-1000, AB-APP-B02-REP-1000",0,0%,No,No
0,,,,,42,42,11-Dec-25,31-Jan-26,11-Dec-25,31-Jan-26,0,344,0,0,0,0,,,0,,,
0,AB-SUB-B02-FOOT-1000,Submittal for PC Raft Conc. Dim. DWGs As-Built Drawing (B02) (footing),Approved Baseline.HO.1.S.P02.B02.SUB.F,Approved Baseline,18,18,11-Dec-25,31-Dec-25,11-Dec-25,31-Dec-25,0,368,0,0,0,0,"CON-B02-FOOT-1000, CON-B02-FOOT-1010","AB-APP-B02-FOOT-1000, AB-APP-B02-FOOT-1000",0,0%,No,No
0,AB-SUB-B02-FOOT-1010,Submittal for RC Raft & Footings Conc. Dim. DWGs As-Built Drawing  (B02) (footing),Approved Baseline.HO.1.S.P02.B02.SUB.F,Approved Baseline,18,18,29-Dec-25,19-Jan-26,29-Dec-25,19-Jan-26,0,353,0,0,0,0,CON-B02-FOOT-1040,"AB-APP-B02-FOOT-1010, AB-APP-B02-FOOT-1010",0,0%,No,No
0,AB-SUB-B02-FOOT-1020,Submittal for RC Raft & Footings RFT DWGs As-Built Drawing (B02) (footing),Approved Baseline.HO.1.S.P02.B02.SUB.F,Approved Baseline,18,18,3-Jan-26,24-Jan-26,3-Jan-26,24-Jan-26,0,349,0,0,0,0,"CON-B02-FOOT-1050, CON-B02-FOOT-1090","AB-APP-B02-FOOT-1020, AB-APP-B02-FOOT-1020",0,0%,No,No
0,AB-SUB-B02-FOOT-1030,Submittal for  Waterproofing Layout Plan DWGs As-Built Drawing (B02),Approved Baseline.HO.1.S.P02.B02.SUB.F,Approved Baseline,18,18,10-Jan-26,31-Jan-26,10-Jan-26,31-Jan-26,0,344,0,0,0,0,CON-B02-FOOT-1110,"AB-APP-B02-FOOT-1030, AB-APP-B02-FOOT-1030",0,0%,No,No
0,,,,,133,133,27-Jan-26,12-Jul-26,27-Jan-26,12-Jul-26,0,215,0,0,0,0,,,0,,,
0,AB-SUB-B02-BAS2-1000,Submittal for Col. & Walls Conc. Dim.& RFT DWGs As-Built Drawing (B02) (Bas 02),Approved Baseline.HO.1.S.P02.B02.SUB.2ndB,Approved Baseline,18,18,27-Jan-26,16-Feb-26,27-Jan-26,16-Feb-26,0,330,0,0,0,0,CON-B02-BAS02-1030,"AB-APP-B02-BAS2-1000, AB-APP-B02-BAS2-1000",0,0%,No,No
0,AB-SUB-B02-BAS2-1010,Submittal for Stairs Conc. Dim.& RFT DWGs As-Built Drawing (B02) (Bas 02),Approved Baseline.HO.1.S.P02.B02.SUB.2ndB,Approved Baseline,18,18,8-Feb-26,28-Feb-26,8-Feb-26,28-Feb-26,0,320,0,0,0,0,CON-B02-BAS02-1070,"AB-APP-B02-BAS2-1010, AB-APP-B02-BAS2-1010",0,0%,No,No
0,AB-SUB-B02-BAS2-1020,Submittal for Slabs Conc. Dim.& RFT DWGs As-Built Drawing (B02) (Bas 02),Approved Baseline.HO.1.S.P02.B02.SUB.2ndB,Approved Baseline,18,18,12-Feb-26,4-Mar-26,12-Feb-26,4-Mar-26,0,316,0,0,0,0,CON-B02-BAS02-1100,"AB-APP-B02-BAS2-1020, AB-APP-B02-BAS2-1020",0,0%,No,No
0,AB-SUB-B02-BAS2-1030,Submittal for Beams Conc. Dim.& RFT DWGs As-Built Drawing (B02) (Bas 02),Approved Baseline.HO.1.S.P02.B02.SUB.2ndB,Approved Baseline,18,18,12-Feb-26,4-Mar-26,12-Feb-26,4-Mar-26,0,316,0,0,0,0,CON-B02-BAS02-1100,"AB-APP-B02-BAS2-1030, AB-APP-B02-BAS2-1030",0,0%,No,No
0,,,,,18,18,21-Jun-26,12-Jul-26,21-Jun-26,12-Jul-26,0,215,0,0,0,0,,,0,,,
0,AB-SUB-B02-SOG-1000,Submittal for S.O.G Conc. Dim. DWGs As-Built Drawing (B02) (Sog),Approved Baseline.HO.1.S.P02.B02.SUB.2ndB.2,Approved Baseline,18,18,21-Jun-26,12-Jul-26,21-Jun-26,12-Jul-26,0,215,0,0,0,0,"CON-B02-SOG-1040, CON-B02-SOG-1050","AB-APP-B02-SOG-1000, AB-APP-B02-SOG-1000",0,0%,No,No
0,AB-SUB-B02-SOG-1010,Submittal for S.O.G RFT DWGs As-Built Drawing (B02) (Sog),Approved Baseline.HO.1.S.P02.B02.SUB.2ndB.2,Approved Baseline,18,18,21-Jun-26,12-Jul-26,21-Jun-26,12-Jul-26,0,215,0,0,0,0,"CON-B02-SOG-1050, CON-B02-SOG-1040","AB-APP-B02-SOG-1010, AB-APP-B02-SOG-1010",0,0%,No,No
0,,,,,32,32,5-Mar-26,16-Apr-26,5-Mar-26,16-Apr-26,0,284,0,0,0,0,,,0,,,
0,AB-SUB-B02-BAS1-1000,Submittal for Col. & Walls Conc. Dim.  & RFT DWGs As-Built Drawing (B02) (Bas 01),Approved Baseline.HO.1.S.P02.B02.SUB.1stB,Approved Baseline,18,18,5-Mar-26,30-Mar-26,5-Mar-26,30-Mar-26,0,298,0,0,0,0,CON-B02-BAS01-1030,"AB-APP-B02-BAS1-1000, AB-APP-B02-BAS1-1000",0,0%,No,No
0,AB-SUB-B02-BAS1-1010,Submittal for Stairs Conc. Dim.  & RFT DWGs As-Built Drawing (B02) (Bas 01),Approved Baseline.HO.1.S.P02.B02.SUB.1stB,Approved Baseline,18,18,24-Mar-26,14-Apr-26,24-Mar-26,14-Apr-26,0,286,0,0,0,0,CON-B02-BAS01-1080,"AB-APP-B02-BAS1-1010, AB-APP-B02-BAS1-1010",0,0%,No,No
0,AB-SUB-B02-BAS1-1020,Submittal for Slabs Conc. Dim.  & RFT DWGs As-Built Drawing (B02) (Bas 01),Approved Baseline.HO.1.S.P02.B02.SUB.1stB,Approved Baseline,18,18,26-Mar-26,16-Apr-26,26-Mar-26,16-Apr-26,0,284,0,0,0,0,CON-B02-BAS01-1090,"AB-APP-B02-BAS1-1020, AB-APP-B02-BAS1-1020",0,0%,No,No
0,AB-SUB-B02-BAS1-1030,Submittal for Beams Conc. Dim.  & RFT DWGs As-Built Drawing (B02) (Bas 01),Approved Baseline.HO.1.S.P02.B02.SUB.1stB,Approved Baseline,18,18,26-Mar-26,16-Apr-26,26-Mar-26,16-Apr-26,0,284,0,0,0,0,CON-B02-BAS01-1090,"AB-APP-B02-BAS1-1030, AB-APP-B02-BAS1-1030",0,0%,No,No
0,,,,,272,272,19-Apr-26,16-Mar-27,19-Apr-26,16-Mar-27,0,11,0,0,0,0,,,0,,,
0,,,,,38,38,19-Apr-26,6-Jun-26,19-Apr-26,6-Jun-26,0,245,0,0,0,0,,,0,,,
0,AB-SUB-B02-GR-1000,Submittal for Col. & Walls Conc. Dim.  & RFT DWGs As-Built Drawing (B02) (GF),Approved Baseline.HO.1.S.P02.B02.SUP.GF,Approved Baseline,18,18,19-Apr-26,9-May-26,19-Apr-26,9-May-26,0,265,0,0,0,0,CON-B02-GR-1030,"AB-APP-B02-GR-1000, AB-APP-B02-GR-1000",0,0%,No,No
0,AB-SUB-B02-GR-1010,Submittal for Stairs Conc. Dim.  & RFT DWGs As-Built Drawing (B02) (GF),Approved Baseline.HO.1.S.P02.B02.SUP.GF,Approved Baseline,18,18,4-May-26,24-May-26,4-May-26,24-May-26,0,252,0,0,0,0,CON-B02-GR-1080,"AB-APP-B02-GR-1010, AB-APP-B02-GR-1010",0,0%,No,No
0,AB-SUB-B02-GR-1020,Submittal for Slabs Conc. Dim.  & RFT DWGs As-Built Drawing (B02) (GF),Approved Baseline.HO.1.S.P02.B02.SUP.GF,Approved Baseline,18,18,12-May-26,6-Jun-26,12-May-26,6-Jun-26,0,245,0,0,0,0,CON-B02-GR-1100,"AB-APP-B02-GR-1020, AB-APP-B02-GR-1020",0,0%,No,No
0,AB-SUB-B02-GR-1030,Submittal for Beams Conc. Dim.  & RFT DWGs As-Built Drawing (B02) (GF),Approved Baseline.HO.1.S.P02.B02.SUP.GF,Approved Baseline,18,18,12-May-26,6-Jun-26,12-May-26,6-Jun-26,0,245,0,0,0,0,CON-B02-GR-1100,"AB-APP-B02-GR-1030, AB-APP-B02-GR-1030",0,0%,No,No
0,,,,,37,37,22-Jun-26,5-Aug-26,22-Jun-26,5-Aug-26,0,195,0,0,0,0,,,0,,,
0,AB-SUB-B02-1ST-1000,Submittal for Col. & Walls Conc. Dim.  & RFT DWGs As-Built Drawing (B02) (1st),Approved Baseline.HO.1.S.P02.B02.SUP.1stF,Approved Baseline,18,18,22-Jun-26,13-Jul-26,22-Jun-26,13-Jul-26,0,214,0,0,0,0,CON-B02-1ST-1030,"AB-APP-B02-1ST-1000, AB-APP-B02-1ST-1000",0,0%,No,No
0,AB-SUB-B02-1ST-1010,Submittal for Slabs Conc. Dim.  & RFT DWGs As-Built Drawing (B02) (1st),Approved Baseline.HO.1.S.P02.B02.SUP.1stF,Approved Baseline,18,18,15-Jul-26,5-Aug-26,15-Jul-26,5-Aug-26,0,195,0,0,0,0,CON-B02-1ST-1060,"AB-APP-B02-1ST-1010, AB-APP-B02-1ST-1010",0,0%,No,No
0,AB-SUB-B02-1ST-1020,Submittal for Beams Conc. Dim.  & RFT DWGs As-Built Drawing (B02) (1st),Approved Baseline.HO.1.S.P02.B02.SUP.1stF,Approved Baseline,18,18,15-Jul-26,5-Aug-26,15-Jul-26,5-Aug-26,0,195,0,0,0,0,CON-B02-1ST-1060,"AB-APP-B02-1ST-1020, AB-APP-B02-1ST-1020",0,0%,No,No
0,AB-SUB-B02-1ST-1030,Submittal for Stairs Conc. Dim.  & RFT DWGs As-Built Drawing (B02) (1st),Approved Baseline.HO.1.S.P02.B02.SUP.1stF,Approved Baseline,18,18,15-Jul-26,5-Aug-26,15-Jul-26,5-Aug-26,0,195,0,0,0,0,CON-B02-1ST-1060,"AB-APP-B02-1ST-1030, AB-APP-B02-1ST-1030",0,0%,No,No
0,,,,,40,40,19-Aug-26,5-Oct-26,19-Aug-26,5-Oct-26,0,144,0,0,0,0,,,0,,,
0,AB-SUB-B02-2ND-1000,Submittal for Col. & Walls Conc. Dim.  & RFT DWGs As-Built Drawing (B02) (2nd),Approved Baseline.HO.1.S.P02.B02.SUP.2ndF,Approved Baseline,18,18,19-Aug-26,9-Sep-26,19-Aug-26,9-Sep-26,0,166,0,0,0,0,CON-B02-2ND-1030,"AB-APP-B02-2ND-1000, AB-APP-B02-2ND-1000",0,0%,No,No
0,AB-SUB-B02-2ND-1010,Submittal for Slabs Conc. Dim.  & RFT DWGs As-Built Drawing (B02) (2nd),Approved Baseline.HO.1.S.P02.B02.SUP.2ndF,Approved Baseline,18,18,15-Sep-26,5-Oct-26,15-Sep-26,5-Oct-26,0,144,0,0,0,0,CON-B02-2ND-1060,"AB-APP-B02-2ND-1010, AB-APP-B02-2ND-1010",0,0%,No,No
0,AB-SUB-B02-2ND-1020,Submittal for Beams Conc. Dim.  & RFT DWGs As-Built Drawing (B02) (2nd),Approved Baseline.HO.1.S.P02.B02.SUP.2ndF,Approved Baseline,18,18,15-Sep-26,5-Oct-26,15-Sep-26,5-Oct-26,0,144,0,0,0,0,CON-B02-2ND-1060,"AB-APP-B02-2ND-1020, AB-APP-B02-2ND-1020",0,0%,No,No
0,AB-SUB-B02-2ND-1030,Submittal for Stairs Conc. Dim.  & RFT DWGs As-Built Drawing (B02) (2nd),Approved Baseline.HO.1.S.P02.B02.SUP.2ndF,Approved Baseline,18,18,15-Sep-26,5-Oct-26,15-Sep-26,5-Oct-26,0,144,0,0,0,0,CON-B02-2ND-1060,"AB-APP-B02-2ND-1030, AB-APP-B02-2ND-1030",0,0%,No,No
0,,,,,40,40,21-Oct-26,6-Dec-26,21-Oct-26,6-Dec-26,0,92,0,0,0,0,,,0,,,
0,AB-SUB-B02-3RD-1000,Submittal for Col. & Walls Conc. Dim.  & RFT DWGs As-Built Drawing (B02) (3rd),Approved Baseline.HO.1.S.P02.B02.SUP.3rdF,Approved Baseline,18,18,21-Oct-26,10-Nov-26,21-Oct-26,10-Nov-26,0,114,0,0,0,0,CON-B02-3RD-1030,"AB-APP-B02-3RD-1000, AB-APP-B02-3RD-1000",0,0%,No,No
0,AB-SUB-B02-3RD-1010,Submittal for Slabs Conc. Dim.  & RFT DWGs As-Built Drawing (B02) (3rd),Approved Baseline.HO.1.S.P02.B02.SUP.3rdF,Approved Baseline,18,18,16-Nov-26,6-Dec-26,16-Nov-26,6-Dec-26,0,92,0,0,0,0,CON-B02-3RD-1060,"AB-APP-B02-3RD-1010, AB-APP-B02-3RD-1010",0,0%,No,No
0,AB-SUB-B02-3RD-1020,Submittal for Beams Conc. Dim.  & RFT DWGs As-Built Drawing (B02) (3rd),Approved Baseline.HO.1.S.P02.B02.SUP.3rdF,Approved Baseline,18,18,16-Nov-26,6-Dec-26,16-Nov-26,6-Dec-26,0,92,0,0,0,0,CON-B02-3RD-1060,"AB-APP-B02-3RD-1020, AB-APP-B02-3RD-1020",0,0%,No,No
0,AB-SUB-B02-3RD-1030,Submittal for Stairs Conc. Dim.  & RFT DWGs As-Built Drawing (B02) (3rd),Approved Baseline.HO.1.S.P02.B02.SUP.3rdF,Approved Baseline,18,18,16-Nov-26,6-Dec-26,16-Nov-26,6-Dec-26,0,92,0,0,0,0,CON-B02-3RD-1060,"AB-APP-B02-3RD-1030, AB-APP-B02-3RD-1030",0,0%,No,No
0,,,,,39,39,21-Dec-26,6-Feb-27,21-Dec-26,6-Feb-27,0,41,0,0,0,0,,,0,,,
0,AB-SUB-B02-4TH-1000,Submittal for Col. & Walls Conc. Dim.  & RFT DWGs As-Built Drawing (B02) (4th),Approved Baseline.HO.1.S.P02.B02.SUP.4thF,Approved Baseline,18,18,21-Dec-26,11-Jan-27,21-Dec-26,11-Jan-27,0,62,0,0,0,0,CON-B02-4TH-1030,"AB-APP-B02-4TH-1000, AB-APP-B02-4TH-1000",0,0%,No,No
0,AB-SUB-B02-4TH-1010,Submittal for Slabs Conc. Dim.  & RFT DWGs As-Built Drawing (B02) (4th),Approved Baseline.HO.1.S.P02.B02.SUP.4thF,Approved Baseline,18,18,16-Jan-27,6-Feb-27,16-Jan-27,6-Feb-27,0,41,0,0,0,0,CON-B02-4TH-1060,"AB-APP-B02-4TH-1010, AB-APP-B02-4TH-1010",0,0%,No,No
0,AB-SUB-B02-4TH-1020,Submittal for Beams Conc. Dim.  & RFT DWGs As-Built Drawing (B02) (4th),Approved Baseline.HO.1.S.P02.B02.SUP.4thF,Approved Baseline,18,18,16-Jan-27,6-Feb-27,16-Jan-27,6-Feb-27,0,41,0,0,0,0,CON-B02-4TH-1060,"AB-APP-B02-4TH-1020, AB-APP-B02-4TH-1020",0,0%,No,No
0,AB-SUB-B02-4TH-1030,Submittal for Stairs Conc. Dim.  & RFT DWGs As-Built Drawing (B02) (4th),Approved Baseline.HO.1.S.P02.B02.SUP.4thF,Approved Baseline,18,18,16-Jan-27,6-Feb-27,16-Jan-27,6-Feb-27,0,41,0,0,0,0,CON-B02-4TH-1060,"AB-APP-B02-4TH-1030, AB-APP-B02-4TH-1030",0,0%,No,No
0,,,,,28,28,9-Feb-27,16-Mar-27,9-Feb-27,16-Mar-27,0,11,0,0,0,0,,,0,,,
0,AB-SUB-B02-RF-1000,Submittal for Col. & Walls Conc. Dim.  & RFT DWGs As-Built Drawing (B02) (RF),Approved Baseline.HO.1.S.P02.B02.SUP.RF,Approved Baseline,18,18,9-Feb-27,1-Mar-27,9-Feb-27,1-Mar-27,0,21,0,0,0,0,CON-B02-RF-1030,"AB-APP-B02-RF-1000, AB-APP-B02-RF-1000",0,0%,No,No
0,AB-SUB-B02-RF-1010,Submittal for Slabs Conc. Dim.  & RFT DWGs As-Built Drawing (B02) (RF),Approved Baseline.HO.1.S.P02.B02.SUP.RF,Approved Baseline,18,18,21-Feb-27,16-Mar-27,21-Feb-27,16-Mar-27,0,11,0,0,0,0,CON-B02-RF-1060,"AB-APP-B02-RF-1010, AB-APP-B02-RF-1010",0,0%,No,No
0,AB-SUB-B02-RF-1020,Submittal for Beams Conc. Dim.  & RFT DWGs As-Built Drawing (B02) (RF),Approved Baseline.HO.1.S.P02.B02.SUP.RF,Approved Baseline,18,18,21-Feb-27,16-Mar-27,21-Feb-27,16-Mar-27,0,11,0,0,0,0,CON-B02-RF-1060,"AB-APP-B02-RF-1020, AB-APP-B02-RF-1020",0,0%,No,No
0,,,,,407,407,15-Nov-25,27-Mar-27,15-Nov-25,27-Mar-27,0,6,0,0,0,0,,,0,,,
0,,,,,372,372,25-Dec-25,27-Mar-27,25-Dec-25,27-Mar-27,0,2,0,0,0,0,,,0,,,
0,,,,,114,114,25-Dec-25,14-May-26,25-Dec-25,14-May-26,0,260,0,0,0,0,,,0,,,
0,,,,,18,18,25-Dec-25,15-Jan-26,25-Dec-25,15-Jan-26,0,356,0,0,0,0,,,0,,,
0,AB-SUB-B03-REP-1000,Submittal for General Replacement Plan & Typical Sections for Replacement / Backfilling DWGs As-Built Drawing (B03),Approved Baseline.HO.1.S.P01.B03.SUB.1,Approved Baseline,18,18,25-Dec-25,15-Jan-26,25-Dec-25,15-Jan-26,0,356,0,0,0,0,"CON-EW-B03-1000, CON-EW-B03-1010","AB-APP-B03-REP-1000, AB-APP-B03-REP-1000",0,0%,No,No
0,,,,,42,42,28-Dec-25,16-Feb-26,28-Dec-25,16-Feb-26,0,330,0,0,0,0,,,0,,,
0,AB-SUB-B03-FOOT-1000,Submittal for PC Raft Conc. Dim. DWGs As-Built Drawing (B03) (footing),Approved Baseline.HO.1.S.P01.B03.SUB.F,Approved Baseline,18,18,28-Dec-25,18-Jan-26,28-Dec-25,18-Jan-26,0,354,0,0,0,0,"CON-B03-FOOT-1000, CON-B03-FOOT-1010","AB-APP-B03-FOOT-1000, AB-APP-B03-FOOT-1000",0,0%,No,No
0,AB-SUB-B03-FOOT-1010,Submittal for RC Raft & Footings Conc. Dim. DWGs As-Built Drawing (B03) (footing),Approved Baseline.HO.1.S.P01.B03.SUB.F,Approved Baseline,18,18,17-Jan-26,7-Feb-26,17-Jan-26,7-Feb-26,0,338,0,0,0,0,CON-B03-FOOT-1040,"AB-APP-B03-FOOT-1010, AB-APP-B03-FOOT-1010",0,0%,No,No
0,AB-SUB-B03-FOOT-1020,Submittal for RC Raft & Footings RFT DWGs As-Built Drawing (B03) (footing),Approved Baseline.HO.1.S.P01.B03.SUB.F,Approved Baseline,18,18,19-Jan-26,9-Feb-26,19-Jan-26,9-Feb-26,0,336,0,0,0,0,"CON-B03-FOOT-1050, CON-B03-FOOT-1080","AB-APP-B03-FOOT-1020, AB-APP-B03-FOOT-1020",0,0%,No,No
0,AB-SUB-B03-FOOT-1030,Submittal for  Waterproofing Layout Plan DWGs As-Built Drawing (B03),Approved Baseline.HO.1.S.P01.B03.SUB.F,Approved Baseline,18,18,27-Jan-26,16-Feb-26,27-Jan-26,16-Feb-26,0,330,0,0,0,0,CON-B03-FOOT-1110,"AB-APP-B03-FOOT-1030, AB-APP-B03-FOOT-1030",0,0%,No,No
0,,,,,74,74,12-Feb-26,14-May-26,12-Feb-26,14-May-26,0,260,0,0,0,0,,,0,,,
0,AB-SUB-B03-BAS2-1000,Submittal for Col. & Walls Conc. Dim.  & RFT DWGs As-Built Drawing (B03) (Bas 02),Approved Baseline.HO.1.S.P01.B03.SUB.2ndB,Approved Baseline,18,18,12-Feb-26,4-Mar-26,12-Feb-26,4-Mar-26,0,316,0,0,0,0,CON-B03-BAS02-1030,"AB-APP-B03-BAS2-1000, AB-APP-B03-BAS2-1000",0,0%,No,No
0,AB-SUB-B03-BAS2-1010,Submittal for Stairs Conc. Dim.  & RFT DWGs As-Built Drawing (B03) (Bas 02),Approved Baseline.HO.1.S.P01.B03.SUB.2ndB,Approved Baseline,18,18,26-Feb-26,23-Mar-26,26-Feb-26,23-Mar-26,0,304,0,0,0,0,CON-B03-BAS02-1080,"AB-APP-B03-BAS2-1010, AB-APP-B03-BAS2-1010",0,0%,No,No
0,AB-SUB-B03-BAS2-1020,Submittal for Slabs Conc. Dim.  & RFT DWGs As-Built Drawing (B03) (Bas 02),Approved Baseline.HO.1.S.P01.B03.SUB.2ndB,Approved Baseline,18,18,1-Mar-26,25-Mar-26,1-Mar-26,25-Mar-26,0,302,0,0,0,0,CON-B03-BAS02-1100,"AB-APP-B03-BAS2-1020, AB-APP-B03-BAS2-1020",0,0%,No,No
0,AB-SUB-B03-BAS2-1030,Submittal for Beams Conc. Dim.  & RFT DWGs As-Built Drawing (B03) (Bas 02),Approved Baseline.HO.1.S.P01.B03.SUB.2ndB,Approved Baseline,18,18,1-Mar-26,25-Mar-26,1-Mar-26,25-Mar-26,0,302,0,0,0,0,CON-B03-BAS02-1100,"AB-APP-B03-BAS2-1030, AB-APP-B03-BAS2-1030",0,0%,No,No
0,,,,,22,22,20-Apr-26,14-May-26,20-Apr-26,14-May-26,0,260,0,0,0,0,,,0,,,
0,AB-SUB-B03-SOG-1000,Submittal for S.O.G Conc. Dim. DWGs As-Built Drawing (B03) (Sog),Approved Baseline.HO.1.S.P01.B03.SUB.2ndB.1,Approved Baseline,18,18,20-Apr-26,10-May-26,20-Apr-26,10-May-26,0,264,0,0,0,0,CON-B03-SOG-1040,"AB-APP-B03-SOG-1000, AB-APP-B03-SOG-1000",0,0%,No,No
0,AB-SUB-B03-SOG-1010,Submittal for S.O.G RFT DWGs As-Built Drawing (B03) (Sog),Approved Baseline.HO.1.S.P01.B03.SUB.2ndB.1,Approved Baseline,18,18,25-Apr-26,14-May-26,25-Apr-26,14-May-26,0,260,0,0,0,0,CON-B03-SOG-1050,"AB-APP-B03-SOG-1010, AB-APP-B03-SOG-1010",0,0%,No,No
0,,,,,32,32,25-Mar-26,2-May-26,25-Mar-26,2-May-26,0,271,0,0,0,0,,,0,,,
0,AB-SUB-B03-BAS1-1000,Submittal for Col. & Walls Conc. Dim.  & RFT DWGs As-Built Drawing (B03) (Bas 01),Approved Baseline.HO.1.S.P01.B03.SUB.1stB,Approved Baseline,18,18,25-Mar-26,15-Apr-26,25-Mar-26,15-Apr-26,0,285,0,0,0,0,CON-B03-BAS01-1030,"AB-APP-B03-BAS1-1000, AB-APP-B03-BAS1-1000",0,0%,No,No
0,AB-SUB-B03-BAS1-1010,Submittal for Stairs Conc. Dim.  & RFT DWGs As-Built Drawing (B03) (Bas 01),Approved Baseline.HO.1.S.P01.B03.SUB.1stB,Approved Baseline,18,18,9-Apr-26,30-Apr-26,9-Apr-26,30-Apr-26,0,272,0,0,0,0,CON-B03-BAS01-1080,"AB-APP-B03-BAS1-1010, AB-APP-B03-BAS1-1010",0,0%,No,No
0,AB-SUB-B03-BAS1-1020,Submittal for Slabs Conc. Dim.  & RFT DWGs As-Built Drawing (B03) (Bas 01),Approved Baseline.HO.1.S.P01.B03.SUB.1stB,Approved Baseline,18,18,11-Apr-26,2-May-26,11-Apr-26,2-May-26,0,271,0,0,0,0,CON-B03-BAS01-1090,"AB-APP-B03-BAS1-1020, AB-APP-B03-BAS1-1020",0,0%,No,No
0,AB-SUB-B03-BAS1-1030,Submittal for Beams Conc. Dim.  & RFT DWGs As-Built Drawing (B03) (Bas 01),Approved Baseline.HO.1.S.P01.B03.SUB.1stB,Approved Baseline,18,18,11-Apr-26,2-May-26,11-Apr-26,2-May-26,0,271,0,0,0,0,CON-B03-BAS01-1090,"AB-APP-B03-BAS1-1030, AB-APP-B03-BAS1-1030",0,0%,No,No
0,,,,,273,273,28-Apr-26,27-Mar-27,28-Apr-26,27-Mar-27,0,2,0,0,0,0,,,0,,,
0,,,,,28,28,28-Apr-26,3-Jun-26,28-Apr-26,3-Jun-26,0,247,0,0,0,0,,,0,,,
0,AB-SUB-B03-GR-1000,Submittal for Col. & Walls Conc. Dim.  & RFT DWGs As-Built Drawing (B03) (GF),Approved Baseline.HO.1.S.P01.B03.SUP.GF,Approved Baseline,18,18,28-Apr-26,18-May-26,28-Apr-26,18-May-26,0,257,0,0,0,0,CON-B03-GR-1030,"AB-APP-B03-GR-1000, AB-APP-B03-GR-1000",0,0%,No,No
0,AB-SUB-B03-GR-1010,Submittal for Slabs Conc. Dim.  & RFT DWGs As-Built Drawing (B03) (GF),Approved Baseline.HO.1.S.P01.B03.SUP.GF,Approved Baseline,18,18,10-May-26,3-Jun-26,10-May-26,3-Jun-26,0,247,0,0,0,0,CON-B03-GR-1080,"AB-APP-B03-GR-1010, AB-APP-B03-GR-1010",0,0%,No,No
0,AB-SUB-B03-GR-1020,Submittal for Beams Conc. Dim.  & RFT DWGs As-Built Drawing (B03) (GF),Approved Baseline.HO.1.S.P01.B03.SUP.GF,Approved Baseline,18,18,10-May-26,3-Jun-26,10-May-26,3-Jun-26,0,247,0,0,0,0,CON-B03-GR-1080,"AB-APP-B03-GR-1020, AB-APP-B03-GR-1020",0,0%,No,No
0,AB-SUB-B03-GR-1030,Submittal for Stairs Conc. Dim.  & RFT DWGs As-Built Drawing (B03) (GF),Approved Baseline.HO.1.S.P01.B03.SUP.GF,Approved Baseline,18,18,10-May-26,3-Jun-26,10-May-26,3-Jun-26,0,247,0,0,0,0,CON-B03-GR-1090,"AB-APP-B03-GR-1030, AB-APP-B03-GR-1030",0,0%,No,No
0,,,,,40,40,27-Jun-26,13-Aug-26,27-Jun-26,13-Aug-26,0,188,0,0,0,0,,,0,,,
0,AB-SUB-B03-1ST-1000,Submittal for Col. & Walls Conc. Dim.  & RFT DWGs As-Built Drawing (B03) (1st),Approved Baseline.HO.1.S.P01.B03.SUP.1stF,Approved Baseline,18,18,27-Jun-26,18-Jul-26,27-Jun-26,18-Jul-26,0,210,0,0,0,0,CON-B03-1ST-1030,"AB-APP-B03-1ST-1000, AB-APP-B03-1ST-1000",0,0%,No,No
0,AB-SUB-B03-1ST-1010,Submittal for Slabs Conc. Dim.  & RFT DWGs As-Built Drawing (B03) (1st),Approved Baseline.HO.1.S.P01.B03.SUP.1stF,Approved Baseline,18,18,25-Jul-26,13-Aug-26,25-Jul-26,13-Aug-26,0,188,0,0,0,0,CON-B03-1ST-1060,"AB-APP-B03-1ST-1010, AB-APP-B03-1ST-1010",0,0%,No,No
0,AB-SUB-B03-1ST-1020,Submittal for Beams Conc. Dim.  & RFT DWGs As-Built Drawing (B03) (1st),Approved Baseline.HO.1.S.P01.B03.SUP.1stF,Approved Baseline,18,18,25-Jul-26,13-Aug-26,25-Jul-26,13-Aug-26,0,188,0,0,0,0,CON-B03-1ST-1060,"AB-APP-B03-1ST-1020, AB-APP-B03-1ST-1020",0,0%,No,No
0,AB-SUB-B03-1ST-1030,Submittal for Stairs Conc. Dim.  & RFT DWGs As-Built Drawing (B03) (1st),Approved Baseline.HO.1.S.P01.B03.SUP.1stF,Approved Baseline,18,18,25-Jul-26,13-Aug-26,25-Jul-26,13-Aug-26,0,188,0,0,0,0,CON-B03-1ST-1060,"AB-APP-B03-1ST-1030, AB-APP-B03-1ST-1030",0,0%,No,No
0,,,,,40,40,2-Sep-26,19-Oct-26,2-Sep-26,19-Oct-26,0,133,0,0,0,0,,,0,,,
0,AB-SUB-B03-2ND-1000,Submittal for Col. & Walls Conc. Dim.  & RFT DWGs As-Built Drawing (B03) (2nd),Approved Baseline.HO.1.S.P01.B03.SUP.2ndF,Approved Baseline,18,18,2-Sep-26,22-Sep-26,2-Sep-26,22-Sep-26,0,155,0,0,0,0,CON-B03-2ND-1030,"AB-APP-B03-2ND-1000, AB-APP-B03-2ND-1000",0,0%,No,No
0,AB-SUB-B03-2ND-1010,Submittal for Slabs Conc. Dim.  & RFT DWGs As-Built Drawing (B03) (2nd),Approved Baseline.HO.1.S.P01.B03.SUP.2ndF,Approved Baseline,18,18,28-Sep-26,19-Oct-26,28-Sep-26,19-Oct-26,0,133,0,0,0,0,CON-B03-2ND-1060,"AB-APP-B03-2ND-1010, AB-APP-B03-2ND-1010",0,0%,No,No
0,AB-SUB-B03-2ND-1020,Submittal for Beams Conc. Dim.  & RFT DWGs As-Built Drawing (B03) (2nd),Approved Baseline.HO.1.S.P01.B03.SUP.2ndF,Approved Baseline,18,18,28-Sep-26,19-Oct-26,28-Sep-26,19-Oct-26,0,133,0,0,0,0,CON-B03-2ND-1060,"AB-APP-B03-2ND-1020, AB-APP-B03-2ND-1020",0,0%,No,No
0,AB-SUB-B03-2ND-1030,Submittal for Stairs Conc. Dim.  & RFT DWGs As-Built Drawing (B03) (2nd),Approved Baseline.HO.1.S.P01.B03.SUP.2ndF,Approved Baseline,18,18,28-Sep-26,19-Oct-26,28-Sep-26,19-Oct-26,0,133,0,0,0,0,CON-B03-2ND-1060,"AB-APP-B03-2ND-1030, AB-APP-B03-2ND-1030",0,0%,No,No
0,,,,,40,40,4-Nov-26,20-Dec-26,4-Nov-26,20-Dec-26,0,80,0,0,0,0,,,0,,,
0,AB-SUB-B03-3RD-1000,Submittal for Col. & Walls Conc. Dim.  & RFT DWGs As-Built Drawing (B03) (3rd),Approved Baseline.HO.1.S.P01.B03.SUP.3rdF,Approved Baseline,18,18,4-Nov-26,24-Nov-26,4-Nov-26,24-Nov-26,0,102,0,0,0,0,CON-B03-3RD-1030,"AB-APP-B03-3RD-1000, AB-APP-B03-3RD-1000",0,0%,No,No
0,AB-SUB-B03-3RD-1010,Submittal for Slabs Conc. Dim.  & RFT DWGs As-Built Drawing (B03) (3rd),Approved Baseline.HO.1.S.P01.B03.SUP.3rdF,Approved Baseline,18,18,30-Nov-26,20-Dec-26,30-Nov-26,20-Dec-26,0,80,0,0,0,0,CON-B03-3RD-1060,"AB-APP-B03-3RD-1010, AB-APP-B03-3RD-1010",0,0%,No,No
0,AB-SUB-B03-3RD-1020,Submittal for Beams Conc. Dim.  & RFT DWGs As-Built Drawing (B03) (3rd),Approved Baseline.HO.1.S.P01.B03.SUP.3rdF,Approved Baseline,18,18,30-Nov-26,20-Dec-26,30-Nov-26,20-Dec-26,0,80,0,0,0,0,CON-B03-3RD-1060,"AB-APP-B03-3RD-1020, AB-APP-B03-3RD-1020",0,0%,No,No
0,AB-SUB-B03-3RD-1030,Submittal for Stairs Conc. Dim.  & RFT DWGs As-Built Drawing (B03) (3rd),Approved Baseline.HO.1.S.P01.B03.SUP.3rdF,Approved Baseline,18,18,30-Nov-26,20-Dec-26,30-Nov-26,20-Dec-26,0,80,0,0,0,0,CON-B03-3RD-1060,"AB-APP-B03-3RD-1030, AB-APP-B03-3RD-1030",0,0%,No,No
0,,,,,37,37,6-Jan-27,20-Feb-27,6-Jan-27,20-Feb-27,0,29,0,0,0,0,,,0,,,
0,AB-SUB-B03-4TH-1000,Submittal for Col. & Walls Conc. Dim.  & RFT DWGs As-Built Drawing (B03) (4th),Approved Baseline.HO.1.S.P01.B03.SUP.4thF,Approved Baseline,18,18,6-Jan-27,28-Jan-27,6-Jan-27,28-Jan-27,0,48,0,0,0,0,CON-B03-4TH-1030,"AB-APP-B03-4TH-1000, AB-APP-B03-4TH-1000",0,0%,No,No
0,AB-SUB-B03-4TH-1010,Submittal for Slabs Conc. Dim.  & RFT DWGs As-Built Drawing (B03) (4th),Approved Baseline.HO.1.S.P01.B03.SUP.4thF,Approved Baseline,18,18,31-Jan-27,20-Feb-27,31-Jan-27,20-Feb-27,0,29,0,0,0,0,CON-B03-4TH-1060,"AB-APP-B03-4TH-1010, AB-APP-B03-4TH-1010",0,0%,No,No
0,AB-SUB-B03-4TH-1020,Submittal for Beams Conc. Dim.  & RFT DWGs As-Built Drawing (B03) (4th),Approved Baseline.HO.1.S.P01.B03.SUP.4thF,Approved Baseline,18,18,31-Jan-27,20-Feb-27,31-Jan-27,20-Feb-27,0,29,0,0,0,0,CON-B03-4TH-1060,"AB-APP-B03-4TH-1020, AB-APP-B03-4TH-1020",0,0%,No,No
0,AB-SUB-B03-4TH-1030,Submittal for Stairs Conc. Dim.  & RFT DWGs As-Built Drawing (B03) (4th),Approved Baseline.HO.1.S.P01.B03.SUP.4thF,Approved Baseline,18,18,31-Jan-27,20-Feb-27,31-Jan-27,20-Feb-27,0,29,0,0,0,0,CON-B03-4TH-1060,"AB-APP-B03-4TH-1030, AB-APP-B03-4TH-1030",0,0%,No,No
0,,,,,26,26,22-Feb-27,27-Mar-27,22-Feb-27,27-Mar-27,0,2,0,0,0,0,,,0,,,
0,AB-SUB-B03-RF-1000,Submittal for Col. & Walls Conc. Dim.  & RFT DWGs As-Built Drawing (B03) (RF),Approved Baseline.HO.1.S.P01.B03.SUP.RF,Approved Baseline,18,18,22-Feb-27,17-Mar-27,22-Feb-27,17-Mar-27,0,10,0,0,0,0,CON-B03-RF-1030,"AB-APP-B03-RF-1000, AB-APP-B03-RF-1000",0,0%,No,No
0,AB-SUB-B03-RF-1010,Submittal for Slabs Conc. Dim.  & RFT DWGs As-Built Drawing (B03) (RF),Approved Baseline.HO.1.S.P01.B03.SUP.RF,Approved Baseline,18,18,3-Mar-27,27-Mar-27,3-Mar-27,27-Mar-27,0,0,0,0,0,0,CON-B03-RF-1060,"AB-APP-B03-RF-1010, AB-APP-B03-RF-1010",0,0%,Yes,Yes
0,AB-SUB-B03-RF-1020,Submittal for Beams Conc. Dim.  & RFT DWGs As-Built Drawing (B03) (RF),Approved Baseline.HO.1.S.P01.B03.SUP.RF,Approved Baseline,18,18,3-Mar-27,27-Mar-27,3-Mar-27,27-Mar-27,0,0,0,0,0,0,CON-B03-RF-1060,"AB-APP-B03-RF-1020, AB-APP-B03-RF-1020",0,0%,Yes,Yes
0,,,,,402,402,15-Nov-25,21-Mar-27,15-Nov-25,21-Mar-27,0,11,0,0,0,0,,,0,,,
0,,,,,160,160,15-Nov-25,1-Jun-26,15-Nov-25,1-Jun-26,0,249,0,0,0,0,,,0,,,
0,,,,,18,18,6-Jan-26,28-Jan-26,6-Jan-26,28-Jan-26,0,346,0,0,0,0,,,0,,,
0,AB-SUB-B04-REP-1000,Submittal for General Replacement Plan & Typical Sections for Replacement / Backfilling DWGs As-Built Drawing (B04),Approved Baseline.HO.1.S.P01.B04.SUB.1,Approved Baseline,18,18,6-Jan-26,28-Jan-26,6-Jan-26,28-Jan-26,0,346,0,0,0,0,"CON-EW-B04-1000, CON-EW-B04-1010","AB-APP-B04-REP-1000, AB-APP-B04-REP-1000",0,0%,No,No
0,,,,,39,39,10-Jan-26,24-Feb-26,10-Jan-26,24-Feb-26,0,323,0,0,0,0,,,0,,,
0,AB-SUB-B04-FOOT-1000,Submittal for PC Raft Conc. Dim. DWGs As-Built Drawing (B04) (footing),Approved Baseline.HO.1.S.P01.B04.SUB.F,Approved Baseline,18,18,10-Jan-26,31-Jan-26,10-Jan-26,31-Jan-26,0,344,0,0,0,0,"CON-B04-FOOT-1000, CON-B04-FOOT-1010","AB-APP-B04-FOOT-1000, AB-APP-B04-FOOT-1000",0,0%,No,No
0,AB-SUB-B04-FOOT-1010,Submittal for RC Raft & Footings Conc. Dim. DWGs As-Built Drawing (B04) (footing),Approved Baseline.HO.1.S.P01.B04.SUB.F,Approved Baseline,18,18,24-Jan-26,14-Feb-26,24-Jan-26,14-Feb-26,0,332,0,0,0,0,CON-B04-FOOT-1040,"AB-APP-B04-FOOT-1010, AB-APP-B04-FOOT-1010",0,0%,No,No
0,AB-SUB-B04-FOOT-1020,Submittal for RC Raft & Footings RFT DWGs As-Built Drawing (B04) (footing),Approved Baseline.HO.1.S.P01.B04.SUB.F,Approved Baseline,18,18,28-Jan-26,17-Feb-26,28-Jan-26,17-Feb-26,0,329,0,0,0,0,"CON-B04-FOOT-1050, CON-B04-FOOT-1080","AB-APP-B04-FOOT-1020, AB-APP-B04-FOOT-1020",0,0%,No,No
0,AB-SUB-B04-FOOT-1030,Submittal for  Waterproofing Layout Plan DWGs As-Built Drawing (B04),Approved Baseline.HO.1.S.P01.B04.SUB.F,Approved Baseline,18,18,4-Feb-26,24-Feb-26,4-Feb-26,24-Feb-26,0,323,0,0,0,0,"CON-B04-FOOT-1030, CON-B04-FOOT-1110","AB-APP-B04-FOOT-1030, AB-APP-B04-FOOT-1030",0,0%,No,No
0,,,,,160,160,15-Nov-25,1-Jun-26,15-Nov-25,1-Jun-26,0,249,0,0,0,0,,,0,,,
0,AB-SUB-B04-BAS2-1000,Submittal for Col. & Walls Conc. Dim.  & RFT DWGs As-Built Drawing (B04) (Bas 02),Approved Baseline.HO.1.S.P01.B04.SUB.2ndB,Approved Baseline,18,18,12-Feb-26,4-Mar-26,12-Feb-26,4-Mar-26,0,316,0,0,0,0,CON-B04-BAS02-1010,"AB-APP-B04-BAS2-1000, AB-APP-B04-BAS2-1000",0,0%,No,No
0,AB-SUB-B04-BAS2-1010,Submittal for Stairs Conc. Dim.  & RFT DWGs As-Built Drawing (B04) (Bas 02),Approved Baseline.HO.1.S.P01.B04.SUB.2ndB,Approved Baseline,18,18,5-Mar-26,30-Mar-26,5-Mar-26,30-Mar-26,0,298,0,0,0,0,CON-B04-BAS02-1100,"AB-APP-B04-BAS2-1010, AB-APP-B04-BAS2-1010",0,0%,No,No
0,AB-SUB-B04-BAS2-1020,Submittal for Ramps Conc. Dim.  & RFT DWGs As-Built Drawing (B04) (Bas 02),Approved Baseline.HO.1.S.P01.B04.SUB.2ndB,Approved Baseline,18,18,7-Mar-26,31-Mar-26,7-Mar-26,31-Mar-26,0,297,0,0,0,0,CON-B04-BAS02-1110,"AB-APP-B04-BAS2-1020, AB-APP-B04-BAS2-1020",0,0%,No,No
0,AB-SUB-B04-BAS2-1030,Submittal for Slabs Conc. Dim.  & RFT DWGs As-Built Drawing (B04) (Bas 02),Approved Baseline.HO.1.S.P01.B04.SUB.2ndB,Approved Baseline,18,18,10-Mar-26,4-Apr-26,10-Mar-26,4-Apr-26,0,294,0,0,0,0,CON-B04-BAS02-1130,"AB-APP-B04-BAS2-1030, AB-APP-B04-BAS2-1030",0,0%,No,No
0,AB-SUB-B04-BAS2-1040,Submittal for Beams Conc. Dim.  & RFT DWGs As-Built Drawing (B04) (Bas 02),Approved Baseline.HO.1.S.P01.B04.SUB.2ndB,Approved Baseline,18,18,10-Mar-26,4-Apr-26,10-Mar-26,4-Apr-26,0,294,0,0,0,0,CON-B04-BAS02-1130,"AB-APP-B04-BAS2-1040, AB-APP-B04-BAS2-1040",0,0%,No,No
0,,,,,61,61,15-Nov-25,26-Jan-26,15-Nov-25,26-Jan-26,0,348,0,0,0,0,,,0,,,
0,AB-SUB-B04-WT-1000,Submittal for PC Raft Conc. Dim. DWGs As-Built Drawing (B04) (Water Tank),Approved Baseline.HO.1.S.P01.B04.SUB.2ndB.1,Approved Baseline,18,18,15-Nov-25,4-Dec-25,15-Nov-25,4-Dec-25,0,391,0,0,0,0,"CON-B04-WT-1020, CON-B04-WT-1030","AB-APP-B04-WT-1000, AB-APP-B04-WT-1000",0,0%,No,No
0,AB-SUB-B04-WT-1010,Submittal for RC Raft Conc. Dim. DWGs As-Built Drawing (B04) (Water Tank),Approved Baseline.HO.1.S.P01.B04.SUB.2ndB.1,Approved Baseline,18,18,3-Dec-25,23-Dec-25,3-Dec-25,23-Dec-25,0,375,0,0,0,0,CON-B04-WT-1060,"AB-APP-B04-WT-1010, AB-APP-B04-WT-1010",0,0%,No,No
0,AB-SUB-B04-WT-1020,Submittal for RC Raft RFT DWGs As-Built Drawing (B04) (Water Tank),Approved Baseline.HO.1.S.P01.B04.SUB.2ndB.1,Approved Baseline,18,18,9-Dec-25,29-Dec-25,9-Dec-25,29-Dec-25,0,370,0,0,0,0,CON-B04-WT-1070,"AB-APP-B04-WT-1020, AB-APP-B04-WT-1020",0,0%,No,No
0,AB-SUB-B04-WT-1030,Submittal for Col. & Walls DWGs As-Built Drawing (B04) (Water Tank),Approved Baseline.HO.1.S.P01.B04.SUB.2ndB.1,Approved Baseline,18,18,24-Dec-25,14-Jan-26,24-Dec-25,14-Jan-26,0,357,0,0,0,0,"CON-B04-WT-1100, CON-B04-WT-1110, CON-B04-WT-1130","AB-APP-B04-WT-1030, AB-APP-B04-WT-1030",0,0%,No,No
0,AB-SUB-B04-WT-1040,Submittal for Slabs DWGs As-Built Drawing (B04) (Water Tank),Approved Baseline.HO.1.S.P01.B04.SUB.2ndB.1,Approved Baseline,18,18,4-Jan-26,26-Jan-26,4-Jan-26,26-Jan-26,0,348,0,0,0,0,"CON-B04-WT-1150, CON-B04-WT-1160, CON-B04-WT-1170","AB-APP-B04-WT-1040, AB-APP-B04-WT-1040",0,0%,No,No
0,,,,,18,18,7-May-26,1-Jun-26,7-May-26,1-Jun-26,0,249,0,0,0,0,,,0,,,
0,AB-SUB-B04-SOG-1000,Submittal for S.O.G Conc. Dim. DWGs As-Built Drawing (B04) (Sog),Approved Baseline.HO.1.S.P01.B04.SUB.2ndB.2,Approved Baseline,18,18,7-May-26,1-Jun-26,7-May-26,1-Jun-26,0,249,0,0,0,0,CON-B04-SOG-1040,"AB-APP-B04-SOG-1000, AB-APP-B04-SOG-1000",0,0%,No,No
0,AB-SUB-B04-SOG-1010,Submittal for S.O.G RFT DWGs As-Built Drawing (B04) (Sog),Approved Baseline.HO.1.S.P01.B04.SUB.2ndB.2,Approved Baseline,18,18,7-May-26,1-Jun-26,7-May-26,1-Jun-26,0,249,0,0,0,0,"CON-B04-SOG-1050, CON-B04-SOG-1040","AB-APP-B04-SOG-1010, AB-APP-B04-SOG-1010",0,0%,No,No
0,,,,,32,32,29-Mar-26,5-May-26,29-Mar-26,5-May-26,0,268,0,0,0,0,,,0,,,
0,AB-SUB-B04-BAS1-1000,Submittal for Col. & Walls Conc. Dim.  & RFT DWGs As-Built Drawing (B04) (Bas 01),Approved Baseline.HO.1.S.P01.B04.SUB.1stB,Approved Baseline,18,18,29-Mar-26,19-Apr-26,29-Mar-26,19-Apr-26,0,282,0,0,0,0,CON-B04-BAS01-1030,"AB-APP-B04-BAS1-1000, AB-APP-B04-BAS1-1000",0,0%,No,No
0,AB-SUB-B04-BAS1-1030,Submittal for Slabs Conc. Dim.  & RFT DWGs As-Built Drawing (B04) (Bas 01),Approved Baseline.HO.1.S.P01.B04.SUB.1stB,Approved Baseline,18,18,15-Apr-26,5-May-26,15-Apr-26,5-May-26,0,268,0,0,0,0,CON-B04-BAS01-1120,"AB-APP-B04-BAS1-1030, AB-APP-B04-BAS1-1030",0,0%,No,No
0,AB-SUB-B04-BAS1-1040,Submittal for Beams Conc. Dim.  & RFT DWGs As-Built Drawing (B04) (Bas 01),Approved Baseline.HO.1.S.P01.B04.SUB.1stB,Approved Baseline,18,18,15-Apr-26,5-May-26,15-Apr-26,5-May-26,0,268,0,0,0,0,CON-B04-BAS01-1120,"AB-APP-B04-BAS1-1040, AB-APP-B04-BAS1-1040",0,0%,No,No
0,AB-SUB-B04-BAS1-1010,Submittal for Stairs Conc. Dim.  & RFT DWGs As-Built Drawing (B04) (Bas 01),Approved Baseline.HO.1.S.P01.B04.SUB.1stB,Approved Baseline,18,18,15-Apr-26,5-May-26,15-Apr-26,5-May-26,0,268,0,0,0,0,CON-B04-BAS01-1110,"AB-APP-B04-BAS1-1010, AB-APP-B04-BAS1-1010",0,0%,No,No
0,AB-SUB-B04-BAS1-1020,Submittal for Ramps Conc. Dim.  & RFT DWGs As-Built Drawing (B04) (Bas 01),Approved Baseline.HO.1.S.P01.B04.SUB.1stB,Approved Baseline,18,18,15-Apr-26,5-May-26,15-Apr-26,5-May-26,0,268,0,0,0,0,CON-B04-BAS01-1110,"AB-APP-B04-BAS1-1020, AB-APP-B04-BAS1-1020",0,0%,No,No
0,,,,,266,266,30-Apr-26,21-Mar-27,30-Apr-26,21-Mar-27,0,11,0,0,0,0,,,0,,,
0,,,,,28,28,30-Apr-26,6-Jun-26,30-Apr-26,6-Jun-26,0,245,0,0,0,0,,,0,,,
0,AB-SUB-B04-GR-1000,Submittal for Col. & Walls Conc. Dim.  & RFT DWGs As-Built Drawing (B04) (GF),Approved Baseline.HO.1.S.P01.B04.SUP.GF,Approved Baseline,18,18,30-Apr-26,20-May-26,30-Apr-26,20-May-26,0,255,0,0,0,0,CON-B04-GR-1030,"AB-APP-B04-GR-1000, AB-APP-B04-GR-1000",0,0%,No,No
0,AB-SUB-B04-GR-1010,Submittal for Slabs Conc. Dim.  & RFT DWGs As-Built Drawing (B04) (GF),Approved Baseline.HO.1.S.P01.B04.SUP.GF,Approved Baseline,18,18,12-May-26,6-Jun-26,12-May-26,6-Jun-26,0,245,0,0,0,0,CON-B04-GR-1080,"AB-APP-B04-GR-1010, AB-APP-B04-GR-1010",0,0%,No,No
0,AB-SUB-B04-GR-1020,Submittal for Beams Conc. Dim.  & RFT DWGs As-Built Drawing (B04) (GF),Approved Baseline.HO.1.S.P01.B04.SUP.GF,Approved Baseline,18,18,12-May-26,6-Jun-26,12-May-26,6-Jun-26,0,245,0,0,0,0,CON-B04-GR-1080,"AB-APP-B04-GR-1020, AB-APP-B04-GR-1020",0,0%,No,No
0,AB-SUB-B04-GR-1030,Submittal for Stairs Conc. Dim.  & RFT DWGs As-Built Drawing (B04) (GF),Approved Baseline.HO.1.S.P01.B04.SUP.GF,Approved Baseline,18,18,12-May-26,6-Jun-26,12-May-26,6-Jun-26,0,245,0,0,0,0,CON-B04-GR-1090,"AB-APP-B04-GR-1030, AB-APP-B04-GR-1030",0,0%,No,No
0,,,,,35,35,4-Jun-26,15-Jul-26,4-Jun-26,15-Jul-26,0,212,0,0,0,0,,,0,,,
0,AB-SUB-B04-1ST-1000,Submittal for Col. & Walls Conc. Dim.  & RFT DWGs As-Built Drawing (B04) (1st),Approved Baseline.HO.1.S.P01.B04.SUP.1stF,Approved Baseline,18,18,4-Jun-26,24-Jun-26,4-Jun-26,24-Jun-26,0,229,0,0,0,0,CON-B04-1ST-1030,"AB-APP-B04-1ST-1000, AB-APP-B04-1ST-1000",0,0%,No,No
0,AB-SUB-B04-1ST-1010,Submittal for Slabs Conc. Dim.  & RFT DWGs As-Built Drawing (B04) (1st),Approved Baseline.HO.1.S.P01.B04.SUP.1stF,Approved Baseline,18,18,24-Jun-26,15-Jul-26,24-Jun-26,15-Jul-26,0,212,0,0,0,0,CON-B04-1ST-1060,"AB-APP-B04-1ST-1010, AB-APP-B04-1ST-1010",0,0%,No,No
0,AB-SUB-B04-1ST-1020,Submittal for Beams Conc. Dim.  & RFT DWGs As-Built Drawing (B04) (1st),Approved Baseline.HO.1.S.P01.B04.SUP.1stF,Approved Baseline,18,18,24-Jun-26,15-Jul-26,24-Jun-26,15-Jul-26,0,212,0,0,0,0,CON-B04-1ST-1060,"AB-APP-B04-1ST-1020, AB-APP-B04-1ST-1020",0,0%,No,No
0,AB-SUB-B04-1ST-1030,Submittal for Stairs Conc. Dim.  & RFT DWGs As-Built Drawing (B04) (1st),Approved Baseline.HO.1.S.P01.B04.SUP.1stF,Approved Baseline,18,18,24-Jun-26,15-Jul-26,24-Jun-26,15-Jul-26,0,212,0,0,0,0,CON-B04-1ST-1060,"AB-APP-B04-1ST-1030, AB-APP-B04-1ST-1030",0,0%,No,No
0,,,,,35,35,15-Jul-26,25-Aug-26,15-Jul-26,25-Aug-26,0,178,0,0,0,0,,,0,,,
0,AB-SUB-B04-2ND-1000,Submittal for Col. & Walls Conc. Dim.  & RFT DWGs As-Built Drawing (B04) (2nd),Approved Baseline.HO.1.S.P01.B04.SUP.2ndF,Approved Baseline,18,18,15-Jul-26,5-Aug-26,15-Jul-26,5-Aug-26,0,195,0,0,0,0,CON-B04-2ND-1030,"AB-APP-B04-2ND-1000, AB-APP-B04-2ND-1000",0,0%,No,No
0,AB-SUB-B04-2ND-1010,Submittal for Slabs Conc. Dim.  & RFT DWGs As-Built Drawing (B04) (2nd),Approved Baseline.HO.1.S.P01.B04.SUP.2ndF,Approved Baseline,18,18,5-Aug-26,25-Aug-26,5-Aug-26,25-Aug-26,0,178,0,0,0,0,CON-B04-2ND-1060,"AB-APP-B04-2ND-1010, AB-APP-B04-2ND-1010",0,0%,No,No
0,AB-SUB-B04-2ND-1020,Submittal for Beams Conc. Dim.  & RFT DWGs As-Built Drawing (B04) (2nd),Approved Baseline.HO.1.S.P01.B04.SUP.2ndF,Approved Baseline,18,18,5-Aug-26,25-Aug-26,5-Aug-26,25-Aug-26,0,178,0,0,0,0,CON-B04-2ND-1060,"AB-APP-B04-2ND-1020, AB-APP-B04-2ND-1020",0,0%,No,No
0,AB-SUB-B04-2ND-1030,Submittal for Stairs Conc. Dim.  & RFT DWGs As-Built Drawing (B04) (2nd),Approved Baseline.HO.1.S.P01.B04.SUP.2ndF,Approved Baseline,18,18,5-Aug-26,25-Aug-26,5-Aug-26,25-Aug-26,0,178,0,0,0,0,CON-B04-2ND-1060,"AB-APP-B04-2ND-1030, AB-APP-B04-2ND-1030",0,0%,No,No
0,,,,,35,35,25-Aug-26,5-Oct-26,25-Aug-26,5-Oct-26,0,144,0,0,0,0,,,0,,,
0,AB-SUB-B04-3RD-1000,Submittal for Col. & Walls Conc. Dim.  & RFT DWGs As-Built Drawing (B04) (3rd),Approved Baseline.HO.1.S.P01.B04.SUP.3rdF,Approved Baseline,18,18,25-Aug-26,15-Sep-26,25-Aug-26,15-Sep-26,0,161,0,0,0,0,CON-B04-3RD-1030,"AB-APP-B04-3TH-1000, AB-APP-B04-3TH-1000",0,0%,No,No
0,AB-SUB-B04-3RD-1010,Submittal for Slabs Conc. Dim.  & RFT DWGs As-Built Drawing (B04) (3rd),Approved Baseline.HO.1.S.P01.B04.SUP.3rdF,Approved Baseline,18,18,15-Sep-26,5-Oct-26,15-Sep-26,5-Oct-26,0,144,0,0,0,0,CON-B04-3RD-1060,"AB-APP-B04-3TH-1010, AB-APP-B04-3TH-1010",0,0%,No,No
0,AB-SUB-B04-3RD-1020,Submittal for Beams Conc. Dim.  & RFT DWGs As-Built Drawing (B04) (3rd),Approved Baseline.HO.1.S.P01.B04.SUP.3rdF,Approved Baseline,18,18,15-Sep-26,5-Oct-26,15-Sep-26,5-Oct-26,0,144,0,0,0,0,CON-B04-3RD-1060,"AB-APP-B04-3TH-1020, AB-APP-B04-3TH-1020",0,0%,No,No
0,AB-SUB-B04-3RD-1030,Submittal for Stairs Conc. Dim.  & RFT DWGs As-Built Drawing (B04) (3rd),Approved Baseline.HO.1.S.P01.B04.SUP.3rdF,Approved Baseline,18,18,15-Sep-26,5-Oct-26,15-Sep-26,5-Oct-26,0,144,0,0,0,0,CON-B04-3RD-1060,"AB-APP-B04-3TH-1030, AB-APP-B04-3TH-1030",0,0%,No,No
0,,,,,34,34,3-Oct-26,11-Nov-26,3-Oct-26,11-Nov-26,0,113,0,0,0,0,,,0,,,
0,AB-SUB-B04-4TH-1000,Submittal for Col. & Walls Conc. Dim.  & RFT DWGs As-Built Drawing (B04) (4th),Approved Baseline.HO.1.S.P01.B04.SUP.4thF,Approved Baseline,18,18,3-Oct-26,24-Oct-26,3-Oct-26,24-Oct-26,0,129,0,0,0,0,CON-B04-4TH-1030,"AB-APP-B04-4TH-1000, AB-APP-B04-4TH-1000",0,0%,No,No
0,AB-SUB-B04-4TH-1010,Submittal for Slabs Conc. Dim.  & RFT DWGs As-Built Drawing (B04) (4th),Approved Baseline.HO.1.S.P01.B04.SUP.4thF,Approved Baseline,18,18,22-Oct-26,11-Nov-26,22-Oct-26,11-Nov-26,0,113,0,0,0,0,CON-B04-4TH-1060,"AB-APP-B04-4TH-1010, AB-APP-B04-4TH-1010",0,0%,No,No
0,AB-SUB-B04-4TH-1020,Submittal for Beams Conc. Dim.  & RFT DWGs As-Built Drawing (B04) (4th),Approved Baseline.HO.1.S.P01.B04.SUP.4thF,Approved Baseline,18,18,22-Oct-26,11-Nov-26,22-Oct-26,11-Nov-26,0,113,0,0,0,0,CON-B04-4TH-1060,"AB-APP-B04-4TH-1020, AB-APP-B04-4TH-1020",0,0%,No,No
0,AB-SUB-B04-4TH-1030,Submittal for Stairs Conc. Dim.  & RFT DWGs As-Built Drawing (B04) (4th),Approved Baseline.HO.1.S.P01.B04.SUP.4thF,Approved Baseline,18,18,22-Oct-26,11-Nov-26,22-Oct-26,11-Nov-26,0,113,0,0,0,0,CON-B04-4TH-1060,"AB-APP-B04-4TH-1030, AB-APP-B04-4TH-1030",0,0%,No,No
0,,,,,32,32,10-Nov-26,16-Dec-26,10-Nov-26,16-Dec-26,0,83,0,0,0,0,,,0,,,
0,AB-SUB-B04-5TH-1000,Submittal for Col. & Walls Conc. Dim.  & RFT DWGs As-Built Drawing (B04) (5th),Approved Baseline.HO.1.S.P01.B04.SUP.5thF,Approved Baseline,18,18,10-Nov-26,30-Nov-26,10-Nov-26,30-Nov-26,0,97,0,0,0,0,CON-B04-5TH-1030,"AB-APP-B04-5TH-1000, AB-APP-B04-5TH-1000",0,0%,No,No
0,AB-SUB-B04-5TH-1010,Submittal for Slabs Conc. Dim.  & RFT DWGs As-Built Drawing (B04) (5th),Approved Baseline.HO.1.S.P01.B04.SUP.5thF,Approved Baseline,18,18,26-Nov-26,16-Dec-26,26-Nov-26,16-Dec-26,0,83,0,0,0,0,CON-B04-5TH-1060,"AB-APP-B04-5TH-1010, AB-APP-B04-5TH-1010",0,0%,No,No
0,AB-SUB-B04-5TH-1020,Submittal for Beams Conc. Dim.  & RFT DWGs As-Built Drawing (B04) (5th),Approved Baseline.HO.1.S.P01.B04.SUP.5thF,Approved Baseline,18,18,26-Nov-26,16-Dec-26,26-Nov-26,16-Dec-26,0,83,0,0,0,0,CON-B04-5TH-1060,"AB-APP-B04-5TH-1020, AB-APP-B04-5TH-1020",0,0%,No,No
0,AB-SUB-B04-5TH-1030,Submittal for Stairs Conc. Dim.  & RFT DWGs As-Built Drawing (B04) (5th),Approved Baseline.HO.1.S.P01.B04.SUP.5thF,Approved Baseline,18,18,26-Nov-26,16-Dec-26,26-Nov-26,16-Dec-26,0,83,0,0,0,0,CON-B04-5TH-1060,"AB-APP-B04-5TH-1030, AB-APP-B04-5TH-1030",0,0%,No,No
0,,,,,30,30,12-Dec-26,16-Jan-27,12-Dec-26,16-Jan-27,0,62,0,0,0,0,,,0,,,
0,AB-SUB-B04-6TH-1000,Submittal for Col. & Walls Conc. Dim.  & RFT DWGs As-Built Drawing (B04) (6th),Approved Baseline.HO.1.S.P01.B04.SUP.6thF,Approved Baseline,18,18,12-Dec-26,31-Dec-26,12-Dec-26,31-Dec-26,0,70,0,0,0,0,CON-B04-6TH-1030,"AB-APP-B04-6TH-1000, AB-APP-B04-6TH-1000",0,0%,No,No
0,AB-SUB-B04-6TH-1010,Submittal for Slabs Conc. Dim.  & RFT DWGs As-Built Drawing (B04) (6th),Approved Baseline.HO.1.S.P01.B04.SUP.6thF,Approved Baseline,18,18,26-Dec-26,16-Jan-27,26-Dec-26,16-Jan-27,0,58,0,0,0,0,CON-B04-6TH-1060,"AB-APP-B04-6TH-1010, AB-APP-B04-6TH-1010",0,0%,No,No
0,AB-SUB-B04-6TH-1020,Submittal for Beams Conc. Dim.  & RFT DWGs As-Built Drawing (B04) (6th),Approved Baseline.HO.1.S.P01.B04.SUP.6thF,Approved Baseline,18,18,26-Dec-26,16-Jan-27,26-Dec-26,16-Jan-27,0,58,0,0,0,0,CON-B04-6TH-1060,"AB-APP-B04-6TH-1020, AB-APP-B04-6TH-1020",0,0%,No,No
0,AB-SUB-B04-6TH-1030,Submittal for Stairs Conc. Dim.  & RFT DWGs As-Built Drawing (B04) (6th),Approved Baseline.HO.1.S.P01.B04.SUP.6thF,Approved Baseline,18,18,26-Dec-26,16-Jan-27,26-Dec-26,16-Jan-27,0,62,0,0,0,0,CON-B04-6TH-1060,"AB-APP-B04-6TH-1030, AB-APP-B04-6TH-1030",0,0%,No,No
0,,,,,29,29,11-Jan-27,14-Feb-27,11-Jan-27,14-Feb-27,0,34,0,0,0,0,,,0,,,
0,AB-SUB-B04-7TH-1000,Submittal for Col. & Walls Conc. Dim.  & RFT DWGs As-Built Drawing (B04) (7th),Approved Baseline.HO.1.S.P01.B04.SUP.7thF,Approved Baseline,18,18,11-Jan-27,1-Feb-27,11-Jan-27,1-Feb-27,0,45,0,0,0,0,CON-B04-7TH-1030,"AB-APP-B04-7TH-1000, AB-APP-B04-7TH-1000",0,0%,No,No
0,AB-SUB-B04-7TH-1010,Submittal for Slabs Conc. Dim.  & RFT DWGs As-Built Drawing  (B04) (7th),Approved Baseline.HO.1.S.P01.B04.SUP.7thF,Approved Baseline,18,18,24-Jan-27,14-Feb-27,24-Jan-27,14-Feb-27,0,34,0,0,0,0,CON-B04-7TH-1060,"AB-APP-B04-7TH-1010, AB-APP-B04-7TH-1010",0,0%,No,No
0,AB-SUB-B04-7TH-1020,Submittal for Beams Conc. Dim.  & RFT DWGs As-Built Drawing (B04) (7th),Approved Baseline.HO.1.S.P01.B04.SUP.7thF,Approved Baseline,18,18,24-Jan-27,14-Feb-27,24-Jan-27,14-Feb-27,0,34,0,0,0,0,CON-B04-7TH-1060,"AB-APP-B04-7TH-1020, AB-APP-B04-7TH-1020",0,0%,No,No
0,AB-SUB-B04-7TH-1030,Submittal for Stairs Conc. Dim.  & RFT DWGs As-Built Drawing (B04) (7th),Approved Baseline.HO.1.S.P01.B04.SUP.7thF,Approved Baseline,18,18,24-Jan-27,14-Feb-27,24-Jan-27,14-Feb-27,0,34,0,0,0,0,CON-B04-7TH-1060,"AB-APP-B04-7TH-1030, AB-APP-B04-7TH-1030",0,0%,No,No
0,,,,,27,27,9-Feb-27,15-Mar-27,9-Feb-27,15-Mar-27,0,12,0,0,0,0,,,0,,,
0,AB-SUB-B04-8TH-1000,Submittal for Col. & Walls Conc. Dim.  & RFT DWGs As-Built Drawing (B04) (8th),Approved Baseline.HO.1.S.P01.B04.SUP.8thF,Approved Baseline,18,18,9-Feb-27,1-Mar-27,9-Feb-27,1-Mar-27,0,21,0,0,0,0,CON-B04-8TH-1030,"AB-APP-B04-8TH-1000, AB-APP-B04-8TH-1000",0,0%,No,No
0,AB-SUB-B04-8TH-1010,Submittal for Slabs Conc. Dim.  & RFT DWGs As-Built Drawing (B04) (8th),Approved Baseline.HO.1.S.P01.B04.SUP.8thF,Approved Baseline,18,18,20-Feb-27,15-Mar-27,20-Feb-27,15-Mar-27,0,12,0,0,0,0,CON-B04-8TH-1060,"AB-APP-B04-8TH-1010, AB-APP-B04-8TH-1010",0,0%,No,No
0,AB-SUB-B04-8TH-1020,Submittal for Beams Conc. Dim.  & RFT DWGs As-Built Drawing (B04) (8th),Approved Baseline.HO.1.S.P01.B04.SUP.8thF,Approved Baseline,18,18,20-Feb-27,15-Mar-27,20-Feb-27,15-Mar-27,0,12,0,0,0,0,CON-B04-8TH-1060,"AB-APP-B04-8TH-1020, AB-APP-B04-8TH-1020",0,0%,No,No
0,AB-SUB-B04-8TH-1030,Submittal for Stairs Conc. Dim.  & RFT DWGs As-Built Drawing (B04) (8th),Approved Baseline.HO.1.S.P01.B04.SUP.8thF,Approved Baseline,18,18,20-Feb-27,15-Mar-27,20-Feb-27,15-Mar-27,0,12,0,0,0,0,CON-B04-8TH-1060,"AB-APP-B04-8TH-1030, AB-APP-B04-8TH-1030",0,0%,No,No
0,,,,,17,17,27-Feb-27,21-Mar-27,27-Feb-27,21-Mar-27,0,0,0,0,0,0,,,0,,,
0,AB-SUB-B04-RF-1000,Submittal for Col. & Walls Conc. Dim.  & RFT DWGs As-Built Drawing (B04) (RF),Approved Baseline.HO.1.S.P01.B04.SUP.RF,Approved Baseline,8,8,27-Feb-27,7-Mar-27,27-Feb-27,7-Mar-27,0,6,0,0,0,0,CON-B04-RF-1030,"AB-APP-B04-RF-1000, AB-APP-B04-RF-1000",0,0%,No,No
0,AB-SUB-B04-RF-1010,Submittal for Slabs Conc. Dim.  & RFT DWGs As-Built Drawing (B04) (RF),Approved Baseline.HO.1.S.P01.B04.SUP.RF,Approved Baseline,11,11,6-Mar-27,21-Mar-27,6-Mar-27,21-Mar-27,0,0,0,0,0,0,CON-B04-RF-1060,"AB-APP-B04-RF-1010, AB-APP-B04-RF-1010",0,0%,Yes,Yes
0,AB-SUB-B04-RF-1020,Submittal for Beams Conc. Dim.  & RFT DWGs As-Built Drawing (B04) (RF),Approved Baseline.HO.1.S.P01.B04.SUP.RF,Approved Baseline,11,11,6-Mar-27,21-Mar-27,6-Mar-27,21-Mar-27,0,0,0,0,0,0,CON-B04-RF-1060,"AB-APP-B04-RF-1020, AB-APP-B04-RF-1020",0,0%,Yes,Yes
0,,,,,403,403,29-Nov-25,5-Apr-27,29-Nov-25,5-Apr-27,0,0,0,0,0,0,,,0,,,
0,,,,,395,395,8-Dec-25,5-Apr-27,8-Dec-25,5-Apr-27,0,0,0,0,0,0,,,0,,,
0,,,,,395,395,8-Dec-25,5-Apr-27,8-Dec-25,5-Apr-27,0,0,0,0,0,0,,,0,,,
0,,,,,165,165,8-Dec-25,1-Jul-26,8-Dec-25,1-Jul-26,0,230,0,0,0,0,,,0,,,
0,,,,,12,12,8-Dec-25,21-Dec-25,8-Dec-25,21-Dec-25,0,383,0,0,0,0,,,0,,,
0,AB-APP-B01-REP-1000,Approval for General Replacement Plan & Typical Sections for Replacement / Backfilling DWGs As-Built Drawing (B01),Approved Baseline.HO.1.A.P02.B01.SUB.1,Approved Baseline,12,12,8-Dec-25,21-Dec-25,8-Dec-25,21-Dec-25,383,383,0,0,0,0,"AB-SUB-B01-REP-1000, AB-SUB-B01-REP-1000",HO-1050,0,0%,No,No
0,,,,,32,32,13-Dec-25,19-Jan-26,13-Dec-25,19-Jan-26,0,359,0,0,0,0,,,0,,,
0,AB-APP-B01-FOOT-1000,Approval for PC Raft Conc. Dim. DWGs As-Built Drawing (B01) (footing),Approved Baseline.HO.1.A.P02.B01.SUB.F,Approved Baseline,12,12,13-Dec-25,25-Dec-25,13-Dec-25,25-Dec-25,379,379,0,0,0,0,"AB-SUB-B01-FOOT-1000, AB-SUB-B01-FOOT-1000",HO-1050,0,0%,No,No
0,AB-APP-B01-FOOT-1010,Approval for  Waterproofing Layout Plan DWGs As-Built Drawing (B01),Approved Baseline.HO.1.A.P02.B01.SUB.F,Approved Baseline,12,12,17-Dec-25,30-Dec-25,17-Dec-25,30-Dec-25,375,375,0,0,0,0,"AB-SUB-B01-FOOT-1010, AB-SUB-B01-FOOT-1010",HO-1050,0,0%,No,No
0,AB-APP-B01-FOOT-1020,Approval for RC Raft & Footings Conc. Dim. DWGs As-Built Drawing (B01),Approved Baseline.HO.1.A.P02.B01.SUB.F,Approved Baseline,12,12,5-Jan-26,19-Jan-26,5-Jan-26,19-Jan-26,359,359,0,0,0,0,"AB-SUB-B01-FOOT-1020, AB-SUB-B01-FOOT-1020",HO-1050,0,0%,No,No
0,AB-APP-B01-FOOT-1030,Approval for RC Raft & Footings RFT DWGs As-Built Drawing (B01),Approved Baseline.HO.1.A.P02.B01.SUB.F,Approved Baseline,12,12,5-Jan-26,19-Jan-26,5-Jan-26,19-Jan-26,359,359,0,0,0,0,"AB-SUB-B01-FOOT-1030, AB-SUB-B01-FOOT-1030",HO-1050,0,0%,No,No
0,,,,,118,118,3-Feb-26,1-Jul-26,3-Feb-26,1-Jul-26,0,230,0,0,0,0,,,0,,,
0,AB-APP-B01-BAS2-1000,Approval for Col. & Walls Conc. Dim.  & RFT DWGs As-Built Drawing (B01) (Bas 02),Approved Baseline.HO.1.A.P02.B01.SUB.2ndB,Approved Baseline,12,12,3-Feb-26,16-Feb-26,3-Feb-26,16-Feb-26,336,336,0,0,0,0,"AB-SUB-B01-BAS2-1000, AB-SUB-B01-BAS2-1000",HO-1050,0,0%,No,No
0,AB-APP-B01-BAS2-1010,Approval for Stairs Conc. Dim.  & RFT DWGs As-Built Drawing (B01) (Bas 02),Approved Baseline.HO.1.A.P02.B01.SUB.2ndB,Approved Baseline,12,12,17-Feb-26,2-Mar-26,17-Feb-26,2-Mar-26,324,324,0,0,0,0,"AB-SUB-B01-BAS2-1010, AB-SUB-B01-BAS2-1010",HO-1050,0,0%,No,No
0,AB-APP-B01-BAS2-1020,Approval for Ramps Conc. Dim.  & RFT DWGs As-Built Drawing (B01) (Bas 02),Approved Baseline.HO.1.A.P02.B01.SUB.2ndB,Approved Baseline,12,12,19-Feb-26,4-Mar-26,19-Feb-26,4-Mar-26,322,322,0,0,0,0,"AB-SUB-B01-BAS2-1020, AB-SUB-B01-BAS2-1020",HO-1050,0,0%,No,No
0,AB-APP-B01-BAS2-1030,Approval for Slabs Conc. Dim.  & RFT DWGs As-Built Drawing (B01) (Bas 02),Approved Baseline.HO.1.A.P02.B01.SUB.2ndB,Approved Baseline,12,12,21-Feb-26,5-Mar-26,21-Feb-26,5-Mar-26,321,321,0,0,0,0,"AB-SUB-B01-BAS2-1030, AB-SUB-B01-BAS2-1030",HO-1050,0,0%,No,No
0,AB-APP-B01-BAS2-1040,Approval for Beams Conc. Dim.  & RFT DWGs As-Built Drawing (B01) (Bas 02),Approved Baseline.HO.1.A.P02.B01.SUB.2ndB,Approved Baseline,12,12,21-Feb-26,5-Mar-26,21-Feb-26,5-Mar-26,321,321,0,0,0,0,"AB-SUB-B01-BAS2-1040, AB-SUB-B01-BAS2-1040",HO-1050,0,0%,No,No
0,,,,,16,16,13-Jun-26,1-Jul-26,13-Jun-26,1-Jul-26,0,230,0,0,0,0,,,0,,,
0,AB-APP-B01-SOG-1000,Approval for S.O.G Conc. Dim.DWGs As-Built Drawing (B01) (Sog),Approved Baseline.HO.1.A.P02.B01.SUB.2ndB.1,Approved Baseline,12,12,13-Jun-26,25-Jun-26,13-Jun-26,25-Jun-26,234,234,0,0,0,0,"AB-SUB-B01-SOG-1000, AB-SUB-B01-SOG-1000",HO-1050,0,0%,No,No
0,AB-APP-B01-SOG-1010,Approval for S.O.G RFT DWGs As-Built Drawing (B01) (Sog),Approved Baseline.HO.1.A.P02.B01.SUB.2ndB.1,Approved Baseline,12,12,17-Jun-26,1-Jul-26,17-Jun-26,1-Jul-26,230,230,0,0,0,0,"AB-SUB-B01-SOG-1010, AB-SUB-B01-SOG-1010",HO-1050,0,0%,No,No
0,,,,,27,27,15-Mar-26,20-Apr-26,15-Mar-26,20-Apr-26,0,287,0,0,0,0,,,0,,,
0,AB-APP-B01-BAS1-1000,Approval for Col. & Walls Conc. Dim.  & RFT DWGs As-Built Drawing (B01) (Bas 01),Approved Baseline.HO.1.A.P02.B01.SUB.1stB,Approved Baseline,12,12,15-Mar-26,1-Apr-26,15-Mar-26,1-Apr-26,302,302,0,0,0,0,"AB-SUB-B01-BAS1-1000, AB-SUB-B01-BAS1-1000",HO-1050,0,0%,No,No
0,AB-APP-B01-BAS1-1010,Approval for Stairs Conc. Dim.  & RFT DWGs As-Built Drawing (B01) (Bas 01),Approved Baseline.HO.1.A.P02.B01.SUB.1stB,Approved Baseline,12,12,4-Apr-26,18-Apr-26,4-Apr-26,18-Apr-26,289,289,0,0,0,0,"AB-SUB-B01-BAS1-1010, AB-SUB-B01-BAS1-1010",HO-1050,0,0%,No,No
0,AB-APP-B01-BAS1-1020,Approval for Slabs Conc. Dim.  & RFT DWGs As-Built Drawing (B01) (Bas 01),Approved Baseline.HO.1.A.P02.B01.SUB.1stB,Approved Baseline,12,12,5-Apr-26,19-Apr-26,5-Apr-26,19-Apr-26,288,288,0,0,0,0,"AB-SUB-B01-BAS1-1020, AB-SUB-B01-BAS1-1020",HO-1050,0,0%,No,No
0,AB-APP-B01-BAS1-1030,Approval for Beams Conc. Dim.  & RFT DWGs As-Built Drawing (B01) (Bas 01),Approved Baseline.HO.1.A.P02.B01.SUB.1stB,Approved Baseline,12,12,5-Apr-26,19-Apr-26,5-Apr-26,19-Apr-26,288,288,0,0,0,0,"AB-SUB-B01-BAS1-1030, AB-SUB-B01-BAS1-1030",HO-1050,0,0%,No,No
0,AB-APP-B01-BAS1-1040,Approval for Ramps Conc. Dim.  & RFT DWGs As-Built Drawing (B01) (Bas 01),Approved Baseline.HO.1.A.P02.B01.SUB.1stB,Approved Baseline,12,12,6-Apr-26,20-Apr-26,6-Apr-26,20-Apr-26,287,287,0,0,0,0,"AB-SUB-B01-BAS1-1040, AB-SUB-B01-BAS1-1040",HO-1050,0,0%,No,No
0,,,,,286,286,22-Apr-26,5-Apr-27,22-Apr-26,5-Apr-27,0,0,0,0,0,0,,,0,,,
0,,,,,30,30,22-Apr-26,26-May-26,22-Apr-26,26-May-26,0,256,0,0,0,0,,,0,,,
0,AB-APP-B01-GR-1000,Approval for Col. & Walls Conc. Dim.  & RFT DWGs As-Built Drawing (B01)  (GF),Approved Baseline.HO.1.A.P02.B01.SUP.GF,Approved Baseline,12,12,22-Apr-26,5-May-26,22-Apr-26,5-May-26,274,274,0,0,0,0,"AB-SUB-B01-GR-1000, AB-SUB-B01-GR-1000",HO-1050,0,0%,No,No
0,AB-APP-B01-GR-1010,Approval for Stairs Conc. Dim.  & RFT DWGs As-Built Drawing (B01)  (GF),Approved Baseline.HO.1.A.P02.B01.SUP.GF,Approved Baseline,12,12,9-May-26,21-May-26,9-May-26,21-May-26,260,260,0,0,0,0,"AB-SUB-B01-GR-1010, AB-SUB-B01-GR-1010",HO-1050,0,0%,No,No
0,AB-APP-B01-GR-1020,Approval for Slabs Conc. Dim.  & RFT DWGs As-Built Drawing (B01)  (GF),Approved Baseline.HO.1.A.P02.B01.SUP.GF,Approved Baseline,12,12,13-May-26,26-May-26,13-May-26,26-May-26,256,256,0,0,0,0,"AB-SUB-B01-GR-1020, AB-SUB-B01-GR-1020",HO-1050,0,0%,No,No
0,AB-APP-B01-GR-1030,Approval for Beams Conc. Dim.  & RFT DWGs As-Built Drawing (B01)  (GF),Approved Baseline.HO.1.A.P02.B01.SUP.GF,Approved Baseline,12,12,13-May-26,26-May-26,13-May-26,26-May-26,256,256,0,0,0,0,"AB-SUB-B01-GR-1030, AB-SUB-B01-GR-1030",HO-1050,0,0%,No,No
0,,,,,31,31,4-Jun-26,11-Jul-26,4-Jun-26,11-Jul-26,0,222,0,0,0,0,,,0,,,
0,AB-APP-B01-1ST-1000,Approval for Col. & Walls Conc. Dim.  & RFT DWGs As-Built Drawing (B01) (1st),Approved Baseline.HO.1.A.P02.B01.SUP.1stF,Approved Baseline,12,12,4-Jun-26,17-Jun-26,4-Jun-26,17-Jun-26,241,241,0,0,0,0,"AB-SUB-B01-1ST-1000, AB-SUB-B01-1ST-1000",HO-1050,0,0%,No,No
0,AB-APP-B01-1ST-1010,Approval for Slabs Conc. Dim.  & RFT DWGs As-Built Drawing (B01) (1st),Approved Baseline.HO.1.A.P02.B01.SUP.1stF,Approved Baseline,12,12,27-Jun-26,11-Jul-26,27-Jun-26,11-Jul-26,222,222,0,0,0,0,"AB-SUB-B01-1ST-1010, AB-SUB-B01-1ST-1010",HO-1050,0,0%,No,No
0,AB-APP-B01-1ST-1020,Approval for Beams Conc. Dim.  & RFT DWGs As-Built Drawing (B01) (1st),Approved Baseline.HO.1.A.P02.B01.SUP.1stF,Approved Baseline,12,12,27-Jun-26,11-Jul-26,27-Jun-26,11-Jul-26,222,222,0,0,0,0,"AB-SUB-B01-1ST-1020, AB-SUB-B01-1ST-1020",HO-1050,0,0%,No,No
0,AB-APP-B01-1ST-1030,Approval for Stairs Conc. Dim.  & RFT DWGs As-Built Drawing (B01) (1st),Approved Baseline.HO.1.A.P02.B01.SUP.1stF,Approved Baseline,12,12,27-Jun-26,11-Jul-26,27-Jun-26,11-Jul-26,222,222,0,0,0,0,"AB-SUB-B01-1ST-1030, AB-SUB-B01-1ST-1030",HO-1050,0,0%,No,No
0,,,,,27,27,15-Jul-26,16-Aug-26,15-Jul-26,16-Aug-26,0,192,0,0,0,0,,,0,,,
0,AB-APP-B01-2ND-1000,Approval for Col. & Walls Conc. Dim.  & RFT DWGs As-Built Drawing (B01) (2nd),Approved Baseline.HO.1.A.P02.B01.SUP.2ndF,Approved Baseline,12,12,15-Jul-26,29-Jul-26,15-Jul-26,29-Jul-26,207,207,0,0,0,0,"AB-SUB-B01-2ND-1000, AB-SUB-B01-2ND-1000",HO-1050,0,0%,No,No
0,AB-APP-B01-2ND-1010,Approval for Slabs Conc. Dim.  & RFT DWGs As-Built Drawing (B01) (2nd),Approved Baseline.HO.1.A.P02.B01.SUP.2ndF,Approved Baseline,12,12,3-Aug-26,16-Aug-26,3-Aug-26,16-Aug-26,192,192,0,0,0,0,"AB-SUB-B01-2ND-1010, AB-SUB-B01-2ND-1010",HO-1050,0,0%,No,No
0,AB-APP-B01-2ND-1020,Approval for Beams Conc. Dim.  & RFT DWGs As-Built Drawing (B01) (2nd),Approved Baseline.HO.1.A.P02.B01.SUP.2ndF,Approved Baseline,12,12,3-Aug-26,16-Aug-26,3-Aug-26,16-Aug-26,192,192,0,0,0,0,"AB-SUB-B01-2ND-1020, AB-SUB-B01-2ND-1020",HO-1050,0,0%,No,No
0,AB-APP-B01-2ND-1030,Approval for Stairs Conc. Dim.  & RFT DWGs As-Built Drawing (B01) (2nd),Approved Baseline.HO.1.A.P02.B01.SUP.2ndF,Approved Baseline,12,12,3-Aug-26,16-Aug-26,3-Aug-26,16-Aug-26,192,192,0,0,0,0,"AB-SUB-B01-2ND-1030, AB-SUB-B01-2ND-1030",HO-1050,0,0%,No,No
0,,,,,29,29,22-Aug-26,24-Sep-26,22-Aug-26,24-Sep-26,0,159,0,0,0,0,,,0,,,
0,AB-APP-B01-3RD-1000,Approval for Col. & Walls Conc. Dim.  & RFT DWGs As-Built Drawing (B01) (3rd),Approved Baseline.HO.1.A.P02.B01.SUP.3rdF,Approved Baseline,12,12,22-Aug-26,5-Sep-26,22-Aug-26,5-Sep-26,176,176,0,0,0,0,"AB-SUB-B01-3RD-1000, AB-SUB-B01-3RD-1000",HO-1050,0,0%,No,No
0,AB-APP-B01-3RD-1010,Approval for Slabs Conc. Dim.  & RFT DWGs As-Built Drawing (B01) (3rd),Approved Baseline.HO.1.A.P02.B01.SUP.3rdF,Approved Baseline,12,12,12-Sep-26,24-Sep-26,12-Sep-26,24-Sep-26,159,159,0,0,0,0,"AB-SUB-B01-3RD-1010, AB-SUB-B01-3RD-1010",HO-1050,0,0%,No,No
0,AB-APP-B01-3RD-1020,Approval for Beams Conc. Dim.  & RFT DWGs As-Built Drawing (B01) (3rd),Approved Baseline.HO.1.A.P02.B01.SUP.3rdF,Approved Baseline,12,12,12-Sep-26,24-Sep-26,12-Sep-26,24-Sep-26,159,159,0,0,0,0,"AB-SUB-B01-3RD-1020, AB-SUB-B01-3RD-1020",HO-1050,0,0%,No,No
0,AB-APP-B01-3RD-1030,Approval for Stairs Conc. Dim.  & RFT DWGs As-Built Drawing (B01) (3rd),Approved Baseline.HO.1.A.P02.B01.SUP.3rdF,Approved Baseline,12,12,12-Sep-26,24-Sep-26,12-Sep-26,24-Sep-26,159,159,0,0,0,0,"AB-SUB-B01-3RD-1030, AB-SUB-B01-3RD-1030",HO-1050,0,0%,No,No
0,,,,,31,31,30-Sep-26,5-Nov-26,30-Sep-26,5-Nov-26,0,124,0,0,0,0,,,0,,,
0,AB-APP-B01-4TH-1000,Approval for Col. & Walls Conc. Dim.  & RFT DWGs As-Built Drawing (B01) (4th),Approved Baseline.HO.1.A.P02.B01.SUP.4thF,Approved Baseline,12,12,30-Sep-26,14-Oct-26,30-Sep-26,14-Oct-26,143,143,0,0,0,0,"AB-SUB-B01-4TH-1000, AB-SUB-B01-4TH-1000",HO-1050,0,0%,No,No
0,AB-APP-B01-4TH-1010,Approval for Slabs Conc. Dim.  & RFT DWGs As-Built Drawing (B01) (4th),Approved Baseline.HO.1.A.P02.B01.SUP.4thF,Approved Baseline,12,12,24-Oct-26,5-Nov-26,24-Oct-26,5-Nov-26,124,124,0,0,0,0,"AB-SUB-B01-4TH-1010, AB-SUB-B01-4TH-1010",HO-1050,0,0%,No,No
0,AB-APP-B01-4TH-1020,Approval for Beams Conc. Dim.  & RFT DWGs As-Built Drawing (B01) (4th),Approved Baseline.HO.1.A.P02.B01.SUP.4thF,Approved Baseline,12,12,24-Oct-26,5-Nov-26,24-Oct-26,5-Nov-26,124,124,0,0,0,0,"AB-SUB-B01-4TH-1020, AB-SUB-B01-4TH-1020",HO-1050,0,0%,No,No
0,AB-APP-B01-4TH-1030,Approval for Stairs Conc. Dim.  & RFT DWGs As-Built Drawing (B01) (4th),Approved Baseline.HO.1.A.P02.B01.SUP.4thF,Approved Baseline,12,12,24-Oct-26,5-Nov-26,24-Oct-26,5-Nov-26,124,124,0,0,0,0,"AB-SUB-B01-4TH-1030, AB-SUB-B01-4TH-1030",HO-1050,0,0%,No,No
0,,,,,27,27,10-Nov-26,10-Dec-26,10-Nov-26,10-Dec-26,0,94,0,0,0,0,,,0,,,
0,AB-APP-B01-5TH-1000,Approval for Col. & Walls Conc. Dim.  & RFT DWGs As-Built Drawing (B01) (5th),Approved Baseline.HO.1.A.P02.B01.SUP.5thF,Approved Baseline,12,12,10-Nov-26,23-Nov-26,10-Nov-26,23-Nov-26,109,109,0,0,0,0,"AB-SUB-B01-5TH-1000, AB-SUB-B01-5TH-1000",HO-1050,0,0%,No,No
0,AB-APP-B01-5TH-1010,Approval for Slabs Conc. Dim.  & RFT DWGs As-Built Drawing (B01) (5th),Approved Baseline.HO.1.A.P02.B01.SUP.5thF,Approved Baseline,12,12,28-Nov-26,10-Dec-26,28-Nov-26,10-Dec-26,94,94,0,0,0,0,"AB-SUB-B01-5TH-1010, AB-SUB-B01-5TH-1010",HO-1050,0,0%,No,No
0,AB-APP-B01-5TH-1020,Approval for Beams Conc. Dim.  & RFT DWGs As-Built Drawing (B01) (5th),Approved Baseline.HO.1.A.P02.B01.SUP.5thF,Approved Baseline,12,12,28-Nov-26,10-Dec-26,28-Nov-26,10-Dec-26,94,94,0,0,0,0,"AB-SUB-B01-5TH-1020, AB-SUB-B01-5TH-1020",HO-1050,0,0%,No,No
0,AB-APP-B01-5TH-1030,Approval for Stairs Conc. Dim.  & RFT DWGs As-Built Drawing (B01) (5th),Approved Baseline.HO.1.A.P02.B01.SUP.5thF,Approved Baseline,12,12,28-Nov-26,10-Dec-26,28-Nov-26,10-Dec-26,94,94,0,0,0,0,"AB-SUB-B01-5TH-1030, AB-SUB-B01-5TH-1030",HO-1050,0,0%,No,No
0,,,,,27,27,15-Dec-26,16-Jan-27,15-Dec-26,16-Jan-27,0,64,0,0,0,0,,,0,,,
0,AB-APP-B01-6TH-1000,Approval for Col. & Walls Conc. Dim.  & RFT DWGs As-Built Drawing (B01) (6th),Approved Baseline.HO.1.A.P02.B01.SUP.6thF,Approved Baseline,12,12,15-Dec-26,28-Dec-26,15-Dec-26,28-Dec-26,79,79,0,0,0,0,"AB-SUB-B01-6TH-1000, AB-SUB-B01-6TH-1000",HO-1050,0,0%,No,No
0,AB-APP-B01-6TH-1010,Approval for Slabs Conc. Dim.  & RFT DWGs As-Built Drawing (B01) (6th),Approved Baseline.HO.1.A.P02.B01.SUP.6thF,Approved Baseline,12,12,2-Jan-27,16-Jan-27,2-Jan-27,16-Jan-27,64,64,0,0,0,0,"AB-SUB-B01-6TH-1010, AB-SUB-B01-6TH-1010",HO-1050,0,0%,No,No
0,AB-APP-B01-6TH-1020,Approval for Beams Conc. Dim.  & RFT DWGs As-Built Drawing (B01) (6th),Approved Baseline.HO.1.A.P02.B01.SUP.6thF,Approved Baseline,12,12,2-Jan-27,16-Jan-27,2-Jan-27,16-Jan-27,64,64,0,0,0,0,"AB-SUB-B01-6TH-1020, AB-SUB-B01-6TH-1020",HO-1050,0,0%,No,No
0,AB-APP-B01-6TH-1030,Approval for Stairs Conc. Dim.  & RFT DWGs As-Built Drawing (B01) (6th),Approved Baseline.HO.1.A.P02.B01.SUP.6thF,Approved Baseline,12,12,2-Jan-27,16-Jan-27,2-Jan-27,16-Jan-27,64,64,0,0,0,0,"AB-SUB-B01-6TH-1030, AB-SUB-B01-6TH-1030",HO-1050,0,0%,No,No
0,,,,,26,26,18-Jan-27,17-Feb-27,18-Jan-27,17-Feb-27,0,37,0,0,0,0,,,0,,,
0,AB-APP-B01-7TH-1000,Approval for Col. & Walls Conc. Dim.  & RFT DWGs As-Built Drawing (B01) (7th),Approved Baseline.HO.1.A.P02.B01.SUP.7thF,Approved Baseline,12,12,18-Jan-27,1-Feb-27,18-Jan-27,1-Feb-27,51,51,0,0,0,0,"AB-SUB-B01-7TH-1000, AB-SUB-B01-7TH-1000",HO-1050,0,0%,No,No
0,AB-APP-B01-7TH-1010,Approval for Slabs Conc. Dim.  & RFT DWGs As-Built Drawing (B01) (7th),Approved Baseline.HO.1.A.P02.B01.SUP.7thF,Approved Baseline,12,12,4-Feb-27,17-Feb-27,4-Feb-27,17-Feb-27,37,37,0,0,0,0,"AB-SUB-B01-7TH-1010, AB-SUB-B01-7TH-1010",HO-1050,0,0%,No,No
0,AB-APP-B01-7TH-1020,Approval for Beams Conc. Dim.  & RFT DWGs As-Built Drawing (B01) (7th),Approved Baseline.HO.1.A.P02.B01.SUP.7thF,Approved Baseline,12,12,4-Feb-27,17-Feb-27,4-Feb-27,17-Feb-27,37,37,0,0,0,0,"AB-SUB-B01-7TH-1020, AB-SUB-B01-7TH-1020",HO-1050,0,0%,No,No
0,AB-APP-B01-7TH-1030,Approval for Stairs Conc. Dim.  & RFT DWGs As-Built Drawing (B01) (7th),Approved Baseline.HO.1.A.P02.B01.SUP.7thF,Approved Baseline,12,12,4-Feb-27,17-Feb-27,4-Feb-27,17-Feb-27,37,37,0,0,0,0,"AB-SUB-B01-7TH-1030, AB-SUB-B01-7TH-1030",HO-1050,0,0%,No,No
0,,,,,24,24,18-Feb-27,21-Mar-27,18-Feb-27,21-Mar-27,0,13,0,0,0,0,,,0,,,
0,AB-APP-B01-8TH-1000,Approval for Col. & Walls Conc. Dim.  & RFT DWGs As-Built Drawing (B01) (8th),Approved Baseline.HO.1.A.P02.B01.SUP.8thF,Approved Baseline,12,12,18-Feb-27,3-Mar-27,18-Feb-27,3-Mar-27,25,25,0,0,0,0,"AB-SUB-B01-8TH-1000, AB-SUB-B01-8TH-1000",HO-1050,0,0%,No,No
0,AB-APP-B01-8TH-1010,Approval for Slabs Conc. Dim.  & RFT DWGs As-Built Drawing (B01) (8th),Approved Baseline.HO.1.A.P02.B01.SUP.8thF,Approved Baseline,12,12,4-Mar-27,21-Mar-27,4-Mar-27,21-Mar-27,13,13,0,0,0,0,"AB-SUB-B01-8TH-1010, AB-SUB-B01-8TH-1010",HO-1050,0,0%,No,No
0,AB-APP-B01-8TH-1020,Approval for Beams Conc. Dim.  & RFT DWGs As-Built Drawing (B01) (8th),Approved Baseline.HO.1.A.P02.B01.SUP.8thF,Approved Baseline,12,12,4-Mar-27,21-Mar-27,4-Mar-27,21-Mar-27,13,13,0,0,0,0,"AB-SUB-B01-8TH-1020, AB-SUB-B01-8TH-1020",HO-1050,0,0%,No,No
0,AB-APP-B01-8TH-1030,Approval for Stairs Conc. Dim.  & RFT DWGs As-Built Drawing (B01) (8th),Approved Baseline.HO.1.A.P02.B01.SUP.8thF,Approved Baseline,12,12,4-Mar-27,21-Mar-27,4-Mar-27,21-Mar-27,13,13,0,0,0,0,"AB-SUB-B01-8TH-1030, AB-SUB-B01-8TH-1030",HO-1050,0,0%,No,No
0,,,,,18,18,16-Mar-27,5-Apr-27,16-Mar-27,5-Apr-27,0,0,0,0,0,0,,,0,,,
0,AB-APP-B01-RF-1000,Approval for Col. & Walls Conc. Dim.  & RFT DWGs As-Built Drawing (B01) (RF),Approved Baseline.HO.1.A.P02.B01.SUP.RF,Approved Baseline,12,12,16-Mar-27,29-Mar-27,16-Mar-27,29-Mar-27,6,6,0,0,0,0,"AB-SUB-B01-RF-1000, AB-SUB-B01-RF-1000",HO-1050,0,0%,No,No
0,AB-APP-B01-RF-1010,Approval for Slabs Conc. Dim.  & RFT DWGs As-Built Drawing (B01) (RF),Approved Baseline.HO.1.A.P02.B01.SUP.RF,Approved Baseline,12,12,23-Mar-27,5-Apr-27,23-Mar-27,5-Apr-27,0,0,0,0,0,0,"AB-SUB-B01-RF-1010, AB-SUB-B01-RF-1010",HO-1050,0,0%,Yes,Yes
0,AB-APP-B01-RF-1020,Approval for Beams Conc. Dim.  & RFT DWGs As-Built Drawing (B01) (RF),Approved Baseline.HO.1.A.P02.B01.SUP.RF,Approved Baseline,12,12,23-Mar-27,5-Apr-27,23-Mar-27,5-Apr-27,0,0,0,0,0,0,"AB-SUB-B01-RF-1020, AB-SUB-B01-RF-1020",HO-1050,0,0%,Yes,Yes
0,,,,,371,371,23-Dec-25,23-Mar-27,23-Dec-25,23-Mar-27,0,11,0,0,0,0,,,0,,,
0,,,,,167,167,23-Dec-25,19-Jul-26,23-Dec-25,19-Jul-26,0,215,0,0,0,0,,,0,,,
0,,,,,12,12,23-Dec-25,5-Jan-26,23-Dec-25,5-Jan-26,0,370,0,0,0,0,,,0,,,
0,AB-APP-B02-REP-1000,Approval for General Replacement Plan & Typical Sections for Replacement / Backfilling DWGs As-Built Drawing (B02),Approved Baseline.HO.1.A.P02.B02.SUB.1,Approved Baseline,12,12,23-Dec-25,5-Jan-26,23-Dec-25,5-Jan-26,370,370,0,0,0,0,"AB-SUB-B02-REP-1000, AB-SUB-B02-REP-1000",HO-1050,0,0%,No,No
0,,,,,36,36,25-Dec-25,7-Feb-26,25-Dec-25,7-Feb-26,0,344,0,0,0,0,,,0,,,
0,AB-APP-B02-FOOT-1000,Approval for PC Raft Conc. Dim. DWGs As-Built Drawing (B02) (footing),Approved Baseline.HO.1.A.P02.B02.SUB.F,Approved Baseline,12,12,25-Dec-25,8-Jan-26,25-Dec-25,8-Jan-26,368,368,0,0,0,0,"AB-SUB-B02-FOOT-1000, AB-SUB-B02-FOOT-1000",HO-1050,0,0%,No,No
0,AB-APP-B02-FOOT-1010,Approval for RC Raft & Footings Conc. Dim. DWGs As-Built Drawing (B02) (footing),Approved Baseline.HO.1.A.P02.B02.SUB.F,Approved Baseline,12,12,13-Jan-26,27-Jan-26,13-Jan-26,27-Jan-26,353,353,0,0,0,0,"AB-SUB-B02-FOOT-1010, AB-SUB-B02-FOOT-1010",HO-1050,0,0%,No,No
0,AB-APP-B02-FOOT-1020,Approval for RC Raft & Footings RFT DWGs As-Built Drawing (B02) (footing),Approved Baseline.HO.1.A.P02.B02.SUB.F,Approved Baseline,12,12,18-Jan-26,1-Feb-26,18-Jan-26,1-Feb-26,349,349,0,0,0,0,"AB-SUB-B02-FOOT-1020, AB-SUB-B02-FOOT-1020",HO-1050,0,0%,No,No
0,AB-APP-B02-FOOT-1030,Approval for  Waterproofing Layout Plan DWGs As-Built Drawing  (B02),Approved Baseline.HO.1.A.P02.B02.SUB.F,Approved Baseline,12,12,24-Jan-26,7-Feb-26,24-Jan-26,7-Feb-26,344,344,0,0,0,0,"AB-SUB-B02-FOOT-1030, AB-SUB-B02-FOOT-1030",HO-1050,0,0%,No,No
0,,,,,127,127,10-Feb-26,19-Jul-26,10-Feb-26,19-Jul-26,0,215,0,0,0,0,,,0,,,
0,AB-APP-B02-BAS2-1000,Approval for Col. & Walls Conc. Dim.  & RFT DWGs As-Built Drawing (B02) (Bas 02),Approved Baseline.HO.1.A.P02.B02.SUB.2ndB,Approved Baseline,12,12,10-Feb-26,23-Feb-26,10-Feb-26,23-Feb-26,330,330,0,0,0,0,"AB-SUB-B02-BAS2-1000, AB-SUB-B02-BAS2-1000",HO-1050,0,0%,No,No
0,AB-APP-B02-BAS2-1010,Approval for Stairs Conc. Dim.  & RFT DWGs As-Built Drawing (B02) (Bas 02),Approved Baseline.HO.1.A.P02.B02.SUB.2ndB,Approved Baseline,12,12,22-Feb-26,7-Mar-26,22-Feb-26,7-Mar-26,320,320,0,0,0,0,"AB-SUB-B02-BAS2-1010, AB-SUB-B02-BAS2-1010",HO-1050,0,0%,No,No
0,AB-APP-B02-BAS2-1020,Approval for Slabs Conc. Dim.  & RFT DWGs As-Built Drawing (B02) (Bas 02),Approved Baseline.HO.1.A.P02.B02.SUB.2ndB,Approved Baseline,12,12,26-Feb-26,11-Mar-26,26-Feb-26,11-Mar-26,316,316,0,0,0,0,"AB-SUB-B02-BAS2-1020, AB-SUB-B02-BAS2-1020",HO-1050,0,0%,No,No
0,AB-APP-B02-BAS2-1030,Approval for Beams Conc. Dim.  & RFT DWGs As-Built Drawing (B02) (Bas 02),Approved Baseline.HO.1.A.P02.B02.SUB.2ndB,Approved Baseline,12,12,26-Feb-26,11-Mar-26,26-Feb-26,11-Mar-26,316,316,0,0,0,0,"AB-SUB-B02-BAS2-1030, AB-SUB-B02-BAS2-1030",HO-1050,0,0%,No,No
0,,,,,12,12,6-Jul-26,19-Jul-26,6-Jul-26,19-Jul-26,0,215,0,0,0,0,,,0,,,
0,AB-APP-B02-SOG-1000,Approval for S.O.G Conc. Dim. DWGs As-Built Drawing (B02) (Sog),Approved Baseline.HO.1.A.P02.B02.SUB.2ndB.SOG,Approved Baseline,12,12,6-Jul-26,19-Jul-26,6-Jul-26,19-Jul-26,215,215,0,0,0,0,"AB-SUB-B02-SOG-1000, AB-SUB-B02-SOG-1000",HO-1050,0,0%,No,No
0,AB-APP-B02-SOG-1010,Approval for S.O.G RFT DWGs As-Built Drawing (B02) (Sog),Approved Baseline.HO.1.A.P02.B02.SUB.2ndB.SOG,Approved Baseline,12,12,6-Jul-26,19-Jul-26,6-Jul-26,19-Jul-26,215,215,0,0,0,0,"AB-SUB-B02-SOG-1010, AB-SUB-B02-SOG-1010",HO-1050,0,0%,No,No
0,,,,,26,26,24-Mar-26,23-Apr-26,24-Mar-26,23-Apr-26,0,284,0,0,0,0,,,0,,,
0,AB-APP-B02-BAS1-1000,Approval for Col. & Walls Conc. Dim.  & RFT DWGs As-Built Drawing (B02) (Bas 01),Approved Baseline.HO.1.A.P02.B02.SUB.1stB,Approved Baseline,12,12,24-Mar-26,6-Apr-26,24-Mar-26,6-Apr-26,298,298,0,0,0,0,"AB-SUB-B02-BAS1-1000, AB-SUB-B02-BAS1-1000",HO-1050,0,0%,No,No
0,AB-APP-B02-BAS1-1010,Approval for Stairs Conc. Dim.  & RFT DWGs As-Built Drawing (B02) (Bas 01),Approved Baseline.HO.1.A.P02.B02.SUB.1stB,Approved Baseline,12,12,7-Apr-26,21-Apr-26,7-Apr-26,21-Apr-26,286,286,0,0,0,0,"AB-SUB-B02-BAS1-1010, AB-SUB-B02-BAS1-1010",HO-1050,0,0%,No,No
0,AB-APP-B02-BAS1-1020,Approval for Slabs Conc. Dim.  & RFT DWGs As-Built Drawing (B02) (Bas 01),Approved Baseline.HO.1.A.P02.B02.SUB.1stB,Approved Baseline,12,12,9-Apr-26,23-Apr-26,9-Apr-26,23-Apr-26,284,284,0,0,0,0,"AB-SUB-B02-BAS1-1020, AB-SUB-B02-BAS1-1020",HO-1050,0,0%,No,No
0,AB-APP-B02-BAS1-1030,Approval for Beams Conc. Dim.  & RFT DWGs As-Built Drawing (B02) (Bas 01),Approved Baseline.HO.1.A.P02.B02.SUB.1stB,Approved Baseline,12,12,9-Apr-26,23-Apr-26,9-Apr-26,23-Apr-26,284,284,0,0,0,0,"AB-SUB-B02-BAS1-1030, AB-SUB-B02-BAS1-1030",HO-1050,0,0%,No,No
0,,,,,266,266,3-May-26,23-Mar-27,3-May-26,23-Mar-27,0,11,0,0,0,0,,,0,,,
0,,,,,32,32,3-May-26,13-Jun-26,3-May-26,13-Jun-26,0,245,0,0,0,0,,,0,,,
0,AB-APP-B02-GR-1000,Approval for Col. & Walls Conc. Dim.  & RFT DWGs As-Built Drawing (B02) (GF),Approved Baseline.HO.1.A.P02.B02.SUP.GF,Approved Baseline,12,12,3-May-26,16-May-26,3-May-26,16-May-26,265,265,0,0,0,0,"AB-SUB-B02-GR-1000, AB-SUB-B02-GR-1000",HO-1050,0,0%,No,No
0,AB-APP-B02-GR-1010,Approval for Stairs Conc. Dim.  & RFT DWGs As-Built Drawing (B02) (GF),Approved Baseline.HO.1.A.P02.B02.SUP.GF,Approved Baseline,12,12,18-May-26,4-Jun-26,18-May-26,4-Jun-26,252,252,0,0,0,0,"AB-SUB-B02-GR-1010, AB-SUB-B02-GR-1010",HO-1050,0,0%,No,No
0,AB-APP-B02-GR-1020,Approval for Slabs Conc. Dim.  & RFT DWGs As-Built Drawing (B02) (GF),Approved Baseline.HO.1.A.P02.B02.SUP.GF,Approved Baseline,12,12,26-May-26,13-Jun-26,26-May-26,13-Jun-26,245,245,0,0,0,0,"AB-SUB-B02-GR-1020, AB-SUB-B02-GR-1020",HO-1050,0,0%,No,No
0,AB-APP-B02-GR-1030,Approval for Beams Conc. Dim.  & RFT DWGs As-Built Drawing (B02) (GF),Approved Baseline.HO.1.A.P02.B02.SUP.GF,Approved Baseline,12,12,26-May-26,13-Jun-26,26-May-26,13-Jun-26,245,245,0,0,0,0,"AB-SUB-B02-GR-1030, AB-SUB-B02-GR-1030",HO-1050,0,0%,No,No
0,,,,,31,31,7-Jul-26,12-Aug-26,7-Jul-26,12-Aug-26,0,195,0,0,0,0,,,0,,,
0,AB-APP-B02-1ST-1000,Approval for Col. & Walls Conc. Dim.  & RFT DWGs As-Built Drawing (B02) (1st),Approved Baseline.HO.1.A.P02.B02.SUP.1stF,Approved Baseline,12,12,7-Jul-26,20-Jul-26,7-Jul-26,20-Jul-26,214,214,0,0,0,0,"AB-SUB-B02-1ST-1000, AB-SUB-B02-1ST-1000",HO-1050,0,0%,No,No
0,AB-APP-B02-1ST-1010,Approval for Slabs Conc. Dim.  & RFT DWGs As-Built Drawing (B02) (1st),Approved Baseline.HO.1.A.P02.B02.SUP.1stF,Approved Baseline,12,12,30-Jul-26,12-Aug-26,30-Jul-26,12-Aug-26,195,195,0,0,0,0,"AB-SUB-B02-1ST-1010, AB-SUB-B02-1ST-1010",HO-1050,0,0%,No,No
0,AB-APP-B02-1ST-1020,Approval for Beams Conc. Dim.  & RFT DWGs As-Built Drawing (B02) (1st),Approved Baseline.HO.1.A.P02.B02.SUP.1stF,Approved Baseline,12,12,30-Jul-26,12-Aug-26,30-Jul-26,12-Aug-26,195,195,0,0,0,0,"AB-SUB-B02-1ST-1020, AB-SUB-B02-1ST-1020",HO-1050,0,0%,No,No
0,AB-APP-B02-1ST-1030,Approval for Stairs Conc. Dim.  & RFT DWGs As-Built Drawing (B02) (1st),Approved Baseline.HO.1.A.P02.B02.SUP.1stF,Approved Baseline,12,12,30-Jul-26,12-Aug-26,30-Jul-26,12-Aug-26,195,195,0,0,0,0,"AB-SUB-B02-1ST-1030, AB-SUB-B02-1ST-1030",HO-1050,0,0%,No,No
0,,,,,34,34,3-Sep-26,13-Oct-26,3-Sep-26,13-Oct-26,0,144,0,0,0,0,,,0,,,
0,AB-APP-B02-2ND-1000,Approval for Col. & Walls Conc. Dim.  & RFT DWGs As-Built Drawing (B02) (2nd),Approved Baseline.HO.1.A.P02.B02.SUP.2ndF,Approved Baseline,12,12,3-Sep-26,16-Sep-26,3-Sep-26,16-Sep-26,166,166,0,0,0,0,"AB-SUB-B02-2ND-1000, AB-SUB-B02-2ND-1000",HO-1050,0,0%,No,No
0,AB-APP-B02-2ND-1010,Approval for Slabs Conc. Dim.  & RFT DWGs As-Built Drawing (B02) (2nd),Approved Baseline.HO.1.A.P02.B02.SUP.2ndF,Approved Baseline,12,12,29-Sep-26,13-Oct-26,29-Sep-26,13-Oct-26,144,144,0,0,0,0,"AB-SUB-B02-2ND-1010, AB-SUB-B02-2ND-1010",HO-1050,0,0%,No,No
0,AB-APP-B02-2ND-1020,Approval for Beams Conc. Dim.  & RFT DWGs As-Built Drawing (B02) (2nd),Approved Baseline.HO.1.A.P02.B02.SUP.2ndF,Approved Baseline,12,12,29-Sep-26,13-Oct-26,29-Sep-26,13-Oct-26,144,144,0,0,0,0,"AB-SUB-B02-2ND-1020, AB-SUB-B02-2ND-1020",HO-1050,0,0%,No,No
0,AB-APP-B02-2ND-1030,Approval for Stairs Conc. Dim.  & RFT DWGs As-Built Drawing (B02) (2nd),Approved Baseline.HO.1.A.P02.B02.SUP.2ndF,Approved Baseline,12,12,29-Sep-26,13-Oct-26,29-Sep-26,13-Oct-26,144,144,0,0,0,0,"AB-SUB-B02-2ND-1030, AB-SUB-B02-2ND-1030",HO-1050,0,0%,No,No
0,,,,,34,34,4-Nov-26,13-Dec-26,4-Nov-26,13-Dec-26,0,92,0,0,0,0,,,0,,,
0,AB-APP-B02-3RD-1000,Approval for Col. & Walls Conc. Dim.  & RFT DWGs As-Built Drawing (B02) (3rd),Approved Baseline.HO.1.A.P02.B02.SUP.3rdF,Approved Baseline,12,12,4-Nov-26,17-Nov-26,4-Nov-26,17-Nov-26,114,114,0,0,0,0,"AB-SUB-B02-3RD-1000, AB-SUB-B02-3RD-1000",HO-1050,0,0%,No,No
0,AB-APP-B02-3RD-1010,Approval for Slabs Conc. Dim.  & RFT DWGs As-Built Drawing (B02) (3rd),Approved Baseline.HO.1.A.P02.B02.SUP.3rdF,Approved Baseline,12,12,30-Nov-26,13-Dec-26,30-Nov-26,13-Dec-26,92,92,0,0,0,0,"AB-SUB-B02-3RD-1010, AB-SUB-B02-3RD-1010",HO-1050,0,0%,No,No
0,AB-APP-B02-3RD-1020,Approval for Beams Conc. Dim.  & RFT DWGs As-Built Drawing (B02) (3rd),Approved Baseline.HO.1.A.P02.B02.SUP.3rdF,Approved Baseline,12,12,30-Nov-26,13-Dec-26,30-Nov-26,13-Dec-26,92,92,0,0,0,0,"AB-SUB-B02-3RD-1020, AB-SUB-B02-3RD-1020",HO-1050,0,0%,No,No
0,AB-APP-B02-3RD-1030,Approval for Stairs Conc. Dim.  & RFT DWGs As-Built Drawing (B02) (3rd),Approved Baseline.HO.1.A.P02.B02.SUP.3rdF,Approved Baseline,12,12,30-Nov-26,13-Dec-26,30-Nov-26,13-Dec-26,92,92,0,0,0,0,"AB-SUB-B02-3RD-1030, AB-SUB-B02-3RD-1030",HO-1050,0,0%,No,No
0,,,,,33,33,4-Jan-27,13-Feb-27,4-Jan-27,13-Feb-27,0,41,0,0,0,0,,,0,,,
0,AB-APP-B02-4TH-1000,Approval for Col. & Walls Conc. Dim.  & RFT DWGs As-Built Drawing (B02) (4th),Approved Baseline.HO.1.A.P02.B02.SUP.4thF,Approved Baseline,12,12,4-Jan-27,18-Jan-27,4-Jan-27,18-Jan-27,62,62,0,0,0,0,"AB-SUB-B02-4TH-1000, AB-SUB-B02-4TH-1000",HO-1050,0,0%,No,No
0,AB-APP-B02-4TH-1010,Approval for Slabs Conc. Dim.  & RFT DWGs As-Built Drawing (B02) (4th),Approved Baseline.HO.1.A.P02.B02.SUP.4thF,Approved Baseline,12,12,31-Jan-27,13-Feb-27,31-Jan-27,13-Feb-27,41,41,0,0,0,0,"AB-SUB-B02-4TH-1010, AB-SUB-B02-4TH-1010",HO-1050,0,0%,No,No
0,AB-APP-B02-4TH-1020,Approval for Beams Conc. Dim.  & RFT DWGs As-Built Drawing (B02) (4th),Approved Baseline.HO.1.A.P02.B02.SUP.4thF,Approved Baseline,12,12,31-Jan-27,13-Feb-27,31-Jan-27,13-Feb-27,41,41,0,0,0,0,"AB-SUB-B02-4TH-1020, AB-SUB-B02-4TH-1020",HO-1050,0,0%,No,No
0,AB-APP-B02-4TH-1030,Approval for Stairs Conc. Dim.  & RFT DWGs As-Built Drawing (B02) (4th),Approved Baseline.HO.1.A.P02.B02.SUP.4thF,Approved Baseline,12,12,31-Jan-27,13-Feb-27,31-Jan-27,13-Feb-27,41,41,0,0,0,0,"AB-SUB-B02-4TH-1030, AB-SUB-B02-4TH-1030",HO-1050,0,0%,No,No
0,,,,,22,22,23-Feb-27,23-Mar-27,23-Feb-27,23-Mar-27,0,11,0,0,0,0,,,0,,,
0,AB-APP-B02-RF-1000,Approval for Col. & Walls Conc. Dim.  & RFT DWGs As-Built Drawing (B02) (RF),Approved Baseline.HO.1.A.P02.B02.SUP.RF,Approved Baseline,12,12,23-Feb-27,8-Mar-27,23-Feb-27,8-Mar-27,21,21,0,0,0,0,"AB-SUB-B02-RF-1000, AB-SUB-B02-RF-1000",HO-1050,0,0%,No,No
0,AB-APP-B02-RF-1010,Approval for Slabs Conc. Dim.  & RFT DWGs As-Built Drawing (B02) (RF),Approved Baseline.HO.1.A.P02.B02.SUP.RF,Approved Baseline,12,12,7-Mar-27,23-Mar-27,7-Mar-27,23-Mar-27,11,11,0,0,0,0,"AB-SUB-B02-RF-1010, AB-SUB-B02-RF-1010",HO-1050,0,0%,No,No
0,AB-APP-B02-RF-1020,Approval for Beams Conc. Dim.  & RFT DWGs As-Built Drawing (B02) (RF),Approved Baseline.HO.1.A.P02.B02.SUP.RF,Approved Baseline,12,12,7-Mar-27,23-Mar-27,7-Mar-27,23-Mar-27,11,11,0,0,0,0,"AB-SUB-B02-RF-1020, AB-SUB-B02-RF-1020",HO-1050,0,0%,No,No
0,,,,,403,403,29-Nov-25,5-Apr-27,29-Nov-25,5-Apr-27,0,0,0,0,0,0,,,0,,,
0,,,,,368,368,10-Jan-26,5-Apr-27,10-Jan-26,5-Apr-27,0,0,0,0,0,0,,,0,,,
0,,,,,108,108,10-Jan-26,21-May-26,10-Jan-26,21-May-26,0,260,0,0,0,0,,,0,,,
0,,,,,12,12,10-Jan-26,22-Jan-26,10-Jan-26,22-Jan-26,0,356,0,0,0,0,,,0,,,
0,AB-APP-B03-REP-1000,Approval for General Replacement Plan & Typical Sections for Replacement / Backfilling DWGs As-Built Drawing (B03),Approved Baseline.HO.1.A.P01.B03.SUB.4,Approved Baseline,12,12,10-Jan-26,22-Jan-26,10-Jan-26,22-Jan-26,356,356,0,0,0,0,"AB-SUB-B03-REP-1000, AB-SUB-B03-REP-1000",HO-1050,0,0%,No,No
0,,,,,36,36,12-Jan-26,23-Feb-26,12-Jan-26,23-Feb-26,0,330,0,0,0,0,,,0,,,
0,AB-APP-B03-FOOT-1000,Approval for PC Raft Conc. Dim. DWGs As-Built Drawing (B03) (footing),Approved Baseline.HO.1.A.P01.B03.SUB.1,Approved Baseline,12,12,12-Jan-26,26-Jan-26,12-Jan-26,26-Jan-26,354,354,0,0,0,0,"AB-SUB-B03-FOOT-1000, AB-SUB-B03-FOOT-1000",HO-1050,0,0%,No,No
0,AB-APP-B03-FOOT-1010,Approval for RC Raft & Footings Conc. Dim. DWGs  (B03) (footing),Approved Baseline.HO.1.A.P01.B03.SUB.1,Approved Baseline,12,12,1-Feb-26,14-Feb-26,1-Feb-26,14-Feb-26,338,338,0,0,0,0,"AB-SUB-B03-FOOT-1010, AB-SUB-B03-FOOT-1010",HO-1050,0,0%,No,No
0,AB-APP-B03-FOOT-1020,Approval for RC Raft & Footings RFT DWGs As-Built Drawing  (B03) (footing),Approved Baseline.HO.1.A.P01.B03.SUB.1,Approved Baseline,12,12,3-Feb-26,16-Feb-26,3-Feb-26,16-Feb-26,336,336,0,0,0,0,"AB-SUB-B03-FOOT-1020, AB-SUB-B03-FOOT-1020",HO-1050,0,0%,No,No
0,AB-APP-B03-FOOT-1030,Approval for  Waterproofing Layout Plan  DWGs As-Built Drawing(B03),Approved Baseline.HO.1.A.P01.B03.SUB.1,Approved Baseline,12,12,10-Feb-26,23-Feb-26,10-Feb-26,23-Feb-26,330,330,0,0,0,0,"AB-SUB-B03-FOOT-1030, AB-SUB-B03-FOOT-1030",HO-1050,0,0%,No,No
0,,,,,68,68,26-Feb-26,21-May-26,26-Feb-26,21-May-26,0,260,0,0,0,0,,,0,,,
0,AB-APP-B03-BAS2-1000,Approval for Col. & Walls Conc. Dim.  & RFT DWGs As-Built Drawing  (B03) (Bas 02),Approved Baseline.HO.1.A.P01.B03.SUB.3,Approved Baseline,12,12,26-Feb-26,11-Mar-26,26-Feb-26,11-Mar-26,316,316,0,0,0,0,"AB-SUB-B03-BAS2-1000, AB-SUB-B03-BAS2-1000",HO-1050,0,0%,No,No
0,AB-APP-B03-BAS2-1010,Approval for Stairs Conc. Dim.  & RFT DWGs As-Built Drawing  (B03) (Bas 02),Approved Baseline.HO.1.A.P01.B03.SUB.3,Approved Baseline,12,12,12-Mar-26,30-Mar-26,12-Mar-26,30-Mar-26,304,304,0,0,0,0,"AB-SUB-B03-BAS2-1010, AB-SUB-B03-BAS2-1010",HO-1050,0,0%,No,No
0,AB-APP-B03-BAS2-1020,Approval for Slabs Conc. Dim.  & RFT DWGs As-Built Drawing  (B03) (Bas 02),Approved Baseline.HO.1.A.P01.B03.SUB.3,Approved Baseline,12,12,15-Mar-26,1-Apr-26,15-Mar-26,1-Apr-26,302,302,0,0,0,0,"AB-SUB-B03-BAS2-1020, AB-SUB-B03-BAS2-1020",HO-1050,0,0%,No,No
0,AB-APP-B03-BAS2-1030,Approval for Beams Conc. Dim.  & RFT DWGs As-Built Drawing  (B03) (Bas 02),Approved Baseline.HO.1.A.P01.B03.SUB.3,Approved Baseline,12,12,15-Mar-26,1-Apr-26,15-Mar-26,1-Apr-26,302,302,0,0,0,0,"AB-SUB-B03-BAS2-1030, AB-SUB-B03-BAS2-1030",HO-1050,0,0%,No,No
0,,,,,16,16,4-May-26,21-May-26,4-May-26,21-May-26,0,260,0,0,0,0,,,0,,,
0,AB-APP-B03-SOG-1000,Approval for S.O.G Conc. Dim. DWGs As-Built Drawing  (B03) (Sog),Approved Baseline.HO.1.A.P01.B03.SUB.3.2,Approved Baseline,12,12,4-May-26,17-May-26,4-May-26,17-May-26,264,264,0,0,0,0,"AB-SUB-B03-SOG-1000, AB-SUB-B03-SOG-1000",HO-1050,0,0%,No,No
0,AB-APP-B03-SOG-1010,Approval for S.O.G RFT DWGs As-Built Drawing  (B03) (Sog),Approved Baseline.HO.1.A.P01.B03.SUB.3.2,Approved Baseline,12,12,9-May-26,21-May-26,9-May-26,21-May-26,260,260,0,0,0,0,"AB-SUB-B03-SOG-1010, AB-SUB-B03-SOG-1010",HO-1050,0,0%,No,No
0,,,,,26,26,8-Apr-26,9-May-26,8-Apr-26,9-May-26,0,271,0,0,0,0,,,0,,,
0,AB-APP-B03-BAS1-1000,Approval for Col. & Walls Conc. Dim.  & RFT DWGs As-Built Drawing  (B03) (Bas 01),Approved Baseline.HO.1.A.P01.B03.SUB.2,Approved Baseline,12,12,8-Apr-26,22-Apr-26,8-Apr-26,22-Apr-26,285,285,0,0,0,0,"AB-SUB-B03-BAS1-1000, AB-SUB-B03-BAS1-1000",HO-1050,0,0%,No,No
0,AB-APP-B03-BAS1-1010,Approval for Stairs Conc. Dim.  & RFT DWGs As-Built Drawing  (B03) (Bas 01),Approved Baseline.HO.1.A.P01.B03.SUB.2,Approved Baseline,12,12,25-Apr-26,7-May-26,25-Apr-26,7-May-26,272,272,0,0,0,0,"AB-SUB-B03-BAS1-1010, AB-SUB-B03-BAS1-1010",HO-1050,0,0%,No,No
0,AB-APP-B03-BAS1-1020,Approval for Slabs Conc. Dim.  & RFT DWGs As-Built Drawing  (B03) (Bas 01),Approved Baseline.HO.1.A.P01.B03.SUB.2,Approved Baseline,12,12,26-Apr-26,9-May-26,26-Apr-26,9-May-26,271,271,0,0,0,0,"AB-SUB-B03-BAS1-1020, AB-SUB-B03-BAS1-1020",HO-1050,0,0%,No,No
0,AB-APP-B03-BAS1-1030,Approval for Beams Conc. Dim.  & RFT DWGs As-Built Drawing  (B03) (Bas 01),Approved Baseline.HO.1.A.P01.B03.SUB.2,Approved Baseline,12,12,26-Apr-26,9-May-26,26-Apr-26,9-May-26,271,271,0,0,0,0,"AB-SUB-B03-BAS1-1030, AB-SUB-B03-BAS1-1030",HO-1050,0,0%,No,No
0,,,,,269,269,12-May-26,5-Apr-27,12-May-26,5-Apr-27,0,0,0,0,0,0,,,0,,,
0,,,,,22,22,12-May-26,10-Jun-26,12-May-26,10-Jun-26,0,247,0,0,0,0,,,0,,,
0,AB-APP-B03-GR-1000,Approval for Col. & Walls Conc. Dim.  & RFT DWGs As-Built Drawing  (B03) (GF),Approved Baseline.HO.1.A.P01.B03.SUP.GF,Approved Baseline,12,12,12-May-26,25-May-26,12-May-26,25-May-26,257,257,0,0,0,0,"AB-SUB-B03-GR-1000, AB-SUB-B03-GR-1000",HO-1050,0,0%,No,No
0,AB-APP-B03-GR-1010,Approval for Slabs Conc. Dim.  & RFT DWGs As-Built Drawing  (B03) (GF),Approved Baseline.HO.1.A.P01.B03.SUP.GF,Approved Baseline,12,12,24-May-26,10-Jun-26,24-May-26,10-Jun-26,247,247,0,0,0,0,"AB-SUB-B03-GR-1010, AB-SUB-B03-GR-1010",HO-1050,0,0%,No,No
0,AB-APP-B03-GR-1020,Approval for Beams Conc. Dim.  & RFT DWGs As-Built Drawing  (B03) (GF),Approved Baseline.HO.1.A.P01.B03.SUP.GF,Approved Baseline,12,12,24-May-26,10-Jun-26,24-May-26,10-Jun-26,247,247,0,0,0,0,"AB-SUB-B03-GR-1020, AB-SUB-B03-GR-1020",HO-1050,0,0%,No,No
0,AB-APP-B03-GR-1030,Approval for Stairs Conc. Dim.  & RFT DWGs As-Built Drawing  (B03) (GF),Approved Baseline.HO.1.A.P01.B03.SUP.GF,Approved Baseline,12,12,24-May-26,10-Jun-26,24-May-26,10-Jun-26,247,247,0,0,0,0,"AB-SUB-B03-GR-1030, AB-SUB-B03-GR-1030",HO-1050,0,0%,No,No
0,,,,,34,34,12-Jul-26,20-Aug-26,12-Jul-26,20-Aug-26,0,188,0,0,0,0,,,0,,,
0,AB-APP-B03-1ST-1000,Approval for Col. & Walls Conc. Dim.  & RFT DWGs As-Built Drawing  (B03) (1st),Approved Baseline.HO.1.A.P01.B03.SUP.1stF,Approved Baseline,12,12,12-Jul-26,26-Jul-26,12-Jul-26,26-Jul-26,210,210,0,0,0,0,"AB-SUB-B03-1ST-1000, AB-SUB-B03-1ST-1000",HO-1050,0,0%,No,No
0,AB-APP-B03-1ST-1010,Approval for Slabs Conc. Dim.  & RFT DWGs As-Built Drawing  (B03) (1st),Approved Baseline.HO.1.A.P01.B03.SUP.1stF,Approved Baseline,12,12,8-Aug-26,20-Aug-26,8-Aug-26,20-Aug-26,188,188,0,0,0,0,"AB-SUB-B03-1ST-1010, AB-SUB-B03-1ST-1010",HO-1050,0,0%,No,No
0,AB-APP-B03-1ST-1020,Approval for Beams Conc. Dim.  & RFT DWGs As-Built Drawing  (B03) (1st),Approved Baseline.HO.1.A.P01.B03.SUP.1stF,Approved Baseline,12,12,8-Aug-26,20-Aug-26,8-Aug-26,20-Aug-26,188,188,0,0,0,0,"AB-SUB-B03-1ST-1020, AB-SUB-B03-1ST-1020",HO-1050,0,0%,No,No
0,AB-APP-B03-1ST-1030,Approval for Stairs Conc. Dim.  & RFT DWGs As-Built Drawing  (B03) (1st),Approved Baseline.HO.1.A.P01.B03.SUP.1stF,Approved Baseline,12,12,8-Aug-26,20-Aug-26,8-Aug-26,20-Aug-26,188,188,0,0,0,0,"AB-SUB-B03-1ST-1030, AB-SUB-B03-1ST-1030",HO-1050,0,0%,No,No
0,,,,,34,34,16-Sep-26,26-Oct-26,16-Sep-26,26-Oct-26,0,133,0,0,0,0,,,0,,,
0,AB-APP-B03-2ND-1000,Approval for Col. & Walls Conc. Dim.  & RFT DWGs As-Built Drawing  (B03) (2nd),Approved Baseline.HO.1.A.P01.B03.SUP.2ndF,Approved Baseline,12,12,16-Sep-26,29-Sep-26,16-Sep-26,29-Sep-26,155,155,0,0,0,0,"AB-SUB-B03-2ND-1000, AB-SUB-B03-2ND-1000",HO-1050,0,0%,No,No
0,AB-APP-B03-2ND-1010,Approval for Slabs Conc. Dim.  & RFT DWGs As-Built Drawing  (B03) (2nd),Approved Baseline.HO.1.A.P01.B03.SUP.2ndF,Approved Baseline,12,12,13-Oct-26,26-Oct-26,13-Oct-26,26-Oct-26,133,133,0,0,0,0,"AB-SUB-B03-2ND-1010, AB-SUB-B03-2ND-1010",HO-1050,0,0%,No,No
0,AB-APP-B03-2ND-1020,Approval for Beams Conc. Dim.  & RFT DWGs As-Built Drawing  (B03) (2nd),Approved Baseline.HO.1.A.P01.B03.SUP.2ndF,Approved Baseline,12,12,13-Oct-26,26-Oct-26,13-Oct-26,26-Oct-26,133,133,0,0,0,0,"AB-SUB-B03-2ND-1020, AB-SUB-B03-2ND-1020",HO-1050,0,0%,No,No
0,AB-APP-B03-2ND-1030,Approval for Stairs Conc. Dim.  & RFT DWGs As-Built Drawing  (B03) (2nd),Approved Baseline.HO.1.A.P01.B03.SUP.2ndF,Approved Baseline,12,12,13-Oct-26,26-Oct-26,13-Oct-26,26-Oct-26,133,133,0,0,0,0,"AB-SUB-B03-2ND-1030, AB-SUB-B03-2ND-1030",HO-1050,0,0%,No,No
0,,,,,34,34,18-Nov-26,27-Dec-26,18-Nov-26,27-Dec-26,0,80,0,0,0,0,,,0,,,
0,AB-APP-B03-3RD-1000,Approval for Col. & Walls Conc. Dim.  & RFT DWGs As-Built Drawing  (B03) (3rd),Approved Baseline.HO.1.A.P01.B03.SUP.3rdF,Approved Baseline,12,12,18-Nov-26,1-Dec-26,18-Nov-26,1-Dec-26,102,102,0,0,0,0,"AB-SUB-B03-3RD-1000, AB-SUB-B03-3RD-1000",HO-1050,0,0%,No,No
0,AB-APP-B03-3RD-1010,Approval for Slabs Conc. Dim.  & RFT DWGs As-Built Drawing  (B03) (3rd),Approved Baseline.HO.1.A.P01.B03.SUP.3rdF,Approved Baseline,12,12,14-Dec-26,27-Dec-26,14-Dec-26,27-Dec-26,80,80,0,0,0,0,"AB-SUB-B03-3RD-1010, AB-SUB-B03-3RD-1010",HO-1050,0,0%,No,No
0,AB-APP-B03-3RD-1020,Approval for Beams Conc. Dim.  & RFT DWGs As-Built Drawing  (B03) (3rd),Approved Baseline.HO.1.A.P01.B03.SUP.3rdF,Approved Baseline,12,12,14-Dec-26,27-Dec-26,14-Dec-26,27-Dec-26,80,80,0,0,0,0,"AB-SUB-B03-3RD-1020, AB-SUB-B03-3RD-1020",HO-1050,0,0%,No,No
0,AB-APP-B03-3RD-1030,Approval for Stairs Conc. Dim.  & RFT DWGs As-Built Drawing  (B03) (3rd),Approved Baseline.HO.1.A.P01.B03.SUP.3rdF,Approved Baseline,12,12,14-Dec-26,27-Dec-26,14-Dec-26,27-Dec-26,80,80,0,0,0,0,"AB-SUB-B03-3RD-1030, AB-SUB-B03-3RD-1030",HO-1050,0,0%,No,No
0,,,,,31,31,21-Jan-27,27-Feb-27,21-Jan-27,27-Feb-27,0,29,0,0,0,0,,,0,,,
0,AB-APP-B03-4TH-1000,Approval for Col. & Walls Conc. Dim.  & RFT DWGs As-Built Drawing  (B03) (4th),Approved Baseline.HO.1.A.P01.B03.SUP.4thF,Approved Baseline,12,12,21-Jan-27,4-Feb-27,21-Jan-27,4-Feb-27,48,48,0,0,0,0,"AB-SUB-B03-4TH-1000, AB-SUB-B03-4TH-1000",HO-1050,0,0%,No,No
0,AB-APP-B03-4TH-1010,Approval for Slabs Conc. Dim.  & RFT DWGs As-Built Drawing  (B03) (4th),Approved Baseline.HO.1.A.P01.B03.SUP.4thF,Approved Baseline,12,12,14-Feb-27,27-Feb-27,14-Feb-27,27-Feb-27,29,29,0,0,0,0,"AB-SUB-B03-4TH-1010, AB-SUB-B03-4TH-1010",HO-1050,0,0%,No,No
0,AB-APP-B03-4TH-1020,Approval for Beams Conc. Dim.  & RFT DWGs As-Built Drawing  (B03) (4th),Approved Baseline.HO.1.A.P01.B03.SUP.4thF,Approved Baseline,12,12,14-Feb-27,27-Feb-27,14-Feb-27,27-Feb-27,29,29,0,0,0,0,"AB-SUB-B03-4TH-1020, AB-SUB-B03-4TH-1020",HO-1050,0,0%,No,No
0,AB-APP-B03-4TH-1030,Approval for Stairs Conc. Dim.  & RFT DWGs As-Built Drawing  (B03) (4th),Approved Baseline.HO.1.A.P01.B03.SUP.4thF,Approved Baseline,12,12,14-Feb-27,27-Feb-27,14-Feb-27,27-Feb-27,29,29,0,0,0,0,"AB-SUB-B03-4TH-1030, AB-SUB-B03-4TH-1030",HO-1050,0,0%,No,No
0,,,,,22,22,8-Mar-27,5-Apr-27,8-Mar-27,5-Apr-27,0,0,0,0,0,0,,,0,,,
0,AB-APP-B03-RF-1000,Approval for Col. & Walls Conc. Dim.  & RFT DWGs As-Built Drawing  (B03) (RF),Approved Baseline.HO.1.A.P01.B03.SUP.RF,Approved Baseline,12,12,8-Mar-27,24-Mar-27,8-Mar-27,24-Mar-27,10,10,0,0,0,0,"AB-SUB-B03-RF-1000, AB-SUB-B03-RF-1000",HO-1050,0,0%,No,No
0,AB-APP-B03-RF-1010,Approval for Slabs Conc. Dim.  & RFT DWGs As-Built Drawing  (B03) (RF),Approved Baseline.HO.1.A.P01.B03.SUP.RF,Approved Baseline,14,14,21-Mar-27,5-Apr-27,21-Mar-27,5-Apr-27,0,0,0,0,0,0,"AB-SUB-B03-RF-1010, AB-SUB-B03-RF-1010",HO-1050,0,0%,Yes,Yes
0,AB-APP-B03-RF-1020,Approval for Beams Conc. Dim.  & RFT DWGs As-Built Drawing  (B03) (RF),Approved Baseline.HO.1.A.P01.B03.SUP.RF,Approved Baseline,14,14,21-Mar-27,5-Apr-27,21-Mar-27,5-Apr-27,0,0,0,0,0,0,"AB-SUB-B03-RF-1020, AB-SUB-B03-RF-1020",HO-1050,0,0%,Yes,Yes
0,,,,,403,403,29-Nov-25,5-Apr-27,29-Nov-25,5-Apr-27,0,0,0,0,0,0,,,0,,,
0,,,,,154,154,29-Nov-25,8-Jun-26,29-Nov-25,8-Jun-26,0,249,0,0,0,0,,,0,,,
0,,,,,12,12,21-Jan-26,4-Feb-26,21-Jan-26,4-Feb-26,0,346,0,0,0,0,,,0,,,
0,AB-APP-B04-REP-1000,Approval for General Replacement Plan & Typical Sections for Replacement / Backfilling DWGs As-Built Drawing (B04),Approved Baseline.HO.1.A.P01.B04.SUB.1,Approved Baseline,12,12,21-Jan-26,4-Feb-26,21-Jan-26,4-Feb-26,346,346,0,0,0,0,"AB-SUB-B04-REP-1000, AB-SUB-B04-REP-1000",HO-1050,0,0%,No,No
0,,,,,33,33,24-Jan-26,3-Mar-26,24-Jan-26,3-Mar-26,0,323,0,0,0,0,,,0,,,
0,AB-APP-B04-FOOT-1000,Approval for PC Raft Conc. Dim. Conc. Dim.  & RFT DWGs As-Built Drawing  (B04) (footing),Approved Baseline.HO.1.A.P01.B04.SUB.F,Approved Baseline,12,12,24-Jan-26,7-Feb-26,24-Jan-26,7-Feb-26,344,344,0,0,0,0,"AB-SUB-B04-FOOT-1000, AB-SUB-B04-FOOT-1000",HO-1050,0,0%,No,No
0,AB-APP-B04-FOOT-1010,Approval for RC Raft & Footings Conc. Dim. Conc. Dim.  & RFT DWGs As-Built Drawing (B04) (footing),Approved Baseline.HO.1.A.P01.B04.SUB.F,Approved Baseline,12,12,8-Feb-26,21-Feb-26,8-Feb-26,21-Feb-26,332,332,0,0,0,0,"AB-SUB-B04-FOOT-1010, AB-SUB-B04-FOOT-1010",HO-1050,0,0%,No,No
0,AB-APP-B04-FOOT-1020,Approval for RC Raft & Footings RFT Conc. Dim.  & RFT DWGs As-Built Drawing (B04) (footing),Approved Baseline.HO.1.A.P01.B04.SUB.F,Approved Baseline,12,12,11-Feb-26,24-Feb-26,11-Feb-26,24-Feb-26,329,329,0,0,0,0,"AB-SUB-B04-FOOT-1020, AB-SUB-B04-FOOT-1020",HO-1050,0,0%,No,No
0,AB-APP-B04-FOOT-1030,Approval for  Waterproofing Layout Plan (B04),Approved Baseline.HO.1.A.P01.B04.SUB.F,Approved Baseline,12,12,18-Feb-26,3-Mar-26,18-Feb-26,3-Mar-26,323,323,0,0,0,0,"AB-SUB-B04-FOOT-1030, AB-SUB-B04-FOOT-1030",HO-1050,0,0%,No,No
0,,,,,154,154,29-Nov-25,8-Jun-26,29-Nov-25,8-Jun-26,0,249,0,0,0,0,,,0,,,
0,AB-APP-B04-BAS2-1000,Approval for Col. & Walls Conc. Dim.  & RFT DWGs As-Built Drawing (B04) (Bas 02),Approved Baseline.HO.1.A.P01.B04.SUB.2ndF,Approved Baseline,12,12,26-Feb-26,11-Mar-26,26-Feb-26,11-Mar-26,316,316,0,0,0,0,"AB-SUB-B04-BAS2-1000, AB-SUB-B04-BAS2-1000",HO-1050,0,0%,No,No
0,AB-APP-B04-BAS2-1010,Approval for Stairs Conc. Dim.  & RFT DWGs As-Built Drawing (B04) (Bas 02),Approved Baseline.HO.1.A.P01.B04.SUB.2ndF,Approved Baseline,12,12,24-Mar-26,6-Apr-26,24-Mar-26,6-Apr-26,298,298,0,0,0,0,"AB-SUB-B04-BAS2-1010, AB-SUB-B04-BAS2-1010",HO-1050,0,0%,No,No
0,AB-APP-B04-BAS2-1020,Approval for Ramps Conc. Dim.  & RFT DWGs As-Built Drawing (B04) (Bas 02),Approved Baseline.HO.1.A.P01.B04.SUB.2ndF,Approved Baseline,12,12,25-Mar-26,7-Apr-26,25-Mar-26,7-Apr-26,297,297,0,0,0,0,"AB-SUB-B04-BAS2-1020, AB-SUB-B04-BAS2-1020",HO-1050,0,0%,No,No
0,AB-APP-B04-BAS2-1030,Approval for Slabs Conc. Dim.  & RFT DWGs As-Built Drawing (B04) (Bas 02),Approved Baseline.HO.1.A.P01.B04.SUB.2ndF,Approved Baseline,12,12,29-Mar-26,11-Apr-26,29-Mar-26,11-Apr-26,294,294,0,0,0,0,"AB-SUB-B04-BAS2-1030, AB-SUB-B04-BAS2-1030",HO-1050,0,0%,No,No
0,AB-APP-B04-BAS2-1040,Approval for Beams Conc. Dim.  & RFT DWGs As-Built Drawing (B04) (Bas 02),Approved Baseline.HO.1.A.P01.B04.SUB.2ndF,Approved Baseline,12,12,29-Mar-26,11-Apr-26,29-Mar-26,11-Apr-26,294,294,0,0,0,0,"AB-SUB-B04-BAS2-1040, AB-SUB-B04-BAS2-1040",HO-1050,0,0%,No,No
0,,,,,55,55,29-Nov-25,2-Feb-26,29-Nov-25,2-Feb-26,0,348,0,0,0,0,,,0,,,
0,AB-APP-B04-WT-1000,Approval for PC Raft Conc. Dim. DWGs As-Built Drawing (B04) (Water Tank),Approved Baseline.HO.1.A.P01.B04.SUB.2ndF.WT,Approved Baseline,12,12,29-Nov-25,11-Dec-25,29-Nov-25,11-Dec-25,391,391,0,0,0,0,"AB-SUB-B04-WT-1000, AB-SUB-B04-WT-1000",HO-1050,0,0%,No,No
0,AB-APP-B04-WT-1010,Approval for RC Raft Conc. Dim. DWGs As-Built Drawing (B04) (Water Tank),Approved Baseline.HO.1.A.P01.B04.SUB.2ndF.WT,Approved Baseline,12,12,17-Dec-25,30-Dec-25,17-Dec-25,30-Dec-25,375,375,0,0,0,0,"AB-SUB-B04-WT-1010, AB-SUB-B04-WT-1010",HO-1050,0,0%,No,No
0,AB-APP-B04-WT-1020,Approval for RC Raft RFT DWGs As-Built Drawing (B04) (Water Tank),Approved Baseline.HO.1.A.P01.B04.SUB.2ndF.WT,Approved Baseline,12,12,23-Dec-25,5-Jan-26,23-Dec-25,5-Jan-26,370,370,0,0,0,0,"AB-SUB-B04-WT-1020, AB-SUB-B04-WT-1020",HO-1050,0,0%,No,No
0,AB-APP-B04-WT-1030,Approval for Col. & Walls DWGs As-Built Drawing (B04) (Water Tank),Approved Baseline.HO.1.A.P01.B04.SUB.2ndF.WT,Approved Baseline,12,12,8-Jan-26,21-Jan-26,8-Jan-26,21-Jan-26,357,357,0,0,0,0,"AB-SUB-B04-WT-1030, AB-SUB-B04-WT-1030",HO-1050,0,0%,No,No
0,AB-APP-B04-WT-1040,Approval for Slabs DWGs As-Built Drawing (B04) (Water Tank),Approved Baseline.HO.1.A.P01.B04.SUB.2ndF.WT,Approved Baseline,12,12,19-Jan-26,2-Feb-26,19-Jan-26,2-Feb-26,348,348,0,0,0,0,"AB-SUB-B04-WT-1040, AB-SUB-B04-WT-1040",HO-1050,0,0%,No,No
0,,,,,12,12,21-May-26,8-Jun-26,21-May-26,8-Jun-26,0,249,0,0,0,0,,,0,,,
0,AB-APP-B04-SOG-1000,Approval for S.O.G Conc. Dim. DWGs As-Built Drawing (B04) (Sog),Approved Baseline.HO.1.A.P01.B04.SUB.2ndF.SOG,Approved Baseline,12,12,21-May-26,8-Jun-26,21-May-26,8-Jun-26,249,249,0,0,0,0,"AB-SUB-B04-SOG-1000, AB-SUB-B04-SOG-1000",HO-1050,0,0%,No,No
0,AB-APP-B04-SOG-1010,Approval for S.O.G RFT DWGs As-Built Drawing (B04) (Sog),Approved Baseline.HO.1.A.P01.B04.SUB.2ndF.SOG,Approved Baseline,12,12,21-May-26,8-Jun-26,21-May-26,8-Jun-26,249,249,0,0,0,0,"AB-SUB-B04-SOG-1010, AB-SUB-B04-SOG-1010",HO-1050,0,0%,No,No
0,,,,,26,26,12-Apr-26,12-May-26,12-Apr-26,12-May-26,0,268,0,0,0,0,,,0,,,
0,AB-APP-B04-BAS1-1000,Approval for Col. & Walls Conc. Dim.  & RFT DWGs As-Built Drawing (B04) (Bas 01),Approved Baseline.HO.1.A.P01.B04.SUB.1stB,Approved Baseline,12,12,12-Apr-26,26-Apr-26,12-Apr-26,26-Apr-26,282,282,0,0,0,0,"AB-SUB-B04-BAS1-1000, AB-SUB-B04-BAS1-1000",HO-1050,0,0%,No,No
0,AB-APP-B04-BAS1-1030,Approval for Slabs Conc. Dim.  & RFT DWGs As-Built Drawing (B04) (Bas 01),Approved Baseline.HO.1.A.P01.B04.SUB.1stB,Approved Baseline,12,12,29-Apr-26,12-May-26,29-Apr-26,12-May-26,268,268,0,0,0,0,"AB-SUB-B04-BAS1-1030, AB-SUB-B04-BAS1-1030",HO-1050,0,0%,No,No
0,AB-APP-B04-BAS1-1040,Approval for Beams Conc. Dim.  & RFT DWGs As-Built Drawing (B04) (Bas 01),Approved Baseline.HO.1.A.P01.B04.SUB.1stB,Approved Baseline,12,12,29-Apr-26,12-May-26,29-Apr-26,12-May-26,268,268,0,0,0,0,"AB-SUB-B04-BAS1-1040, AB-SUB-B04-BAS1-1040",HO-1050,0,0%,No,No
0,AB-APP-B04-BAS1-1010,Approval for Stairs Conc. Dim.  & RFT DWGs As-Built Drawing (B04) (Bas 01),Approved Baseline.HO.1.A.P01.B04.SUB.1stB,Approved Baseline,12,12,29-Apr-26,12-May-26,29-Apr-26,12-May-26,268,268,0,0,0,0,"AB-SUB-B04-BAS1-1010, AB-SUB-B04-BAS1-1010",HO-1050,0,0%,No,No
0,AB-APP-B04-BAS1-1020,Approval for Ramps Conc. Dim.  & RFT DWGs As-Built Drawing (B04) (Bas 01),Approved Baseline.HO.1.A.P01.B04.SUB.1stB,Approved Baseline,12,12,29-Apr-26,12-May-26,29-Apr-26,12-May-26,268,268,0,0,0,0,"AB-SUB-B04-BAS1-1020, AB-SUB-B04-BAS1-1020",HO-1050,0,0%,No,No
0,,,,,267,267,14-May-26,5-Apr-27,14-May-26,5-Apr-27,0,0,0,0,0,0,,,0,,,
0,,,,,22,22,14-May-26,13-Jun-26,14-May-26,13-Jun-26,0,245,0,0,0,0,,,0,,,
0,AB-APP-B04-GR-1000,Approval for Col. & Walls Conc. Dim.  & RFT DWGs As-Built Drawing (B04) (GF),Approved Baseline.HO.1.A.P01.B04.SUP.GF,Approved Baseline,12,12,14-May-26,1-Jun-26,14-May-26,1-Jun-26,255,255,0,0,0,0,"AB-SUB-B04-GR-1000, AB-SUB-B04-GR-1000",HO-1050,0,0%,No,No
0,AB-APP-B04-GR-1010,Approval for Slabs Conc. Dim.  & RFT DWGs As-Built Drawing (B04) (GF),Approved Baseline.HO.1.A.P01.B04.SUP.GF,Approved Baseline,12,12,26-May-26,13-Jun-26,26-May-26,13-Jun-26,245,245,0,0,0,0,"AB-SUB-B04-GR-1010, AB-SUB-B04-GR-1010",HO-1050,0,0%,No,No
0,AB-APP-B04-GR-1020,Approval for Beams Conc. Dim.  & RFT DWGs As-Built Drawing (B04) (GF),Approved Baseline.HO.1.A.P01.B04.SUP.GF,Approved Baseline,12,12,26-May-26,13-Jun-26,26-May-26,13-Jun-26,245,245,0,0,0,0,"AB-SUB-B04-GR-1020, AB-SUB-B04-GR-1020",HO-1050,0,0%,No,No
0,AB-APP-B04-GR-1030,Approval for Stairs Conc. Dim.  & RFT DWGs As-Built Drawing (B04) (GF),Approved Baseline.HO.1.A.P01.B04.SUP.GF,Approved Baseline,12,12,26-May-26,13-Jun-26,26-May-26,13-Jun-26,245,245,0,0,0,0,"AB-SUB-B04-GR-1030, AB-SUB-B04-GR-1030",HO-1050,0,0%,No,No
0,,,,,29,29,18-Jun-26,22-Jul-26,18-Jun-26,22-Jul-26,0,212,0,0,0,0,,,0,,,
0,AB-APP-B04-1ST-1000,Approval for Col. & Walls Conc. Dim.  & RFT DWGs As-Built Drawing (B04) (1st),Approved Baseline.HO.1.A.P01.B04.SUP.1stF,Approved Baseline,12,12,18-Jun-26,2-Jul-26,18-Jun-26,2-Jul-26,229,229,0,0,0,0,"AB-SUB-B04-1ST-1000, AB-SUB-B04-1ST-1000",HO-1050,0,0%,No,No
0,AB-APP-B04-1ST-1010,Approval for Slabs Conc. Dim.  & RFT DWGs As-Built Drawing (B04) (1st),Approved Baseline.HO.1.A.P01.B04.SUP.1stF,Approved Baseline,12,12,9-Jul-26,22-Jul-26,9-Jul-26,22-Jul-26,212,212,0,0,0,0,"AB-SUB-B04-1ST-1010, AB-SUB-B04-1ST-1010",HO-1050,0,0%,No,No
0,AB-APP-B04-1ST-1020,Approval for Beams Conc. Dim.  & RFT DWGs As-Built Drawing (B04) (1st),Approved Baseline.HO.1.A.P01.B04.SUP.1stF,Approved Baseline,12,12,9-Jul-26,22-Jul-26,9-Jul-26,22-Jul-26,212,212,0,0,0,0,"AB-SUB-B04-1ST-1020, AB-SUB-B04-1ST-1020",HO-1050,0,0%,No,No
0,AB-APP-B04-1ST-1030,Approval for Stairs Conc. Dim.  & RFT DWGs As-Built Drawing (B04) (1st),Approved Baseline.HO.1.A.P01.B04.SUP.1stF,Approved Baseline,12,12,9-Jul-26,22-Jul-26,9-Jul-26,22-Jul-26,212,212,0,0,0,0,"AB-SUB-B04-1ST-1030, AB-SUB-B04-1ST-1030",HO-1050,0,0%,No,No
0,,,,,29,29,30-Jul-26,2-Sep-26,30-Jul-26,2-Sep-26,0,178,0,0,0,0,,,0,,,
0,AB-APP-B04-2ND-1000,Approval for Col. & Walls Conc. Dim.  & RFT DWGs As-Built Drawing (B04) (2nd),Approved Baseline.HO.1.A.P01.B04.SUP.2ndF,Approved Baseline,12,12,30-Jul-26,12-Aug-26,30-Jul-26,12-Aug-26,195,195,0,0,0,0,"AB-SUB-B04-2ND-1000, AB-SUB-B04-2ND-1000",HO-1050,0,0%,No,No
0,AB-APP-B04-2ND-1010,Approval for Slabs Conc. Dim.  & RFT DWGs As-Built Drawing (B04) (2nd),Approved Baseline.HO.1.A.P01.B04.SUP.2ndF,Approved Baseline,12,12,19-Aug-26,2-Sep-26,19-Aug-26,2-Sep-26,178,178,0,0,0,0,"AB-SUB-B04-2ND-1010, AB-SUB-B04-2ND-1010",HO-1050,0,0%,No,No
0,AB-APP-B04-2ND-1020,Approval for Beams Conc. Dim.  & RFT DWGs As-Built Drawing (B04) (2nd),Approved Baseline.HO.1.A.P01.B04.SUP.2ndF,Approved Baseline,12,12,19-Aug-26,2-Sep-26,19-Aug-26,2-Sep-26,178,178,0,0,0,0,"AB-SUB-B04-2ND-1020, AB-SUB-B04-2ND-1020",HO-1050,0,0%,No,No
0,AB-APP-B04-2ND-1030,Approval for Stairs Conc. Dim.  & RFT DWGs As-Built Drawing (B04) (2nd),Approved Baseline.HO.1.A.P01.B04.SUP.2ndF,Approved Baseline,12,12,19-Aug-26,2-Sep-26,19-Aug-26,2-Sep-26,178,178,0,0,0,0,"AB-SUB-B04-2ND-1030, AB-SUB-B04-2ND-1030",HO-1050,0,0%,No,No
0,,,,,29,29,9-Sep-26,13-Oct-26,9-Sep-26,13-Oct-26,0,144,0,0,0,0,,,0,,,
0,AB-APP-B04-3TH-1000,Approval for Col. & Walls Conc. Dim.  & RFT DWGs As-Built Drawing (B04) (3rd),Approved Baseline.HO.1.A.P01.B04.SUP.3rdF,Approved Baseline,12,12,9-Sep-26,22-Sep-26,9-Sep-26,22-Sep-26,161,161,0,0,0,0,"AB-SUB-B04-3RD-1000, AB-SUB-B04-3RD-1000",HO-1050,0,0%,No,No
0,AB-APP-B04-3TH-1010,Approval for Slabs Conc. Dim.  & RFT DWGs As-Built Drawing (B04) (3rd),Approved Baseline.HO.1.A.P01.B04.SUP.3rdF,Approved Baseline,12,12,29-Sep-26,13-Oct-26,29-Sep-26,13-Oct-26,144,144,0,0,0,0,"AB-SUB-B04-3RD-1010, AB-SUB-B04-3RD-1010",HO-1050,0,0%,No,No
0,AB-APP-B04-3TH-1020,Approval for Beams Conc. Dim.  & RFT DWGs As-Built Drawing (B04) (3rd),Approved Baseline.HO.1.A.P01.B04.SUP.3rdF,Approved Baseline,12,12,29-Sep-26,13-Oct-26,29-Sep-26,13-Oct-26,144,144,0,0,0,0,"AB-SUB-B04-3RD-1020, AB-SUB-B04-3RD-1020",HO-1050,0,0%,No,No
0,AB-APP-B04-3TH-1030,Approval for Stairs Conc. Dim.  & RFT DWGs As-Built Drawing (B04) (3rd),Approved Baseline.HO.1.A.P01.B04.SUP.3rdF,Approved Baseline,12,12,29-Sep-26,13-Oct-26,29-Sep-26,13-Oct-26,144,144,0,0,0,0,"AB-SUB-B04-3RD-1030, AB-SUB-B04-3RD-1030",HO-1050,0,0%,No,No
0,,,,,28,28,18-Oct-26,18-Nov-26,18-Oct-26,18-Nov-26,0,113,0,0,0,0,,,0,,,
0,AB-APP-B04-4TH-1000,Approval for Col. & Walls Conc. Dim.  & RFT DWGs As-Built Drawing (B04) (4th),Approved Baseline.HO.1.A.P01.B04.SUP.4thF,Approved Baseline,12,12,18-Oct-26,31-Oct-26,18-Oct-26,31-Oct-26,129,129,0,0,0,0,"AB-SUB-B04-4TH-1000, AB-SUB-B04-4TH-1000",HO-1050,0,0%,No,No
0,AB-APP-B04-4TH-1010,Approval for Slabs Conc. Dim.  & RFT DWGs As-Built Drawing (B04) (4th),Approved Baseline.HO.1.A.P01.B04.SUP.4thF,Approved Baseline,12,12,5-Nov-26,18-Nov-26,5-Nov-26,18-Nov-26,113,113,0,0,0,0,"AB-SUB-B04-4TH-1010, AB-SUB-B04-4TH-1010",HO-1050,0,0%,No,No
0,AB-APP-B04-4TH-1020,Approval for Beams Conc. Dim.  & RFT DWGs As-Built Drawing (B04) (4th),Approved Baseline.HO.1.A.P01.B04.SUP.4thF,Approved Baseline,12,12,5-Nov-26,18-Nov-26,5-Nov-26,18-Nov-26,113,113,0,0,0,0,"AB-SUB-B04-4TH-1020, AB-SUB-B04-4TH-1020",HO-1050,0,0%,No,No
0,AB-APP-B04-4TH-1030,Approval for Stairs Conc. Dim.  & RFT DWGs As-Built Drawing (B04) (4th),Approved Baseline.HO.1.A.P01.B04.SUP.4thF,Approved Baseline,12,12,5-Nov-26,18-Nov-26,5-Nov-26,18-Nov-26,113,113,0,0,0,0,"AB-SUB-B04-4TH-1030, AB-SUB-B04-4TH-1030",HO-1050,0,0%,No,No
0,,,,,26,26,24-Nov-26,23-Dec-26,24-Nov-26,23-Dec-26,0,83,0,0,0,0,,,0,,,
0,AB-APP-B04-5TH-1000,Approval for Col. & Walls Conc. Dim.  & RFT DWGs As-Built Drawing (B04) (5th),Approved Baseline.HO.1.A.P01.B04.SUP.5thF,Approved Baseline,12,12,24-Nov-26,7-Dec-26,24-Nov-26,7-Dec-26,97,97,0,0,0,0,"AB-SUB-B04-5TH-1000, AB-SUB-B04-5TH-1000",HO-1050,0,0%,No,No
0,AB-APP-B04-5TH-1010,Approval for Slabs Conc. Dim.  & RFT DWGs As-Built Drawing (B04) (5th),Approved Baseline.HO.1.A.P01.B04.SUP.5thF,Approved Baseline,12,12,10-Dec-26,23-Dec-26,10-Dec-26,23-Dec-26,83,83,0,0,0,0,"AB-SUB-B04-5TH-1010, AB-SUB-B04-5TH-1010",HO-1050,0,0%,No,No
0,AB-APP-B04-5TH-1020,Approval for Beams Conc. Dim.  & RFT DWGs As-Built Drawing (B04) (5th),Approved Baseline.HO.1.A.P01.B04.SUP.5thF,Approved Baseline,12,12,10-Dec-26,23-Dec-26,10-Dec-26,23-Dec-26,83,83,0,0,0,0,"AB-SUB-B04-5TH-1020, AB-SUB-B04-5TH-1020",HO-1050,0,0%,No,No
0,AB-APP-B04-5TH-1030,Approval for Stairs Conc. Dim.  & RFT DWGs As-Built Drawing (B04) (5th),Approved Baseline.HO.1.A.P01.B04.SUP.5thF,Approved Baseline,12,12,10-Dec-26,23-Dec-26,10-Dec-26,23-Dec-26,83,83,0,0,0,0,"AB-SUB-B04-5TH-1030, AB-SUB-B04-5TH-1030",HO-1050,0,0%,No,No
0,,,,,24,24,26-Dec-26,23-Jan-27,26-Dec-26,23-Jan-27,0,58,0,0,0,0,,,0,,,
0,AB-APP-B04-6TH-1000,Approval for Col. & Walls Conc. Dim.  & RFT DWGs As-Built Drawing (B04) (6th),Approved Baseline.HO.1.A.P01.B04.SUP.6thF,Approved Baseline,12,12,26-Dec-26,9-Jan-27,26-Dec-26,9-Jan-27,70,70,0,0,0,0,"AB-SUB-B04-6TH-1000, AB-SUB-B04-6TH-1000",HO-1050,0,0%,No,No
0,AB-APP-B04-6TH-1030,Approval for Stairs Conc. Dim.  & RFT DWGs As-Built Drawing (B04) (6th),Approved Baseline.HO.1.A.P01.B04.SUP.6thF,Approved Baseline,12,12,4-Jan-27,18-Jan-27,4-Jan-27,18-Jan-27,62,62,0,0,0,0,"AB-SUB-B04-6TH-1030, AB-SUB-B04-6TH-1030",HO-1050,0,0%,No,No
0,AB-APP-B04-6TH-1010,Approval for Slabs Conc. Dim.  & RFT DWGs As-Built Drawing (B04) (6th),Approved Baseline.HO.1.A.P01.B04.SUP.6thF,Approved Baseline,12,12,10-Jan-27,23-Jan-27,10-Jan-27,23-Jan-27,58,58,0,0,0,0,"AB-SUB-B04-6TH-1010, AB-SUB-B04-6TH-1010",HO-1050,0,0%,No,No
0,AB-APP-B04-6TH-1020,Approval for Beams Conc. Dim.  & RFT DWGs As-Built Drawing (B04) (6th),Approved Baseline.HO.1.A.P01.B04.SUP.6thF,Approved Baseline,12,12,10-Jan-27,23-Jan-27,10-Jan-27,23-Jan-27,58,58,0,0,0,0,"AB-SUB-B04-6TH-1020, AB-SUB-B04-6TH-1020",HO-1050,0,0%,No,No
0,,,,,23,23,26-Jan-27,21-Feb-27,26-Jan-27,21-Feb-27,0,34,0,0,0,0,,,0,,,
0,AB-APP-B04-7TH-1000,Approval for Col. & Walls Conc. Dim.  & RFT DWGs As-Built Drawing (B04) (7th),Approved Baseline.HO.1.A.P01.B04.SUP.7thF,Approved Baseline,12,12,26-Jan-27,8-Feb-27,26-Jan-27,8-Feb-27,45,45,0,0,0,0,"AB-SUB-B04-7TH-1000, AB-SUB-B04-7TH-1000",HO-1050,0,0%,No,No
0,AB-APP-B04-7TH-1010,Approval for Slabs Conc. Dim.  & RFT DWGs As-Built Drawing (B04) (7th),Approved Baseline.HO.1.A.P01.B04.SUP.7thF,Approved Baseline,12,12,8-Feb-27,21-Feb-27,8-Feb-27,21-Feb-27,34,34,0,0,0,0,"AB-SUB-B04-7TH-1010, AB-SUB-B04-7TH-1010",HO-1050,0,0%,No,No
0,AB-APP-B04-7TH-1020,Approval for Beams Conc. Dim.  & RFT DWGs As-Built Drawing (B04) (7th),Approved Baseline.HO.1.A.P01.B04.SUP.7thF,Approved Baseline,12,12,8-Feb-27,21-Feb-27,8-Feb-27,21-Feb-27,34,34,0,0,0,0,"AB-SUB-B04-7TH-1020, AB-SUB-B04-7TH-1020",HO-1050,0,0%,No,No
0,AB-APP-B04-7TH-1030,Approval for Stairs Conc. Dim.  & RFT DWGs As-Built Drawing (B04) (7th),Approved Baseline.HO.1.A.P01.B04.SUP.7thF,Approved Baseline,12,12,8-Feb-27,21-Feb-27,8-Feb-27,21-Feb-27,34,34,0,0,0,0,"AB-SUB-B04-7TH-1030, AB-SUB-B04-7TH-1030",HO-1050,0,0%,No,No
0,,,,,21,21,23-Feb-27,22-Mar-27,23-Feb-27,22-Mar-27,0,12,0,0,0,0,,,0,,,
0,AB-APP-B04-8TH-1000,Approval for Col. & Walls Conc. Dim.  & RFT DWGs As-Built Drawing (B04) (8th),Approved Baseline.HO.1.A.P01.B04.SUP.8thF,Approved Baseline,12,12,23-Feb-27,8-Mar-27,23-Feb-27,8-Mar-27,21,21,0,0,0,0,"AB-SUB-B04-8TH-1000, AB-SUB-B04-8TH-1000",HO-1050,0,0%,No,No
0,AB-APP-B04-8TH-1010,Approval for Slabs Conc. Dim.  & RFT DWGs As-Built Drawing (B04) (8th),Approved Baseline.HO.1.A.P01.B04.SUP.8thF,Approved Baseline,12,12,6-Mar-27,22-Mar-27,6-Mar-27,22-Mar-27,12,12,0,0,0,0,"AB-SUB-B04-8TH-1010, AB-SUB-B04-8TH-1010",HO-1050,0,0%,No,No
0,AB-APP-B04-8TH-1020,Approval for Beams Conc. Dim.  & RFT DWGs As-Built Drawing (B04) (8th),Approved Baseline.HO.1.A.P01.B04.SUP.8thF,Approved Baseline,12,12,6-Mar-27,22-Mar-27,6-Mar-27,22-Mar-27,12,12,0,0,0,0,"AB-SUB-B04-8TH-1020, AB-SUB-B04-8TH-1020",HO-1050,0,0%,No,No
0,AB-APP-B04-8TH-1030,Approval for Stairs Conc. Dim.  & RFT DWGs As-Built Drawing (B04) (8th),Approved Baseline.HO.1.A.P01.B04.SUP.8thF,Approved Baseline,12,12,6-Mar-27,22-Mar-27,6-Mar-27,22-Mar-27,12,12,0,0,0,0,"AB-SUB-B04-8TH-1030, AB-SUB-B04-8TH-1030",HO-1050,0,0%,No,No
0,,,,,18,18,16-Mar-27,5-Apr-27,16-Mar-27,5-Apr-27,0,0,0,0,0,0,,,0,,,
0,AB-APP-B04-RF-1000,Approval for Col. & Walls Conc. Dim.  & RFT DWGs As-Built Drawing (B04) (RF),Approved Baseline.HO.1.A.P01.B04.SUP.RF,Approved Baseline,12,12,16-Mar-27,29-Mar-27,16-Mar-27,29-Mar-27,6,6,0,0,0,0,"AB-SUB-B04-RF-1000, AB-SUB-B04-RF-1000",HO-1050,0,0%,No,No
0,AB-APP-B04-RF-1010,Approval for Slabs Conc. Dim.  & RFT DWGs As-Built Drawing (B04) (RF),Approved Baseline.HO.1.A.P01.B04.SUP.RF,Approved Baseline,12,12,23-Mar-27,5-Apr-27,23-Mar-27,5-Apr-27,0,0,0,0,0,0,"AB-SUB-B04-RF-1010, AB-SUB-B04-RF-1010",HO-1050,0,0%,Yes,Yes
0,AB-APP-B04-RF-1020,Approval for  Beams Conc. Dim.  & RFT DWGs As-Built Drawing (B04) (RF),Approved Baseline.HO.1.A.P01.B04.SUP.RF,Approved Baseline,12,12,23-Mar-27,5-Apr-27,23-Mar-27,5-Apr-27,0,0,0,0,0,0,"AB-SUB-B04-RF-1020, AB-SUB-B04-RF-1020",HO-1050,0,0%,Yes,Yes
0,,,,,36,36,6-Mar-27,10-Apr-27,6-Mar-27,10-Apr-27,0,0,0,0,0,0,,,0,,,
0,HO-1020,Snag list for B02,Approved Baseline.HO.2,Approved Baseline,10,10,6-Mar-27,20-Mar-27,6-Mar-27,20-Mar-27,16,16,0,0,0,0,"CON-B02-RF-1080, CON-B02-SOG-1060",HO-1000,0,0%,No,No
0,HO-1030,Snag list for B03,Approved Baseline.HO.2,Approved Baseline,10,10,14-Mar-27,24-Mar-27,14-Mar-27,24-Mar-27,12,12,0,0,0,0,"CON-B03-RF-1080, CON-B03-SOG-1060",HO-1000,0,0%,No,No
0,HO-1010,Snag list for B01,Approved Baseline.HO.2,Approved Baseline,10,10,28-Mar-27,7-Apr-27,28-Mar-27,7-Apr-27,0,0,0,0,0,0,"CON-B01-9TH-1080, CON-B01-SOG-1060",HO-1000,0,0%,Yes,Yes
0,HO-1040,Snag list for B04,Approved Baseline.HO.2,Approved Baseline,10,10,28-Mar-27,7-Apr-27,28-Mar-27,7-Apr-27,0,0,0,0,0,0,"CON-B04-RF-1080, CON-B04-SOG-1060",HO-1000,0,0%,Yes,Yes
0,HO-1050,Snag list for As-Built,Approved Baseline.HO.2,Approved Baseline,2,2,6-Apr-27,7-Apr-27,6-Apr-27,7-Apr-27,0,0,0,0,0,0,"AB-APP-B01-FOOT-1000, AB-APP-B01-FOOT-1020, AB-APP-B01-FOOT-1030, AB-APP-B02-FOOT-1000, AB-APP-B02-FOOT-1010, AB-APP-B02-FOOT-1020, AB-APP-B02-BAS2-1000, AB-APP-B02-BAS2-1020, AB-APP-B02-BAS2-1030, AB-APP-B02-BAS2-1010, AB-APP-B01-BAS2-1000, AB-APP-B01-BAS2-1030, AB-APP-B01-BAS2-1040, AB-APP-B01-BAS2-1010, AB-APP-B01-BAS2-1020, AB-APP-B02-BAS1-1000, AB-APP-B02-BAS1-1020, AB-APP-B02-BAS1-1030, AB-APP-B02-BAS1-1010, AB-APP-B01-BAS1-1000, AB-APP-B01-BAS1-1020, AB-APP-B01-BAS1-1030, AB-APP-B01-BAS1-1010, AB-APP-B01-BAS1-1040, AB-APP-B02-GR-1000, AB-APP-B02-GR-1020, AB-APP-B02-GR-1030, AB-APP-B02-GR-1010, AB-APP-B01-GR-1000, AB-APP-B01-GR-1020, AB-APP-B01-GR-1030, AB-APP-B01-GR-1010, AB-APP-B02-1ST-1000, AB-APP-B02-1ST-1010, AB-APP-B02-1ST-1020, AB-APP-B02-1ST-1030, AB-APP-B02-2ND-1000, AB-APP-B02-2ND-1010, AB-APP-B02-2ND-1020, AB-APP-B02-2ND-1030, AB-APP-B02-3RD-1000, AB-APP-B02-3RD-1010, AB-APP-B02-3RD-1020, AB-APP-B02-3RD-1030, AB-APP-B02-4TH-1000, AB-APP-B02-4TH-1010, AB-APP-B02-4TH-1020, AB-APP-B02-4TH-1030, AB-APP-B01-1ST-1000, AB-APP-B01-1ST-1010, AB-APP-B01-1ST-1020, AB-APP-B01-1ST-1030, AB-APP-B01-2ND-1000, AB-APP-B01-2ND-1010, AB-APP-B01-2ND-1020, AB-APP-B01-2ND-1030, AB-APP-B01-3RD-1000, AB-APP-B01-3RD-1010, AB-APP-B01-3RD-1020, AB-APP-B01-3RD-1030, AB-APP-B01-4TH-1000, AB-APP-B01-4TH-1010, AB-APP-B01-4TH-1020, AB-APP-B01-4TH-1030, AB-APP-B01-5TH-1000, AB-APP-B01-5TH-1010, AB-APP-B01-5TH-1020, AB-APP-B01-5TH-1030, AB-APP-B01-6TH-1000, AB-APP-B01-6TH-1010, AB-APP-B01-6TH-1020, AB-APP-B01-6TH-1030, AB-APP-B01-7TH-1000, AB-APP-B01-7TH-1010, AB-APP-B01-7TH-1020, AB-APP-B01-7TH-1030, AB-APP-B01-8TH-1000, AB-APP-B01-8TH-1010, AB-APP-B01-8TH-1020, AB-APP-B01-8TH-1030, AB-APP-B02-RF-1000, AB-APP-B02-RF-1010, AB-APP-B02-RF-1020, AB-APP-B01-RF-1000, AB-APP-B01-RF-1010, AB-APP-B01-RF-1020, AB-APP-B03-FOOT-1000, AB-APP-B03-FOOT-1010, AB-APP-B03-FOOT-1020, AB-APP-B04-FOOT-1000, AB-APP-B04-FOOT-1010, AB-APP-B04-FOOT-1020, AB-APP-B03-BAS2-1000, AB-APP-B03-BAS2-1020, AB-APP-B03-BAS2-1030, AB-APP-B03-BAS2-1010, AB-APP-B04-BAS2-1000, AB-APP-B04-BAS2-1030, AB-APP-B04-BAS2-1040, AB-APP-B04-BAS2-1010, AB-APP-B04-BAS2-1020, AB-APP-B03-BAS1-1000, AB-APP-B03-BAS1-1020, AB-APP-B03-BAS1-1030, AB-APP-B03-BAS1-1010, AB-APP-B04-BAS1-1000, AB-APP-B04-BAS1-1030, AB-APP-B04-BAS1-1040, AB-APP-B04-BAS1-1010, AB-APP-B04-BAS1-1020, AB-APP-B04-GR-1000, AB-APP-B04-GR-1010, AB-APP-B04-GR-1020, AB-APP-B04-GR-1030, AB-APP-B03-GR-1000, AB-APP-B03-GR-1010, AB-APP-B03-GR-1020, AB-APP-B03-GR-1030, AB-APP-B04-1ST-1000, AB-APP-B04-1ST-1010, AB-APP-B04-1ST-1020, AB-APP-B04-1ST-1030, AB-APP-B04-2ND-1000, AB-APP-B04-2ND-1010, AB-APP-B04-2ND-1020, AB-APP-B04-2ND-1030, AB-APP-B04-3TH-1000, AB-APP-B04-3TH-1010, AB-APP-B04-3TH-1020, AB-APP-B04-3TH-1030, AB-APP-B04-4TH-1000, AB-APP-B04-4TH-1010, AB-APP-B04-4TH-1020, AB-APP-B04-4TH-1030, AB-APP-B04-5TH-1000, AB-APP-B04-5TH-1010, AB-APP-B04-5TH-1020, AB-APP-B04-5TH-1030, AB-APP-B04-6TH-1000, AB-APP-B04-6TH-1010, AB-APP-B04-6TH-1020, AB-APP-B04-6TH-1030, AB-APP-B04-7TH-1000, AB-APP-B04-7TH-1010, AB-APP-B04-7TH-1020, AB-APP-B04-7TH-1030, AB-APP-B04-8TH-1000, AB-APP-B04-8TH-1010, AB-APP-B04-8TH-1020, AB-APP-B04-8TH-1030, AB-APP-B03-1ST-1000, AB-APP-B03-1ST-1010, AB-APP-B03-1ST-1020, AB-APP-B03-1ST-1030, AB-APP-B03-2ND-1000, AB-APP-B03-2ND-1010, AB-APP-B03-2ND-1020, AB-APP-B03-2ND-1030, AB-APP-B03-3RD-1000, AB-APP-B03-3RD-1010, AB-APP-B03-3RD-1020, AB-APP-B03-3RD-1030, AB-APP-B03-4TH-1000, AB-APP-B03-4TH-1010, AB-APP-B03-4TH-1020, AB-APP-B03-4TH-1030, AB-APP-B04-RF-1000, AB-APP-B04-RF-1010, AB-APP-B04-RF-1020, AB-APP-B03-RF-1000, AB-APP-B03-RF-1010, AB-APP-B03-RF-1020, AB-APP-B01-SOG-1000, AB-APP-B01-SOG-1010, AB-APP-B02-SOG-1000, AB-APP-B02-SOG-1010, AB-APP-B03-SOG-1000, AB-APP-B03-SOG-1010, AB-APP-B04-SOG-1000, AB-APP-B04-SOG-1010, AB-APP-B04-WT-1000, AB-APP-B04-WT-1010, AB-APP-B04-WT-1030, AB-APP-B04-WT-1040, AB-APP-B04-WT-1020, AB-APP-B01-REP-1000, AB-APP-B02-REP-1000, AB-APP-B03-REP-1000, AB-APP-B04-REP-1000, AB-APP-B03-FOOT-1030, AB-APP-B04-FOOT-1030, AB-APP-B01-FOOT-1010, AB-APP-B02-FOOT-1030",HO-1000,0,0%,Yes,Yes
0,HO-1000,Demobilization,Approved Baseline.HO.2,Approved Baseline,2,2,8-Apr-27,10-Apr-27,8-Apr-27,10-Apr-27,0,0,0,0,0,0,"HO-1030, HO-1020, HO-1010, HO-1040, HO-1050",KD-MS-1050,0,0%,Yes,Yes
