Ref No,Date (Submission | Reply | Delay beyond 10d),Type,Subject,Main Purpose,Key Requests,Scope Impact,Responsibility,Activity ID,Activity Name,Start Dependency,Sequence Impact,Commercial Impact,Risk Type,Risk Owner,Delay Risk,EOT Potential,Claim Strength,Required Actions
RFI 001 / BD-CW-SAMCO-PCO-RFI-MECH-00001-R00,Submitted 16-Feb-2026; replied 29-Mar-2026; review duration 41.0 days; delay beyond 10d = 31.0 days,RFI delay / design coordination,Sump pit dimensions and associated coordination items,Obtain consultant confirmation before continuing embedded MEP and raft works,Confirm main sump pit dimensions; confirm domestic tank pit depth; confirm vortex plate level adjustment; confirm straight drain pipe routing,MEP/structural coordination; possible adjustment to sump pit details and pipe routing,Consultant/Designer for clarification; Contractor for timely RFI and execution after reply,CON-B04-WT-1070,RFT for RC Raft (B04) (Water Tank),"Reply required before installing sump pit boxes, earthing network, and casting raft concrete",High - embedded items must be resolved before concrete pour,"Possible prolongation, disruption, and rework if clarification changes executed works; no direct VO unless instruction changes scope",RFI response delay,Employer/Consultant for late clarification; Contractor for proof and mitigation,High,Moderate to High if activity is on critical path and notices were preserved,"Moderate to Strong, subject to programme linkage and monthly claim account","Issue/maintain delay notice; link RFI reply delay to programme activities; include in monthly claim account; keep transmittals, reply, photos, inspection requests, and pour dates"
RFI 002 / BD-CW-SAMCO-PCO-RFI-MECH-00002-R00,Submitted 17-Feb-2026; replied 18-Mar-2026; review duration 29.0 days; delay beyond 10d = 19.0 days,RFI delay / design coordination,"Pump room coordination issues: crane clearance, openings, updated design, and staircase",Clarify whether pump room arrangement is buildable and whether MEP openings/design information are final,"Confirm crane clearance and pump installation feasibility; provide/confirm exhaust, fresh air, fuel tank, and fire alarm openings; provide latest pump room design/Revit; confirm staircase coordination","MEP/structural/interface coordination; possible openings or sequencing impact, but consultant reply instructed proceeding without changes",Consultant/Designer for confirmation; Contractor for coordination and proceeding after reply,CON-B04-WT-1110,RFT for Walls (B04) (Water Tank),"Reply required before crane anchors, sleeves/openings coordination, reinforcement closure, and casting",Medium to High - reply may control slab/column/pump room sequence,Possible disruption or resequencing; limited extra payment unless instruction changes scope or openings are shifted to others,RFI response delay,Employer/Consultant for late reply; Contractor for mitigation and coordination records,Medium to High,Moderate if critical path and no alternative workfront existed,"Moderate - late reply exists, but consultant response says dimensions are adequate and proceed",Record response delay; show exact affected activities; update programme; reserve rights for any late coordinated openings or rework
RFI 003,Submitted 10-Mar-2026; replied 07-Apr-2026; review duration 28.0 days; delay beyond 10d = 18.0 days,RFI delay / design coordination,Sump pit configuration and penetrating pipe levels for B2/B3 area,Resolve discrepancy between structural and mechanical sump pit arrangements and missing pipe sections/levels,"Clarify whether 2-compartment or 3-compartment sump pit governs; confirm dimensions; provide sections/levels for inlet pipes, sand trap pipes, sump pit connections, and related penetrations","MEP/structural coordination; potential change to sump pit compartments, dimensions, sleeves, and pipe levels",Consultant/Designer for design clarification; Contractor for coordination before reinforcement/casting,CON-B01-FOOT-1050,RFT for RC Raft & Footings (B01) (footing),Final sump pit and penetration details required before embedded MEP and raft casting,High - unresolved penetrations can block reinforcement closure and concrete casting,Potential prolongation and rework if late details change already approved shop drawings; variation possible only if change is instructed,RFI response delay,Employer/Consultant for late/missing design data; Contractor for timely RFI and evidence,High,Moderate to High if linked to critical raft activities,"Moderate to Strong, depending on proof that works could not proceed safely without reply","Keep approved structural drawings, mechanical package, shop drawing comments, RFI, reply, and delayed activity records; include in monthly claim/variation account"
RFI 005,Submitted 10-Mar-2026; replied 05-Apr-2026; review duration 26.0 days; delay beyond 10d = 16.0 days,RFI delay / design coordination,Latest infrastructure package clarifications affecting tank and retaining wall penetrations,"Confirm final levels, diameters, locations, and connection details before sleeves/puddle flanges and external works",Confirm irrigation line level/location; confirm 315 mm firefighting line level and whether new/revised; confirm wall penetration requirements; clarify drainage invert conflicts; confirm tank filling water line diameter/location/level,"Possible new/revised MEP/infrastructure interfaces; affects sleeves, puddle flanges, retaining wall penetrations, external excavation, and backfill",Consultant/Designer/Employer MEP team for clarification; Contractor for timely coordination and execution after reply,CON-B04-WT-1110,RFT for Walls (B04) (Water Tank),"Reply required before fixing wall penetrations, closing shuttering, casting wall side 2, and external pipe installation",High - wall penetrations must be coordinated before closing/casting and backfill,"Possible prolongation, abortive works, and rework if late infrastructure design changes sleeve sizes/levels; variation possible if new scope is confirmed",RFI response delay,Employer/Consultant for late infrastructure clarification; Contractor for proof and mitigation,High,Moderate to High if wall/external works are on critical path,"Moderate to Strong, especially where latest package introduced new or unclear lines",Issue/maintain delay and variation notices; compare old vs latest package; record sleeve/puddle flange impacts; update programme and monthly claim account
