Activity ID,Activity Name,Resource ID,Register Building / Zone Allocation,Drive Activity Dates,BL Start,BL Finish,Start,Finish,Allocation Date,Allocation Ref,Act. Start Status,Act. Finish Status,Original Duration,Actual Duration,Remaining Duration,Deviated Duration,Budgeted Units,Actual Units,Available units supplied by client vs Actual units of activities,Delayed duration in days due to steel un avilability in site,Remaining Units,Units % Complete,Budgeted Units / Time,Responsibility,Reason for Delay,Note
CON-B03-FOOT-1050,RFT for RC Raft & Footings (B03) (footing),BIG.Q.Rft,B03,Yes,5-Jan-26,17-Jan-26,10-Jan-26,21-Jan-26,9-Dec-25,ALLOC-001,Start,Finished,10,10,0,-8,196.86,196.86,390.74,,0,100%,19.69/d,,,
CON-B04-WT-1070,RFT for RC Raft (B04) (Water Tank),BIG.Q.Rft,B04,Yes,3-Dec-25,8-Dec-25,10-Jan-26,17-Jan-26,9-Dec-25,ALLOC-002,Start,Finished,5,6,0,2,45.81,45.81,344.93,,0,100%,9.16/d,,,
CON-B02-FOOT-1050,RFT for RC Raft & Footings (B02) (footing),BIG.Q.Rft,B02,Yes,20-Dec-25,30-Dec-25,17-Jan-26,21-Jan-26,9-Dec-25,ALLOC-003,Start,Finished,10,4,0,-7,155.42,155.42,189.51,,0,100%,15.54/d,,,
CON-B03-FOOT-1070,RFT for Columns & Walls Below SOG (B03) (footing),BIG.Q.Rft,B03,Yes,12-Jan-26,17-Jan-26,26-Jan-26,2-Mar-26,9-Dec-25,ALLOC-004,Start,Finished,5,31,0,-48,1.46,1.46,188.05,,0,100%,0.29/d,,,
CON-B02-FOOT-1070,RFT for Columns & Walls Below SOG (B02) (footing),BIG.Q.Rft,B02,Yes,23-Dec-25,29-Dec-25,28-Jan-26,4-Mar-26,9-Dec-25,ALLOC-005,Start,Finished,6,30,0,-50,2.43,2.43,185.62,,0,100%,0.41/d,,,
CON-B01-FOOT-1050,RFT for RC Raft & Footings (B01) (footing),BIG.Q.Rft,B01,Yes,6-Dec-25,18-Dec-25,5-Feb-26,17-Feb-26,9-Dec-25,ALLOC-005A,Start,Finished,14,11,0,0,320.45,320.45,236.285,-9,0,100%,22.89/d,Employer,no RFT avilable,9 DAYS DELAYS DUE TO NO RFT Available till delivered on 14-feb-2026
CON-B01-FOOT-1070,RFT for Columns & Walls Below SOG (B01) (footing),BIG.Q.Rft,B01,Yes,9-Dec-25,17-Dec-25,28-Feb-26,18-May-26,14-Feb-26,ALLOC-006,Start,In Progress,8,62,1,-93,1.98,1.68,234.305,,0.3,85%,0.25/d,,,
CON-B03-BAS02-1010,"RFT for Walls, Col. & Cores (B03) (Bas 02)",BIG.Q.Rft,B03,Yes,22-Jan-26,5-Feb-26,5-Mar-26,11-Mar-26,14-Feb-26,ALLOC-008A,Start,Finished,12,5,0,40,28.19,28.19,206.115,,0,100%,2.35/d,,,
CON-B04-WT-1110,RFT for Walls (B04) (Water Tank),BIG.Q.Rft,B04,Yes,13-Dec-25,21-Dec-25,8-Mar-26,14-Apr-26,14-Feb-26,ALLOC-008B,Start,Finished,8,27,0,2,40.71,40.71,165.405,,0,100%,5.09/d,,,
CON-B04-FOOT-1050,RFT for RC Raft & Footings (B04) (footing),BIG.Q.Rft,B04,Yes,15-Jan-26,24-Jan-26,10-Mar-26,19-May-26,14-Feb-26,ALLOC-007,Start,In Progress,8,53,3,-71,296.46,192.7,-131.055,-56,103.76,65%,37.06/d,Employer,no RFT avilable,70 DAYS DELAYS DUE TO NO RFT Available
CON-B04-FOOT-1070,RFT for Columns & Walls Below SOG (B04) (footing),BIG.Q.Rft,B04,Yes,21-Jan-26,27-Jan-26,10-Mar-26,18-May-26,14-Feb-26,ALLOC-008,Start,In Progress,5,53,2,-42,3.14,2.04,-134.195,-56,1.1,65%,0.63/d,Employer,no RFT avilable,69 DAYS DELAYS DUE TO NO RFT Available
CON-B02-BAS02-1010,"RFT for Walls, Col. & Cores (B02) (Bas 02)",BIG.Q.Rft,B02,Yes,5-Jan-26,19-Jan-26,21-Apr-26,4-May-26,14-Feb-26,ALLOC-009,Start,Finished,12,12,0,0,21.08,21.08,-155.275,-14,0,100%,1.76/d,Employer,no RFT avilable,13 DAYS DELAYS DUE TO NO RFT Available
